Schedule from MS Project, 2017-10-17 to 2017-12-06, A marks actual dates.

## Calendars

- 标准: Mon-Fri 08:00-12:00, 13:00-17:00; Sat-Sun off. Exceptions (off unless hours are given): 2017-10-21 to 2017-10-22 08:00-12:00, 13:00-17:00, 2017-10-28 to 2017-10-29 08:00-12:00, 13:00-17:00, 2017-11-04 08:00-12:00, 13:00-17:00.

## Resources

| Resource |
| --- |
| 李冬松 |
| 王保良 |
| 李东东 |
| A |
| 祝凯 |
| 钱先涛 |

## Schedule

| ID | WBS | Task | Duration | Start | Finish | Complete | Remaining | Total slack | Constraint | Resources | Work | Actual work |
| --- | --- | --- | --- | --- | --- | --- | --- | --- | --- | --- | --- | --- |
| 1 | 1 | **承保第一小组任务** | 42d? | 2017-10-17 A | 2017-12-06 | 27% | 30.62d? | 0d |  |  | 1664.56h | 437.39h |
| 2 | 1.1 | **登录系统** | 2d? | 2017-10-17 A | 2017-10-18 A | 100% |  |  |  |  | 20h | 20h |
| 3 | 1.1.1 | 用户名密码验证 | 0.5d? | 2017-10-17 A | 2017-10-17 A | 100% |  |  | start no earlier than 2017-10-17 | 李冬松 | 4h | 4h |
| 4 | 1.1.2 | 登录机构查询 | 2d? | 2017-10-17 A | 2017-10-18 A | 100% |  |  | finish no earlier than 2017-10-18 | 李冬松 | 16h | 16h |
| 5 | 1.2 | **系统主页** | 1d | 2017-10-19 A | 2017-10-19 A | 100% |  |  |  |  | 8h | 8h |
| 6 | 1.2.1 | 菜单查询 | 1d | 2017-10-19 A | 2017-10-19 A | 100% |  |  | start no earlier than 2017-10-19 | 王保良 | 8h | 8h |
| 7 | 1.3 | **个人中心** | 3d? | 2017-10-18 A | 2017-10-20 | 75% | 0.75d? | 38d |  |  | 56h | 42h |
| 8 | 1.3.1 | **常用功能** | 3d? | 2017-10-18 A | 2017-10-20 | 75% | 0.75d? | 38d |  | 王保良 | 56h | 42h |
| 9 | 1.3.1.1 | 常用菜单查询 | 1d | 2017-10-18 A | 2017-10-18 A | 100% |  |  | start no earlier than 2017-10-18 | 王保良 | 8h | 8h |
| 10 | 1.3.1.2 | 常用菜单新增 | 1d | 2017-10-19 A | 2017-10-19 A | 100% |  |  | finish no earlier than 2017-10-19 | 王保良 | 8h | 8h |
| 11 | 1.3.1.3 | 常用菜单删除 | 1d | 2017-10-19 A | 2017-10-19 A | 100% |  |  | finish no earlier than 2017-10-19 | 王保良 | 8h | 8h |
| 12 | 1.3.1.4 | 联调测试 | 1d? | 2017-10-20 | 2017-10-20 |  |  | 38d | start no earlier than 2017-10-20 | 王保良 | 8h |  |
| 13 | 1.4 | **批改处理** | 33d? | 2017-10-18 A | 2017-11-24 | 30% | 23.03d? | 8d |  |  | 1244.56h | 367.39h |
| 14 | 1.4.1 | **普通批改** | 19d? | 2017-10-18 A | 2017-11-06 | 56% | 8.38d? | 22d |  |  | 668.56h | 367.39h |
| 15 | 1.4.1.1 | **批改初始查询界面** | 19d? | 2017-10-18 A | 2017-11-06 | 40% | 11.31d? | 22d |  |  | 232h | 95.43h |
| 16 | 1.4.1.1.1 | 保单基本信息查询 | 2d? | 2017-10-18 A | 2017-10-19 A | 100% |  |  | finish no earlier than 2017-10-19 | 李冬松 | 16h | 16h |
| 17 | 1.4.1.1.2 | **合同信息查询** | 8d? | 2017-10-18 A | 2017-10-25 | 57% | 3.43d? | 33d |  | 李冬松 | 120h | 59.43h |
| 18 | 1.4.1.1.2.1 | 补贴信息查询 | 1d? | 2017-10-18 A | 2017-10-18 A | 100% |  |  | start no earlier than 2017-10-18 | 李东东 | 8h | 8h |
| 19 | 1.4.1.1.2.2 | 主险信息查询 | 1d? | 2017-10-20 A | 2017-10-20 A | 100% |  |  | start no earlier than 2017-10-20 | 李冬松 | 8h | 8h |
| 20 | 1.4.1.1.2.3 | 附加险信息查询 | 1d? | 2017-10-20 A | 2017-10-20 A | 100% |  |  | start no earlier than 2017-10-20 | 李冬松 | 8h | 8h |
| 21 | 1.4.1.1.2.4 | 清单信息查询 | 1d? | 2017-10-23 | 2017-10-23 |  |  | 35d | start no earlier than 2017-10-23 | 李冬松 | 8h |  |
| 22 | 1.4.1.1.2.5 | 币别信息查询 | 1d? | 2017-10-24 | 2017-10-24 |  |  | 34d | start no earlier than 2017-10-24 | 李冬松 | 8h |  |
| 23 | 1.4.1.1.2.6 | 缴费计划信息查询 | 1d? | 2017-10-19 A | 2017-10-19 A | 100% |  |  | start no earlier than 2017-10-19 | 李东东 | 8h | 8h |
| 24 | 1.4.1.1.2.7 | 联调测试 | 1d? | 2017-10-25 | 2017-10-25 |  |  | 33d | finish no earlier than 2017-10-25 | 李冬松 | 8h |  |

| ID | WBS | Task | Duration | Start | Finish | Complete | Remaining | Total slack | Constraint | Resources | Work | Actual work |
| --- | --- | --- | --- | --- | --- | --- | --- | --- | --- | --- | --- | --- |
| 25 | 1.4.1.1.3 | **投保人/被保险人信息查询** | 18d? | 2017-10-19 A | 2017-11-06 | 17% | 15d? | 22d |  |  | 48h | 8h |
| 26 | 1.4.1.1.3.1 | 被保险人信息查询 | 1d? | 2017-10-19 A | 2017-10-19 A | 100% |  |  | start no earlier than 2017-10-19 | 李东东 | 8h | 8h |
| 27 | 1.4.1.1.3.2 | 投保人信息查询 | 2d? | 2017-11-01 | 2017-11-02 |  |  | 25d | finish no earlier than 2017-11-02 | A | 16h |  |
| 28 | 1.4.1.1.3.3 | 发票购货方信息查询 | 1d? | 2017-11-03 | 2017-11-03 |  |  | 24d | start no earlier than 2017-11-03 | 王保良 | 8h |  |
| 29 | 1.4.1.1.3.4 | 影像资料查询对接 | 1d? | 2017-10-23 | 2017-10-23 |  |  | 35d | finish no earlier than 2017-10-23 | 王保良 | 8h |  |
| 30 | 1.4.1.1.3.5 | 联调测试 | 1d? | 2017-11-06 | 2017-11-06 |  |  | 22d | finish no earlier than 2017-11-06 | A | 8h |  |
| 31 | 1.4.1.1.4 | **其他信息查询** | 11d? | 2017-10-21 A | 2017-10-31 | 25% | 8.25d? | 27d |  |  | 48h | 12h |
| 32 | 1.4.1.1.4.1 | 共保信息查询 | 1d | 2017-10-21 A | 2017-10-22 A | 100% |  |  | start no earlier than 2017-10-26 | 李冬松 | 8h | 8h |
| 33 | 1.4.1.1.4.2 | 特约及附加信息查询 | 2d? | 2017-10-21 | 2017-10-22 |  |  | 36d | start no earlier than 2017-10-21 | 李冬松 | 16h |  |
| 34 | 1.4.1.1.4.3 | 其他信息查询 | 1d? | 2017-10-27 A | 2017-10-27 | 50% | 0.5d? | 31d | start no earlier than 2017-10-27 | 李冬松 | 8h | 4h |
| 35 | 1.4.1.1.4.4 | 联调测试 | 2d? | 2017-10-30 | 2017-10-31 |  |  | 27d | finish no earlier than 2017-10-31 | 李冬松 | 16h |  |
| 36 | 1.4.1.2 | **批改内容保存** | 14d? | 2017-10-19 A | 2017-11-01 | 86% | 1.99d? | 26d |  |  | 284.56h | 239.96h |
| 37 | 1.4.1.2.1 | 批文生成 | 2d | 2017-10-19 A | 2017-10-22 | 80% | 0.4d | 36d | finish no earlier than 2017-10-22 | 李东东 | 9.6h | 6.4h |
| 38 | 1.4.1.2.2 | **批单保存大对象逻辑处理** | 4d? | 2017-10-23 A | 2017-10-26 | 79% | 0.84d? | 32d |  | 李东东 | 114.96h | 93.56h |
| 39 | 1.4.1.2.2.1 | PrpCPmain、PrpPmain、prpPhead对象处理 | 3d? | 2017-10-23 A | 2017-10-25 A | 100% |  |  | finish no earlier than 2017-10-25 | 李东东 | 24h | 24h |
| 40 | 1.4.1.2.2.2 | Prpcpsubsidy、PrpPsubsidy对象处理 | 1d? | 2017-10-25 A | 2017-10-25 A | 100% |  |  | start no earlier than 2017-10-25 | 李东东 | 8h | 8h |
| 41 | 1.4.1.2.2.3 | prpCPitemKind、prpPitemKind对象处理 | 1d? | 2017-10-25 A | 2017-10-25 | 50% | 0.5d? | 33d | finish no earlier than 2017-10-25 | 李东东 | 8h | 4h |
| 42 | 1.4.1.2.2.4 | prpCpaddress、prpPaddress对象生成 | 1d? | 2017-10-26 A | 2017-10-26 | 70% | 0.3d? | 32d | start no earlier than 2017-10-26 | 李东东 | 8h | 5.6h |
| 43 | 1.4.1.2.2.5 | prpCPplan、prpPplan对象生成 | 1d? | 2017-10-26 A | 2017-10-26 | 70% | 0.3d? | 32d | finish no earlier than 2017-10-26 | 李东东 | 8h | 5.6h |
| 44 | 1.4.1.2.2.6 | prpCPfee、prpPfee对象生成 | 1d? | 2017-10-26 A | 2017-10-26 | 70% | 0.3d? | 32d | start no earlier than 2017-10-26 | 李东东 | 8h | 5.6h |
| 45 | 1.4.1.2.2.7 | prpCPexpense、prpPexpense对象生成 | 1d? | 2017-10-26 A | 2017-10-26 | 70% | 0.3d? | 32d | finish no earlier than 2017-10-26 | 李东东 | 6.32h | 3.92h |
| 46 | 1.4.1.2.2.8 | PrpCpcoins、PrpPcoins对象生成 | 1d? | 2017-10-26 A | 2017-10-26 | 70% | 0.3d? | 32d | finish no earlier than 2017-10-26 | 李东东 | 6.32h | 3.92h |
| 47 | 1.4.1.2.2.9 | prpCPengage、prpPengage对象生成 | 1d? | 2017-10-26 A | 2017-10-26 | 70% | 0.3d? | 32d | finish no earlier than 2017-10-26 | 李东东 | 6.32h | 3.92h |
| 48 | 1.4.1.2.3 | **批单基本信息保存** | 1d? | 2017-10-22 A | 2017-10-22 | 50% | 0.5d? | 36d |  | 李东东 | 24h | 12h |
| 49 | 1.4.1.2.3.1 | PrpCPmain表保存 | 1d? | 2017-10-22 A | 2017-10-22 A | 100% |  |  | start no earlier than 2017-10-22 | 王保良 | 8h | 8h |
| 50 | 1.4.1.2.3.2 | PrpPmain表保存 | 1d? | 2017-10-22 | 2017-10-22 |  |  | 36d | start no earlier than 2017-10-22 | 王保良 | 8h |  |

| ID | WBS | Task | Duration | Start | Finish | Complete | Remaining | Total slack | Free slack | Constraint | Resources | Work | Actual work |
| --- | --- | --- | --- | --- | --- | --- | --- | --- | --- | --- | --- | --- | --- |
| 51 | 1.4.1.2.4 | **批单合同信息保存** | 3d? | 2017-10-22 A | 2017-10-24 A | 100% |  |  |  |  |  | 88h | 88h |
| 52 | 1.4.1.2.4.1 | prpCpaddress表保存 | 1d? | 2017-10-22 A | 2017-10-22 A | 100% |  |  |  | start no earlier than 2017-10-22 | 王保良 | 8h | 8h |
| 53 | 1.4.1.2.4.2 | Prpcpsubsidy表保存 | 1d? | 2017-10-22 A | 2017-10-22 A | 100% |  |  |  | start no earlier than 2017-10-22 | 李冬松 | 8h | 8h |
| 54 | 1.4.1.2.4.3 | prpcpItemKind表保存 | 1d? | 2017-10-22 A | 2017-10-22 A | 100% |  |  |  | start no earlier than 2017-10-22 | 李冬松 | 8h | 8h |
| 55 | 1.4.1.2.4.4 | prpPaddress表保存 | 1d? | 2017-10-22 A | 2017-10-22 A | 100% |  |  |  | start no earlier than 2017-10-22 | 李冬松 | 8h | 8h |
| 56 | 1.4.1.2.4.5 | PrpPsubsidy表保存 | 1d? | 2017-10-24 A | 2017-10-24 A | 100% |  |  |  | start no earlier than 2017-10-24 | 李冬松 | 8h | 8h |
| 57 | 1.4.1.2.4.6 | prpPitemKind表保存 | 1d? | 2017-10-24 A | 2017-10-24 A | 100% |  |  |  | start no earlier than 2017-10-24 | 李冬松 | 8h | 8h |
| 58 | 1.4.1.2.4.7 | prpCPplan、prpPplan表保存 | 1d? | 2017-10-24 A | 2017-10-24 A | 100% |  |  |  | start no earlier than 2017-10-24 | 李冬松 | 8h | 8h |
| 59 | 1.4.1.2.4.8 | prpdcustomerrisklevelsub表保存 | 1d? | 2017-10-24 A | 2017-10-24 A | 100% |  |  |  | finish no earlier than 2017-10-24 | 李冬松 | 8h | 8h |
| 60 | 1.4.1.2.4.9 | prpCPfee、prpPfee表保存 | 1d? | 2017-10-24 A | 2017-10-24 A | 100% |  |  |  | finish no earlier than 2017-10-24 | 李冬松 | 8h | 8h |
| 61 | 1.4.1.2.4.10 | prpPhead表保存 | 1d? | 2017-10-24 A | 2017-10-24 A | 100% |  |  |  | start no earlier than 2017-10-24 | 李冬松 | 8h | 8h |
| 62 | 1.4.1.2.4.11 | prpCPexpense、prpPexpense表保存 | 1d? | 2017-10-24 A | 2017-10-24 A | 100% |  |  |  | finish no earlier than 2017-10-24 | 李冬松 | 8h | 8h |
| 63 | 1.4.1.2.5 | 批单投保人/被保险人信息保存 | 2d? | 2017-10-19 A | 2017-10-20 A | 100% |  |  |  | finish no earlier than 2017-10-20 | 王保良 | 8h | 8h |
| 64 | 1.4.1.2.6 | **批单其他信息保存** | 2d? | 2017-10-24 A | 2017-10-25 A | 100% |  |  |  |  |  | 32h | 32h |
| 65 | 1.4.1.2.6.1 | PrpCpcoins、PrpPcoins表保存 | 1d? | 2017-10-24 A | 2017-10-24 A | 100% |  |  |  | start no earlier than 2017-10-24 | 李冬松 | 8h | 8h |
| 66 | 1.4.1.2.6.2 | prpCPengage、prpPengage表保存 | 1d? | 2017-10-24 A | 2017-10-24 A | 100% |  |  |  | start no earlier than 2017-10-24 | 李冬松 | 8h | 8h |
| 67 | 1.4.1.2.6.3 | prpCpaddress、prpPaddress等表接口文档整理 | 1d? | 2017-10-25 A | 2017-10-25 A | 100% |  |  |  | finish no earlier than 2017-10-25 | 李冬松 | 8h | 8h |
| 68 | 1.4.1.2.6.4 | prpCPfee、prpPfee等表接口文档整理 | 1d? | 2017-10-25 A | 2017-10-25 A | 100% |  |  |  | start no earlier than 2017-10-25 | 王保良 | 8h | 8h |
| 69 | 1.4.1.2.7 | 批改允许条件查询 | 1d? | 2017-11-01 | 2017-11-01 |  |  | 26d |  | start no earlier than 2017-11-01 | 李东东 | 8h |  |
| 70 | 1.4.1.3 | **核批后更新C表** | 5d? | 2017-10-25 A | 2017-10-29 | 40% | 3d? | 29d |  |  |  | 80h | 32h |
| 71 | 1.4.1.3.1 | prpcmain、prpcitemkind、PrpCfee表更新 | 2d? | 2017-10-25 A | 2017-10-26 A | 100% |  |  |  | finish no earlier than 2017-10-26 | 王保良 | 16h | 16h |
| 72 | 1.4.1.3.2 | PrpCplan、PrpCaddress、PrpCmainAgri表更新 | 1d? | 2017-10-27 | 2017-10-27 |  |  | 31d |  | finish no earlier than 2017-10-27 | 王保良 | 8h |  |
| 73 | 1.4.1.3.3 | PrpCengage、prpCitemagri、PrpCcoins表更新 | 2d? | 2017-10-25 A | 2017-10-26 A | 100% |  |  |  | finish no earlier than 2017-10-26 | 李冬松 | 16h | 16h |
| 74 | 1.4.1.3.4 | prpCexpense、prpCsubsidy、PrpCinsured表更新 | 1d? | 2017-10-27 | 2017-10-27 |  |  | 31d |  | start no earlier than 2017-10-27 | 李冬松 | 8h |  |
| 75 | 1.4.1.3.5 | prpcmain、prpcitemkind、PrpCfee表金额字段等更新及校验 | 2d? | 2017-10-28 | 2017-10-29 |  |  | 29d |  | finish no earlier than 2017-10-29 | 祝凯 | 16h |  |
| 76 | 1.4.1.3.6 | 双核系统核保通过回写prpphead表核保标识等字段 | 1d? | 2017-10-28 | 2017-10-28 |  |  | 30d |  | finish no earlier than 2017-10-28 | 李冬松 | 8h |  |
| 77 | 1.4.1.3.7 | 见费出单收付系统回写p表、c表(需确认具体细节) | 1d? | 2017-10-29 | 2017-10-29 |  |  | 29d |  | start no earlier than 2017-10-29 | 李冬松 | 8h |  |
| 78 | 1.4.1.4 | 代码审核 | 2d? | 2017-10-28 | 2017-10-29 |  |  | 29d |  | start no earlier than 2017-10-28 | 钱先涛 | 16h |  |
| 79 | 1.4.1.5 | 开发计划、开发方式整理 | 2d? | 2017-10-28 | 2017-10-29 |  |  | 29d |  | finish no earlier than 2017-10-29 | 李东东 | 16h |  |
| 80 | 1.4.1.6 | 提交核批 | 3d? | 2017-10-29 | 2017-10-31 |  |  | 27d |  | finish no earlier than 2017-10-31 | 李东东 | 24h |  |
| 81 | 1.4.1.7 | 批单允许保存校验 | 1d? | 2017-10-28 | 2017-10-28 |  |  | 27d | 0d | finish no earlier than 2017-10-28 | 王保良 | 8h |  |
| 82 | 1.4.1.8 | 分户批改 | 1d? | 2017-10-29 | 2017-10-29 |  |  | 29d |  | finish no earlier than 2017-10-29 | 王保良 | 8h |  |

| ID | WBS | Task | Duration | Start | Finish | Total slack | Constraint | Resources | Work |
| --- | --- | --- | --- | --- | --- | --- | --- | --- | --- |
| 83 | 1.4.2 | **特殊批改** | 19d? | 2017-11-01 | 2017-11-24 | 8d |  |  | 480h |
| 84 | 1.4.2.1 | 选中保单进行是否存在未核批单校验 | 1d? | 2017-11-03 | 2017-11-03 | 24d | start no earlier than 2017-11-03 | 李冬松 | 8h |
| 85 | 1.4.2.2 | 录入支付信息 | 2d? | 2017-11-01 | 2017-11-02 | 25d | finish no earlier than 2017-11-02 | 王保良 | 16h |
| 86 | 1.4.2.3 | 按条件查询 | 1d? | 2017-11-04 | 2017-11-05 | 23d | finish no earlier than 2017-11-05 | 李冬松 | 8h |
| 87 | 1.4.2.4 | 批量批改处理(需确认细节) | 2d | 2017-11-03 | 2017-11-05 | 23d | finish no earlier than 2017-11-05 | 王保良 | 16h |
| 88 | 1.4.2.5 | 特殊批改信息录入界面查询 | 1d? | 2017-11-06 | 2017-11-06 | 22d | start no earlier than 2017-11-06 | 李冬松 | 8h |
| 89 | 1.4.2.6 | 联调测试 | 3d? | 2017-11-07 | 2017-11-09 | 19d | start no earlier than 2017-11-07 | 李冬松 | 24h |
| 90 | 1.4.2.7 | **变更保险期限** | 6d? | 2017-11-01 | 2017-11-07 | 21d |  |  | 56h |
| 91 | 1.4.2.7.1 | 变更保险期限界面查询 | 1d? | 2017-11-01 | 2017-11-01 | 26d | start no earlier than 2017-11-01 | 李东东 | 8h |
| 92 | 1.4.2.7.2 | 变更保险期限批文自动生成 | 4d | 2017-11-01 | 2017-11-05 | 23d | finish no earlier than 2017-11-05 | 李东东 | 32h |
| 93 | 1.4.2.7.3 | 变更保险期限保存 | 2d? | 2017-11-06 | 2017-11-07 | 21d | finish no earlier than 2017-11-07 | 李东东 | 16h |
| 94 | 1.4.2.8 | **全单退保** | 6d? | 2017-11-08 | 2017-11-15 | 15d |  |  | 64h |
| 95 | 1.4.2.8.1 | 全单退保界面查询 | 1d? | 2017-11-08 | 2017-11-08 | 20d | start no earlier than 2017-11-08 | 王保良 | 8h |
| 96 | 1.4.2.8.2 | 全单退保后调整界面查询 | 1d? | 2017-11-08 | 2017-11-08 | 20d | start no earlier than 2017-11-08 | 王保良 | 8h |
| 97 | 1.4.2.8.3 | 整单支付录入页面保存 | 2d? | 2017-11-09 | 2017-11-10 | 18d | finish no earlier than 2017-11-10 | 王保良 | 16h |
| 98 | 1.4.2.8.4 | 清单支付页面保存 | 1d? | 2017-11-13 | 2017-11-13 | 17d | start no earlier than 2017-11-13 | 王保良 | 8h |
| 99 | 1.4.2.8.5 | 全单退保批文生成 | 1d? | 2017-11-13 | 2017-11-13 | 17d | start no earlier than 2017-11-13 | 王保良 | 8h |
| 100 | 1.4.2.8.6 | 全单退保批单信息保存 | 2d? | 2017-11-14 | 2017-11-15 | 15d | finish no earlier than 2017-11-15 | 王保良 | 16h |
| 101 | 1.4.2.9 | **保单注销** | 2d? | 2017-11-08 | 2017-11-09 | 19d |  | 李东东 | 48h |
| 102 | 1.4.2.9.1 | 保单注销界面查询 | 1d? | 2017-11-08 | 2017-11-08 | 20d | start no earlier than 2017-11-08 | 李东东 | 8h |
| 103 | 1.4.2.9.2 | 保单注销批文生成 | 1d? | 2017-11-08 | 2017-11-08 | 20d | start no earlier than 2017-11-08 | 李东东 | 8h |
| 104 | 1.4.2.9.3 | 保单注销信息保存 | 2d? | 2017-11-08 | 2017-11-09 | 19d | finish no earlier than 2017-11-09 | 李东东 | 16h |
| 105 | 1.4.2.10 | **业务员批改** | 2d? | 2017-11-20 | 2017-11-21 | 11d |  | 王保良 | 48h |
| 106 | 1.4.2.10.1 | 业务员批改界面查询 | 1d? | 2017-11-20 | 2017-11-20 | 12d | start no earlier than 2017-11-20 | 王保良 | 8h |
| 107 | 1.4.2.10.2 | 业务员批改批文生成 | 1d? | 2017-11-20 | 2017-11-20 | 12d | start no earlier than 2017-11-20 | 王保良 | 8h |
| 108 | 1.4.2.10.3 | 业务员批改信息保存 | 2d? | 2017-11-20 | 2017-11-21 | 11d | finish no earlier than 2017-11-21 | 王保良 | 16h |

| ID | WBS | Task | Duration | Start | Finish | Total slack | Constraint | Resources | Work |
| --- | --- | --- | --- | --- | --- | --- | --- | --- | --- |
| 109 | 1.4.2.11 | **调整费率** | 2d? | 2017-11-10 | 2017-11-13 | 17d |  | 李东东 | 40h |
| 110 | 1.4.2.11.1 | 调整费率批文生成 | 1d? | 2017-11-10 | 2017-11-10 | 18d | start no earlier than 2017-11-10 | 李东东 | 8h |
| 111 | 1.4.2.11.2 | 调整费率信息保存 | 2d? | 2017-11-10 | 2017-11-13 | 17d | finish no earlier than 2017-11-13 | 李东东 | 16h |
| 112 | 1.4.2.12 | **调整单位保额** | 2d? | 2017-11-14 | 2017-11-15 | 15d |  | 李东东 | 40h |
| 113 | 1.4.2.12.1 | 调整单位保额批文生成 | 1d? | 2017-11-14 | 2017-11-14 | 16d | start no earlier than 2017-11-14 | 李东东 | 8h |
| 114 | 1.4.2.12.2 | 调整单位保额信息保存 | 2d? | 2017-11-14 | 2017-11-15 | 15d | finish no earlier than 2017-11-15 | 李东东 | 16h |
| 115 | 1.4.2.13 | **调整补贴信息** | 2d? | 2017-11-16 | 2017-11-17 | 13d |  | 李东东 | 40h |
| 116 | 1.4.2.13.1 | 调整补贴信息批文生成 | 1d? | 2017-11-16 | 2017-11-16 | 14d | start no earlier than 2017-11-16 | 李东东 | 8h |
| 117 | 1.4.2.13.2 | 调整补贴信息保存 | 2d? | 2017-11-16 | 2017-11-17 | 13d | finish no earlier than 2017-11-17 | 李东东 | 16h |
| 118 | 1.4.2.14 | 联调测试 | 5d? | 2017-11-20 | 2017-11-24 | 8d | finish no earlier than 2017-11-24 | 李东东 | 40h |
| 119 | 1.4.2.15 | 联调测试 | 3d? | 2017-11-22 | 2017-11-24 | 8d | finish no earlier than 2017-11-24 | 王保良 | 24h |
| 120 | 1.4.3 | **批单查询** | 9d? | 2017-11-07 | 2017-11-17 | 13d |  |  | 96h |
| 121 | 1.4.3.1 | **批单查询** | 3d? | 2017-11-07 | 2017-11-09 | 19d |  |  | 24h |
| 122 | 1.4.3.1.1 | 按条件查询批单清单列表 | 1d? | 2017-11-07 | 2017-11-07 | 21d | start no earlier than 2017-11-07 | A | 8h |
| 123 | 1.4.3.1.2 | 批单明细信息查询 | 2d? | 2017-11-08 | 2017-11-09 | 19d | finish no earlier than 2017-11-09 | A | 16h |
| 124 | 1.4.3.2 | 修改批文 | 1d? | 2017-11-10 | 2017-11-10 | 18d | start no earlier than 2017-11-10 | A | 8h |
| 125 | 1.4.3.3 | 联调测试 | 1d? | 2017-11-13 | 2017-11-13 | 17d | start no earlier than 2017-11-13 | A | 8h |
| 126 | 1.4.3.4 | **查看清单** | 2d? | 2017-11-10 | 2017-11-13 | 17d |  |  | 24h |
| 127 | 1.4.3.4.1 | 批改前清单查询 | 1d? | 2017-11-10 | 2017-11-10 | 18d | start no earlier than 2017-11-10 | 李冬松 | 8h |
| 128 | 1.4.3.4.2 | 批改后清单查询 | 1d? | 2017-11-10 | 2017-11-10 | 18d | start no earlier than 2017-11-10 | 李冬松 | 8h |
| 129 | 1.4.3.4.3 | 批改清单变化查询 | 1d? | 2017-11-13 | 2017-11-13 | 17d | start no earlier than 2017-11-13 | 李冬松 | 8h |
| 130 | 1.4.3.5 | 提交核批 | 1d? | 2017-11-14 | 2017-11-14 | 16d | start no earlier than 2017-11-14 | 李冬松 | 8h |
| 131 | 1.4.3.6 | 批单删除 | 1d? | 2017-11-15 | 2017-11-15 | 15d | start no earlier than 2017-11-15 | 李冬松 | 8h |
| 132 | 1.4.3.7 | 联调测试 | 2d? | 2017-11-16 | 2017-11-17 | 13d | finish no earlier than 2017-11-17 | 李冬松 | 16h |
| 133 | 1.5 | 我的任务查询 | 2d? | 2017-11-27 | 2017-11-28 | 6d | start no earlier than 2017-11-27 | 王保良 | 16h |

| ID | WBS | Task | Duration | Start | Finish | Total slack | Constraint | Resources | Work |
| --- | --- | --- | --- | --- | --- | --- | --- | --- | --- |
| 134 | 1.6 | **业务清单详情** | 1d? | 2017-11-27 | 2017-11-27 | 7d |  | 李东东 | 56h |
| 135 | 1.6.1 | 当日签单保额、保费查询 | 1d? | 2017-11-27 | 2017-11-27 | 7d | start no earlier than 2017-11-27 | 李东东 | 8h |
| 136 | 1.6.2 | 当日签单保额、保费清单下载查询 | 1d | 2017-11-27 | 2017-11-27 | 7d | start no earlier than 2017-11-27 | 李东东 | 8h |
| 137 | 1.6.3 | 未缴费保单总保额、总保费查询 | 1d | 2017-11-27 | 2017-11-27 | 7d | start no earlier than 2017-11-27 | 李东东 | 8h |
| 138 | 1.6.4 | 未缴费保单总保额、总保费清单下载查询 | 1d | 2017-11-27 | 2017-11-27 | 7d | start no earlier than 2017-11-27 | 李东东 | 8h |
| 139 | 1.6.5 | 应收保费总保额、总保费查询 | 1d | 2017-11-27 | 2017-11-27 | 7d | start no earlier than 2017-11-27 | 李东东 | 8h |
| 140 | 1.6.6 | 应收保费总保额、总保费清单下载查询 | 1d | 2017-11-27 | 2017-11-27 | 7d | start no earlier than 2017-11-27 | 李东东 | 8h |
| 141 | 1.7 | **条款版本管理** | 10d? | 2017-11-20 | 2017-12-01 | 3d |  |  | 96h |
| 142 | 1.7.1 | **查询条款** | 2d? | 2017-11-20 | 2017-11-21 | 11d |  |  | 16h |
| 143 | 1.7.1.1 | 按条件条款模板清单 | 1d? | 2017-11-20 | 2017-11-20 | 12d | finish no earlier than 2017-11-20 | 李冬松 | 8h |
| 144 | 1.7.1.2 | 条款明细信息查询 | 1d? | 2017-11-21 | 2017-11-21 | 11d | start no earlier than 2017-11-21 | 李冬松 | 8h |
| 145 | 1.7.2 | 保存/暂存条款 | 2d? | 2017-11-22 | 2017-11-23 | 9d | finish no earlier than 2017-11-23 | 李冬松 | 16h |
| 146 | 1.7.3 | 停用/启用条款功能 | 1d? | 2017-11-24 | 2017-11-24 | 8d | start no earlier than 2017-11-24 | 李冬松 | 8h |
| 147 | 1.7.4 | 单个删除条款 | 1d? | 2017-11-24 | 2017-11-24 | 8d | start no earlier than 2017-11-24 | 李冬松 | 8h |
| 148 | 1.7.5 | 批量删除条款 | 1d? | 2017-11-24 | 2017-11-24 | 8d | start no earlier than 2017-11-24 | 李冬松 | 8h |
| 149 | 1.7.6 | 修改条款 | 2d? | 2017-11-27 | 2017-11-28 | 6d | finish no earlier than 2017-11-28 | 李冬松 | 16h |
| 150 | 1.7.7 | 联调测试 | 3d? | 2017-11-29 | 2017-12-01 | 3d | start no earlier than 2017-11-29 | 李冬松 | 24h |
| 151 | 1.8 | **投保模板管理** | 8d? | 2017-11-27 | 2017-12-06 | 0d |  | 王保良 | 168h |
| 152 | 1.8.1 | **查看模板** | 1d? | 2017-11-27 | 2017-11-27 | 7d |  | 王保良 | 24h |
| 153 | 1.8.1.1 | 按条件查询模板清单列表 | 1d? | 2017-11-27 | 2017-11-27 | 7d | start no earlier than 2017-11-27 | 王保良 | 8h |
| 154 | 1.8.1.2 | 模板明细信息查询 | 1d? | 2017-11-27 | 2017-11-27 | 7d | start no earlier than 2017-11-27 | 王保良 | 8h |
| 155 | 1.8.2 | 保存/暂存模板 | 2d? | 2017-11-28 | 2017-11-29 | 5d | finish no earlier than 2017-11-29 | 王保良 | 16h |
| 156 | 1.8.3 | 停用/启用模板功能 | 1d? | 2017-11-29 | 2017-11-29 | 5d | start no earlier than 2017-11-29 | 王保良 | 8h |
| 157 | 1.8.4 | 单个删除模板 | 1d? | 2017-11-29 | 2017-11-29 | 5d | start no earlier than 2017-11-29 | 王保良 | 8h |
| 158 | 1.8.5 | 批量删除模板 | 1d? | 2017-11-29 | 2017-11-29 | 5d | start no earlier than 2017-11-29 | 王保良 | 8h |
| 159 | 1.8.6 | 修改模板 | 2d? | 2017-11-30 | 2017-12-01 | 3d | finish no earlier than 2017-12-01 | 王保良 | 16h |
| 160 | 1.8.7 | 联调测试 | 3d? | 2017-12-04 | 2017-12-06 | 0d | finish no earlier than 2017-12-06 | 王保良 | 24h |
