# 项目计划示例-20171025

Schedule from MS Project, 2017-10-09 to 2017-12-27, A marks actual dates.

## Calendars

- 标准: Mon-Fri 08:00-12:00, 13:00-17:00; Sat-Sun off.

## Resources

| Resource |
| --- |
| 田健 |
| 钱浩 |
| 何伟东 |
| 董坤 |
| 王保良 |
| 李东松 |
| 任斌 |
| 宋振振 |
| 陈道洋 |
| 王心洋 |
| 田健钱浩 |
| 胡世界 |
| 汶敏强 |

## Schedule

| ID | WBS | Task | Duration | Start | Finish | Predecessors | Complete | Remaining | Total slack | Free slack | Constraint | Resources | Work | Actual work |
| --- | --- | --- | --- | --- | --- | --- | --- | --- | --- | --- | --- | --- | --- | --- |
| 1 | 1 | **承保系统** | 58d? | 2017-10-09 A | 2017-12-27 |  | 32% | 39.31d? | 0d |  |  |  | 1997.33h | 510.93h |
| 2 | 1.1 | 需求理解 | 4d | 2017-10-09 | 2017-10-12 |  |  |  | 54d |  | start no earlier than 2017-10-09 |  |  |  |
| 3 | 1.2 | **系统设计** | 9.33d? | 2017-10-25 | 2017-11-07 |  |  |  | 36.67d |  |  |  | 80h |  |
| 4 | 1.2.1 | **接口设计** | 4d? | 2017-10-25 | 2017-10-30 |  |  |  | 42d |  |  |  | 32h |  |
| 5 | 1.2.1.1 | 接口列表整理 | 4d? | 2017-10-25 | 2017-10-30 |  |  |  | 42d |  | start no earlier than 2017-10-25 | 田健 | 32h |  |
| 6 | 1.2.2 | 接口清单评审 | 0.33d? | 2017-10-31 | 2017-10-31 |  |  |  | 36.67d | 0d | start no earlier than 2017-10-31 | 田健; 胡世界; 汶敏强 | 8h |  |
| 7 | 1.2.3 | 接口入参，出参设计 | 5d | 2017-10-31 | 2017-11-07 | 6 |  |  | 36.67d |  |  | 田健 | 40h |  |
| 8 | 1.3 | **开发** | 58d | 2017-10-09 A | 2017-12-27 |  | 34% | 37.99d | 0d |  |  |  | 1917.33h | 510.93h |
| 9 | 1.3.1 | 单号生成 | 3d | 2017-10-09 A | 2017-10-11 |  | 60% | 1.2d | 55d |  |  | 钱浩 | 24h | 14.4h |
| 10 | 1.3.2 | **投保单管理** | 41d | 2017-10-09 A | 2017-12-04 |  | 54% | 18.78d | 17d |  |  |  | 1165.33h | 496.53h |
| 11 | 1.3.2.1 | **投保单录入** | 41d | 2017-10-09 A | 2017-12-04 |  | 52% | 19.58d | 17d |  |  |  | 1117.33h | 453.33h |
| 12 | 1.3.2.1.1 | **页面初始化** | 24d | 2017-10-09 A | 2017-11-09 |  | 60% | 9.6d | 34d |  |  |  | 40h | 24h |
| 13 | 1.3.2.1.1.1 | 根据codetype查询prpdcode服务 | 3d | 2017-10-09 A | 2017-10-11 A |  | 100% |  |  |  | start no earlier than 2017-10-19 | 田健 | 24h | 24h |
| 14 | 1.3.2.1.1.2 | 初始化页面前后端联调 | 2d | 2017-11-08 | 2017-11-09 |  |  |  | 33d |  | start no earlier than 2017-11-08 | 田健 | 16h |  |
| 15 | 1.3.2.1.2 | **投保信息收集** | 28d | 2017-10-09 A | 2017-11-15 |  | 58% | 11.88d | 30d |  |  |  | 629.33h | 293.33h |
| 16 | 1.3.2.1.2.1 | 特约及附加信息查询服务 | 3d | 2017-10-09 A | 2017-10-11 A |  | 100% |  |  |  | start no earlier than 2017-10-09 | 王保良 | 24h | 24h |
| 17 | 1.3.2.1.2.2 | 归属机构查询服务 | 3d | 2017-10-09 A | 2017-10-11 A |  | 100% |  |  |  | start no earlier than 2017-10-09 | 李东松 | 24h | 24h |
| 18 | 1.3.2.1.2.3 | 归属区域查询服务 | 5d | 2017-10-09 A | 2017-10-13 A |  | 100% |  |  |  | start no earlier than 2017-10-09 | 任斌 | 40h | 40h |
| 19 | 1.3.2.1.2.4 | 主险、附加险险别的查询服务 | 2d | 2017-10-09 A | 2017-10-10 A |  | 100% |  |  |  | start no earlier than 2017-10-09 | 陈道洋 | 16h | 16h |
| 20 | 1.3.2.1.2.5 | 归属业务员查询服务 | 3d | 2017-10-11 A | 2017-10-13 A |  | 100% |  |  |  | start no earlier than 2017-10-11 | 陈道洋 | 24h | 24h |
| 21 | 1.3.2.1.2.6 | 价税分离服务 | 2d | 2017-10-12 A | 2017-10-13 A |  | 100% |  |  |  | start no earlier than 2017-10-24 | 钱浩 | 16h | 16h |
| 22 | 1.3.2.1.2.7 | 代理人、经纪人查询服务 | 5d | 2017-10-09 A | 2017-10-13 A |  | 100% |  |  |  | start no earlier than 2017-10-09 | 宋振振 | 40h | 40h |
| 23 | 1.3.2.1.2.8 | 购货方信息查询服务 | 4d | 2017-10-11 A | 2017-10-16 A | 19 | 100% |  |  |  |  | 宋振振 | 32h | 32h |
| 24 | 1.3.2.1.2.9 | 恐怖分子查询服务 | 2d | 2017-10-17 A | 2017-10-18 A | 23 | 100% |  |  |  |  | 宋振振 | 16h | 16h |
| 25 | 1.3.2.1.2.10 | 承保清单归属区域查询服务 | 3d | 2017-10-09 A | 2017-10-11 A |  | 100% |  |  |  | start no earlier than 2017-10-09 | 董坤 | 24h | 24h |
| 26 | 1.3.2.1.2.11 | 主险、附加险标的类别查询服务 | 2d | 2017-10-12 A | 2017-10-13 A | 25 | 100% |  |  |  |  | 董坤 | 16h | 16h |
| 27 | 1.3.2.1.2.12 | 主险、附加险币别查询服务 | 2d | 2017-10-25 | 2017-10-26 |  |  |  | 41d | 0d |  | 宋振振 | 16h |  |
| 28 | 1.3.2.1.2.13 | 清单号查询服务 | 2d | 2017-10-25 | 2017-10-26 |  |  |  | 41d | 0d |  | 王心洋 | 16h |  |
| 29 | 1.3.2.1.2.14 | 清单与预投保单清单关联调用清单服务 | 2d | 2017-10-27 | 2017-10-30 | 28 |  |  | 41d |  |  | 王心洋 | 16h |  |
| 30 | 1.3.2.1.2.15 | 投保人、被保险人查询服务 | 2d | 2017-10-26 A | 2017-10-27 A | 29 | 100% |  |  |  | start no earlier than 2017-10-18 | 钱浩 | 16h | 16h |
| 31 | 1.3.2.1.2.16 | 客户新增保存服务 | 2d | 2017-10-16 A | 2017-10-17 A | 30 | 100% |  |  |  | finish no earlier than 2017-10-18 | 钱浩 [33.3%] | 5.33h | 5.33h |
| 32 | 1.3.2.1.2.17 | 共保协议信息查询服务 | 3d | 2017-10-18 | 2017-10-20 | 31 |  |  | 45d | 0d |  | 钱浩 | 24h |  |
| 33 | 1.3.2.1.2.18 | 共保人机构查询服务 | 2d | 2017-10-23 | 2017-10-24 | 32 |  |  | 45d |  |  | 钱浩 | 16h |  |
| 34 | 1.3.2.1.2.19 | 条款查询服务 | 3d | 2017-10-27 | 2017-10-31 | 27 |  |  | 40d |  |  | 宋振振 | 24h |  |
| 35 | 1.3.2.1.2.20 | 使用模板查询服务 | 3d | 2017-10-31 | 2017-11-02 |  |  |  | 39d |  | start no earlier than 2017-10-31 | 王心洋 | 24h |  |
| 36 | 1.3.2.1.2.21 | 分户清单下载服务 | 4d | 2017-10-30 | 2017-11-02 |  |  |  | 32d | 2d | start no earlier than 2017-10-30 | 钱浩 | 32h |  |
| 37 | 1.3.2.1.2.22 | 页面收集信息服务前后端联调(投保单收集下的所有服务联调) | 7d | 2017-11-07 | 2017-11-15 | 36 |  |  | 30d |  | start no earlier than 2017-11-07 | 宋振振; 钱浩; 王心洋 | 168h |  |

| ID | WBS | Task | Duration | Start | Finish | Predecessors | Complete | Remaining | Total slack | Free slack | Constraint | Resources | Work | Actual work |
| --- | --- | --- | --- | --- | --- | --- | --- | --- | --- | --- | --- | --- | --- | --- |
| 38 | 1.3.2.1.3 | **保费计算服务** | 26d | 2017-10-12 A | 2017-11-16 |  | 69% | 8d | 28d |  |  |  | 104h | 72h |
| 39 | 1.3.2.1.3.1 | 清单调用接口服务 | 3d | 2017-10-12 A | 2017-10-16 A |  | 100% |  |  |  | start no earlier than 2017-10-12 | 钱浩 | 24h | 24h |
| 40 | 1.3.2.1.3.2 | 保费计算 | 6d | 2017-10-17 A | 2017-10-24 A | 39 | 100% |  |  |  |  | 田健 | 48h | 48h |
| 41 | 1.3.2.1.3.3 | 前后端联调测试 | 4d | 2017-11-13 | 2017-11-16 |  |  |  | 28d |  | start no earlier than 2017-11-13 | 田健 | 32h |  |
| 42 | 1.3.2.1.4 | **投保单保存服务** | 8d | 2017-10-26 A | 2017-11-06 |  | 27% | 5.82d | 37d |  |  |  | 88h | 24h |
| 43 | 1.3.2.1.4.1 | 投保单转保单提供双核服务 | 3d | 2017-11-01 A | 2017-11-06 |  | 40% | 1.8d | 37.7d |  | start no earlier than 2017-10-25 | 宋振振 | 24h | 9.6h |
| 44 | 1.3.2.1.4.2 | 数据校验服务 | 2d | 2017-11-03 | 2017-11-06 |  |  |  | 37d |  | start no earlier than 2017-11-03 | 王心洋 | 16h |  |
| 45 | 1.3.2.1.4.3 | 投保保存服务 | 6d | 2017-10-26 A | 2017-11-02 |  | 30% | 4.2d | 39d |  | start no earlier than 2017-10-26 | 钱浩 | 48h | 14.4h |
| 46 | 1.3.2.1.5 | **投保单暂存服务** | 3d | 2017-11-03 | 2017-11-07 |  |  |  | 36d |  |  |  | 24h |  |
| 47 | 1.3.2.1.5.1 | 投保暂存服务 | 3d | 2017-11-03 | 2017-11-07 |  |  |  | 35d |  | start no earlier than 2017-11-03 | 钱浩 | 24h |  |
| 48 | 1.3.2.1.6 | 提交核保服务 | 5d | 2017-11-16 A | 2017-11-22 A |  | 100% |  |  |  | start no earlier than 2017-11-16 | 钱浩 | 40h | 40h |
| 49 | 1.3.2.1.7 | 前后端联调测试 | 8d | 2017-11-23 | 2017-12-04 | 48 |  |  | 14d |  |  | 钱浩; 王心洋; 宋振振 | 192h |  |
| 50 | 1.3.2.2 | **投保单查询** | 18d | 2017-10-13 A | 2017-11-07 |  | 90% | 1.8d | 36d |  |  |  | 48h | 43.2h |
| 51 | 1.3.2.2.1 | 投保单列表查询 | 2d | 2017-10-13 A | 2017-10-16 A |  | 100% |  |  |  | start no earlier than 2017-10-13 | 何伟东 | 16h | 16h |
| 52 | 1.3.2.2.2 | 投保单撤单按钮服务 | 1d | 2017-11-07 A | 2017-11-07 A |  | 100% |  |  |  | start no earlier than 2017-11-07 | 王心洋 | 8h | 8h |
| 53 | 1.3.2.2.3 | 投保单详情查询 | 3d | 2017-10-16 A | 2017-10-18 |  | 80% | 0.6d | 50d |  | start no earlier than 2017-10-16 | 何伟东 | 24h | 19.2h |
| 54 | 1.3.3 | 前后端联调测试 | 6d | 2017-11-08 | 2017-11-15 |  |  |  | 27d |  | start no earlier than 2017-11-08 | 王心洋 | 48h |  |
| 55 | 1.3.4 | **保单管理** | 17d | 2017-11-16 | 2017-12-08 |  |  |  | 13d |  |  |  | 104h |  |
| 56 | 1.3.4.1 | **保单查询** | 17d | 2017-11-16 | 2017-12-08 |  |  |  | 13d |  |  |  | 104h |  |
| 57 | 1.3.4.1.1 | 保单列表查询 | 2d | 2017-11-16 | 2017-11-17 |  |  |  | 24d | 0d | start no earlier than 2017-11-16 | 宋振振 | 16h |  |
| 58 | 1.3.4.1.2 | 保单详情查询 | 3d | 2017-11-20 | 2017-11-22 | 57 |  |  | 24d |  |  | 宋振振 | 24h |  |
| 59 | 1.3.4.1.3 | 前后端联调测试 | 4d | 2017-12-05 | 2017-12-08 |  |  |  | 10d |  | start no earlier than 2017-12-05 | 宋振振; 钱浩 | 64h |  |
| 60 | 1.3.5 | **查看页面关联信息查询服务** | 6d | 2017-11-16 | 2017-11-23 |  |  |  | 24d |  |  |  | 80h |  |
| 61 | 1.3.5.1 | 投保单、保单关联查询关联信息服务 | 2d | 2017-11-16 | 2017-11-17 | 65 |  |  | 24d | 0d | start no earlier than 2017-11-16 | 王心洋 | 16h |  |
| 62 | 1.3.5.2 | 立案号查询信息服务 | 2d | 2017-11-20 | 2017-11-21 | 61 |  |  | 23d | 0d |  | 王心洋 | 16h |  |
| 63 | 1.3.5.3 | 预赔号查询信息服务 | 2d | 2017-11-22 | 2017-11-23 | 62 |  |  | 21d |  |  | 王心洋 | 16h |  |
| 64 | 1.3.5.4 | 实赔号查询信息服务 | 2d | 2017-11-17 | 2017-11-20 |  |  |  | 25d | 0d | start no earlier than 2017-11-17 | 田健 | 16h |  |
| 65 | 1.3.5.5 | 分保保单号查询信息服务 | 2d | 2017-11-21 | 2017-11-22 | 64 |  |  | 22d |  |  | 田健 | 16h |  |
| 66 | 1.3.6 | 前后端联调测试 | 4d | 2017-12-05 | 2017-12-08 |  |  |  | 13d |  | start no earlier than 2017-12-05 | 田健; 王心洋 | 64h |  |

| ID | WBS | Task | Duration | Start | Finish | Predecessors | Total slack | Free slack | Constraint | Resources | Work |
| --- | --- | --- | --- | --- | --- | --- | --- | --- | --- | --- | --- |
| 67 | 1.3.7 | **联合出单** | 25d | 2017-11-23 | 2017-12-27 |  | 0d |  |  |  | 248h |
| 68 | 1.3.7.1 | **联合出单保存服务** | 9d | 2017-11-23 | 2017-12-05 |  | 16d |  |  |  | 72h |
| 69 | 1.3.7.1.1 | 数据校验服务 | 4d | 2017-11-23 | 2017-11-28 |  | 13d | 0d | start no earlier than 2017-11-23 | 田健 | 32h |
| 70 | 1.3.7.1.2 | 联合出单投保保存服务 | 5d | 2017-11-29 | 2017-12-05 | 69 | 16d |  | start no earlier than 2017-11-29 | 田健 | 40h |
| 71 | 1.3.7.2 | **联合出单暂存服务** | 2d | 2017-12-11 | 2017-12-12 |  | 11d |  |  |  | 16h |
| 72 | 1.3.7.2.1 | 联合出单投保暂存服务 | 2d | 2017-12-11 | 2017-12-12 |  | 11d |  | start no earlier than 2017-12-11 | 田健 | 16h |
| 73 | 1.3.7.3 | 联合出单提交核保 | 4d | 2017-12-11 | 2017-12-14 |  | 9d |  | start no earlier than 2017-12-11 | 王心洋 | 32h |
| 74 | 1.3.8 | **客户设置** | 12d | 2017-12-11 | 2017-12-26 |  | 1d |  |  |  | 184h |
| 75 | 1.3.8.1 | 客户查询 | 3d | 2017-12-11 | 2017-12-13 |  | 5d | 3d | start no earlier than 2017-12-11 | 宋振振 | 24h |
| 76 | 1.3.8.2 | 菜单设置及权限 | 5d | 2017-12-11 | 2017-12-15 |  | 8d |  | start no earlier than 2017-12-11 | 钱浩 | 40h |
| 77 | 1.3.8.3 | 客户风险等级设置 | 3d | 2017-12-14 | 2017-12-18 |  | 7d |  | start no earlier than 2017-12-14 | 宋振振 | 24h |
| 78 | 1.3.8.4 | 前后端联调测试 | 6d | 2017-12-19 | 2017-12-26 | 75 | 1d |  | start no earlier than 2017-12-19 | 钱浩; 宋振振 | 96h |
