# 项目计划示例-20171025

Schedule from MS Project, 2017-10-09 to 2017-12-04, A marks actual dates.

## Calendars

- 标准: Mon-Fri 08:00-12:00, 13:00-17:00; Sat-Sun off. Exceptions (off unless hours are given): 2017-11-04 to 2017-11-05 08:00-12:00, 13:00-17:00, 2017-11-11 to 2017-11-12 08:00-12:00, 13:00-17:00, 2017-11-18 08:00-12:00, 13:00-17:00, 2017-11-25 08:00-12:00, 13:00-17:00, 2017-12-02 08:00-12:00, 13:00-17:00.

## Resources

| Resource |
| --- |
| 田健 |
| 钱浩 |
| 何伟东 |
| 董坤 |
| 王保良 |
| 李东松 |
| 任斌 |
| 宋振振 |
| 陈道洋 |
| 王心洋 |
| 田健钱浩 |
| 胡世界 |
| 汶敏强 |
| 张俊 |
| 李东东 |
| 李冬松 |
| A |
| 祝凯 |

## Schedule

| ID | WBS | Task | Duration | Start | Finish | Predecessors | Complete | Remaining | Total slack | Free slack | Constraint | Resources | Work | Actual work |
| --- | --- | --- | --- | --- | --- | --- | --- | --- | --- | --- | --- | --- | --- | --- |
| 1 | 1 | **承保系统** | 48d? | 2017-10-09 A | 2017-12-04 |  | 46% | 26d? | 17d |  |  |  | 1536h | 713.6h |
| 2 | 1.1 | 需求理解 | 4d | 2017-10-09 | 2017-10-12 |  |  |  | 54d |  | start no earlier than 2017-10-09 |  |  |  |
| 3 | 1.2 | **系统设计** | 9.33d? | 2017-10-25 | 2017-11-05 |  |  |  | 26.67d |  |  |  | 80h |  |
| 4 | 1.2.1 | **接口设计** | 4d? | 2017-10-25 | 2017-10-30 |  |  |  | 32d |  |  |  | 32h |  |
| 5 | 1.2.1.1 | 接口列表整理 | 4d? | 2017-10-25 | 2017-10-30 |  |  |  | 32d |  | start no earlier than 2017-10-25 | 田健 | 32h |  |
| 6 | 1.2.2 | 接口清单评审 | 0.33d? | 2017-10-31 | 2017-10-31 |  |  |  | 29.17d | 0d | start no earlier than 2017-10-31 | 田健; 胡世界; 汶敏强 | 8h |  |
| 7 | 1.2.3 | 接口入参，出参设计 | 5d | 2017-10-31 | 2017-11-05 | 6 |  |  | 26.67d |  |  | 田健 | 40h |  |
| 8 | 1.3 | **开发** | 48d? | 2017-10-09 A | 2017-12-04 |  | 49% | 24.39d? | 0d |  |  |  | 1456h | 713.6h |
| 9 | 1.3.1 | 单号生成 | 3d | 2017-10-09 A | 2017-10-11 A |  | 100% |  |  |  |  | 钱浩 | 24h | 24h |
| 10 | 1.3.2 | 分库 | 1d? | 2017-10-30 A | 2017-10-30 A |  | 100% |  |  |  | start no earlier than 2017-10-30 | 田健 | 8h | 8h |
| 11 | 1.3.3 | **投保单管理** | 41d? | 2017-10-09 A | 2017-11-25 |  | 64% | 14.85d? | 7d |  |  |  | 1008h | 641.6h |
| 12 | 1.3.3.1 | **投保单录入** | 41d? | 2017-10-09 A | 2017-11-25 |  | 66% | 14.05d? | 7d |  |  |  | 912h | 598.4h |
| 13 | 1.3.3.1.1 | **页面初始化** | 21d | 2017-10-09 A | 2017-11-04 |  | 60% | 8.4d | 27d |  |  |  | 40h | 24h |
| 14 | 1.3.3.1.1.1 | 根据codetype查询prpdcode服务 | 3d | 2017-10-09 A | 2017-10-11 A |  | 100% |  |  |  | start no earlier than 2017-10-19 | 田健 | 24h | 24h |
| 15 | 1.3.3.1.1.2 | 初始化页面前后端联调 | 2d | 2017-11-03 | 2017-11-04 |  |  |  | 35d |  | start no earlier than 2017-11-03 | 田健 | 16h |  |
| 16 | 1.3.3.1.2 | **投保信息收集** | 35d? | 2017-10-09 A | 2017-11-18 |  | 72% | 9.93d? | 13d |  |  |  | 536h | 384h |
| 17 | 1.3.3.1.2.1 | 特约及附加信息查询服务 | 3d | 2017-10-09 A | 2017-10-11 A |  | 100% |  |  |  | start no earlier than 2017-10-09 | 王保良 | 24h | 24h |
| 18 | 1.3.3.1.2.2 | 归属机构查询服务 | 3d | 2017-10-09 A | 2017-10-11 A |  | 100% |  |  |  | start no earlier than 2017-10-09 | 李东松 | 24h | 24h |
| 19 | 1.3.3.1.2.3 | 归属区域查询服务 | 5d | 2017-10-09 A | 2017-10-13 A |  | 100% |  |  |  | start no earlier than 2017-10-09 | 任斌 | 40h | 40h |
| 20 | 1.3.3.1.2.4 | 主险、附加险险别的查询服务 | 2d | 2017-10-09 A | 2017-10-10 A |  | 100% |  |  |  | start no earlier than 2017-10-09 | 陈道洋 | 16h | 16h |
| 21 | 1.3.3.1.2.5 | 归属业务员查询服务 | 3d | 2017-10-11 A | 2017-10-13 A |  | 100% |  |  |  | start no earlier than 2017-10-11 | 陈道洋 | 24h | 24h |
| 22 | 1.3.3.1.2.6 | 价税分离服务 | 2d | 2017-10-12 A | 2017-10-13 A |  | 100% |  |  |  | start no earlier than 2017-10-24 | 钱浩 | 16h | 16h |
| 23 | 1.3.3.1.2.7 | 代理人、经纪人查询服务 | 5d | 2017-10-09 A | 2017-10-13 A |  | 100% |  |  |  | start no earlier than 2017-10-09 | 宋振振 | 40h | 40h |
| 24 | 1.3.3.1.2.8 | 购货方信息查询服务 | 4d | 2017-10-11 A | 2017-10-16 A | 20 | 100% |  |  |  |  | 宋振振 | 32h | 32h |
| 25 | 1.3.3.1.2.9 | 恐怖分子查询服务 | 2d | 2017-10-17 A | 2017-10-18 A | 24 | 100% |  |  |  |  | 宋振振 | 16h | 16h |
| 26 | 1.3.3.1.2.10 | 承保清单归属区域查询服务 | 3d | 2017-10-09 A | 2017-10-11 A |  | 100% |  |  |  | start no earlier than 2017-10-09 | 董坤 | 24h | 24h |
| 27 | 1.3.3.1.2.11 | 主险、附加险标的类别查询服务 | 2d | 2017-10-12 A | 2017-10-13 A | 26 | 100% |  |  |  |  | 董坤 | 16h | 16h |
| 28 | 1.3.3.1.2.12 | 主险、附加险币别查询服务 | 2d | 2017-10-25 A | 2017-10-26 A |  | 100% |  |  |  |  | 宋振振 | 16h | 16h |
| 29 | 1.3.3.1.2.13 | 险种查询 | 1d? | 2017-11-16 A | 2017-11-16 A | 36 | 100% |  |  |  |  | 王保良 | 8h | 8h |
| 30 | 1.3.3.1.2.14 | 清单号查询服务 | 2d | 2017-10-31 A | 2017-11-01 |  | 50% | 1d | 30d |  | start no earlier than 2017-10-31 | 李冬松 | 16h | 8h |
| 31 | 1.3.3.1.2.15 | 投保人、被保险人查询服务 | 2d | 2017-10-16 A | 2017-10-17 A |  | 100% |  |  |  | start no earlier than 2017-10-18 | 钱浩 | 16h | 16h |
| 32 | 1.3.3.1.2.16 | 客户新增保存服务 | 2d | 2017-10-18 A | 2017-10-19 A | 31 | 100% |  |  |  | finish no earlier than 2017-10-18 | 钱浩 | 16h | 16h |
| 33 | 1.3.3.1.2.17 | 清单与预投保单清单关联调用清单服务 | 2d | 2017-11-03 | 2017-11-04 |  |  |  | 27d |  | start no earlier than 2017-11-03 | 钱浩 | 16h |  |
| 34 | 1.3.3.1.2.18 | 共保人机构查询服务 | 2d | 2017-10-23 A | 2017-10-24 A |  | 100% |  |  |  | start no earlier than 2017-10-23 | 钱浩 | 16h | 16h |
| 35 | 1.3.3.1.2.19 | 分户清单下载服务 | 4d | 2017-10-30 A | 2017-11-02 A |  | 100% |  |  |  | start no earlier than 2017-10-30 | 钱浩 | 32h | 32h |
| 36 | 1.3.3.1.2.20 | 共保协议信息查询服务 | 3d | 2017-11-13 | 2017-11-15 | 39 |  |  | 15d | 0d |  | 钱浩 | 24h |  |
| 37 | 1.3.3.1.2.21 | 条款查询服务 | 3d | 2017-11-16 | 2017-11-18 | 28 |  |  | 13d |  | start no earlier than 2017-11-16 | 钱浩 | 24h |  |
| 38 | 1.3.3.1.2.22 | 使用模板查询服务 | 3d | 2017-11-13 | 2017-11-15 |  |  |  | 16d |  | start no earlier than 2017-11-13 | 宋振振 | 24h |  |
| 39 | 1.3.3.1.2.23 | 页面收集信息服务前后端联调(投保单收集下的所有服务联调) | 7d | 2017-11-06 | 2017-11-12 |  |  |  | 15d | 0d | start no earlier than 2017-11-06 | 田健 | 56h |  |

Notes:
- 35: 只写查询逻辑，转成excel只有等技术实现之后才能开发上传
- 36: 任务滞后在写，优先主干流程
- 37: 待确认
- 38: 表结构都没设计好，没法写

| ID | WBS | Task | Duration | Start | Finish | Predecessors | Complete | Remaining | Total slack | Free slack | Constraint | Resources | Work | Actual work |
| --- | --- | --- | --- | --- | --- | --- | --- | --- | --- | --- | --- | --- | --- | --- |
| 40 | 1.3.3.1.3 | **保费计算服务** | 24d | 2017-10-12 A | 2017-11-10 |  | 67% | 8d | 21d |  |  |  | 120h | 80h |
| 41 | 1.3.3.1.3.1 | 清单调用接口服务 | 3d | 2017-10-12 A | 2017-10-16 A |  | 100% |  |  |  | start no earlier than 2017-10-12 | 田健 | 24h | 24h |
| 42 | 1.3.3.1.3.2 | 保费计算 | 7d | 2017-10-17 A | 2017-10-25 A | 41 | 100% |  |  |  |  | 田健 | 56h | 56h |
| 43 | 1.3.3.1.3.3 | 前后端联调测试 | 5d | 2017-11-06 | 2017-11-10 |  |  |  | 21d |  | start no earlier than 2017-11-06 | 祝凯 | 40h |  |
| 44 | 1.3.3.1.4 | **投保单保存服务** | 28d | 2017-10-26 A | 2017-11-25 |  | 89% | 3.05d | 7d |  |  |  | 88h | 78.4h |
| 45 | 1.3.3.1.4.1 | 投保单转保单提供双核服务 | 3d | 2017-11-01 A | 2017-11-05 A |  | 100% |  |  |  | start no earlier than 2017-10-25 | 宋振振 | 24h | 24h |
| 46 | 1.3.3.1.4.2 | 数据校验服务 | 2d | 2017-11-24 A | 2017-11-25 A |  | 100% |  |  |  | start no earlier than 2017-11-24 | 何伟东 | 16h | 16h |
| 47 | 1.3.3.1.4.3 | 投保保存服务 | 6d | 2017-10-26 A | 2017-11-04 |  | 80% | 1.2d | 27.2d |  | start no earlier than 2017-10-26 | 何伟东 | 48h | 38.4h |
| 48 | 1.3.3.1.5 | **投保单暂存服务** | 3d | 2017-11-03 | 2017-11-05 |  |  |  | 26d |  |  |  | 24h |  |
| 49 | 1.3.3.1.5.1 | 投保暂存服务 | 3d | 2017-11-03 | 2017-11-05 |  |  |  | 26d |  | start no earlier than 2017-11-03 | 宋振振 | 24h |  |
| 50 | 1.3.3.1.6 | 提交核保服务 | 6d | 2017-10-23 A | 2017-10-30 |  | 80% | 1.2d | 24d | 13d | start no earlier than 2017-11-16 | 钱浩 | 40h | 32h |
| 51 | 1.3.3.1.7 | 前后端联调测试 | 8d | 2017-11-13 | 2017-11-21 | 50 |  |  | 11d |  | start no earlier than 2017-11-13 | 钱浩 | 64h |  |
| 52 | 1.3.3.2 | **投保单查询** | 6d | 2017-10-13 A | 2017-10-20 |  | 90% | 0.6d | 38d |  |  |  | 48h | 43.2h |
| 53 | 1.3.3.2.1 | 投保单列表查询 | 2d | 2017-10-13 A | 2017-10-16 A |  | 100% |  |  |  | start no earlier than 2017-10-13 | 何伟东 | 16h | 16h |
| 54 | 1.3.3.2.2 | 投保单撤单按钮服务 | 1d | 2017-10-20 A | 2017-10-20 A |  | 100% |  |  |  | start no earlier than 2017-10-20 | 钱浩 | 8h | 8h |
| 55 | 1.3.3.2.3 | 投保单详情查询 | 3d | 2017-10-16 A | 2017-10-18 |  | 80% | 0.6d | 40d |  | start no earlier than 2017-10-16 | 何伟东 | 24h | 19.2h |
| 56 | 1.3.3.3 | 前后端联调测试 | 6d | 2017-11-13 | 2017-11-18 | 57 |  |  | 13d |  | start no earlier than 2017-11-13 | 王保良 | 48h |  |
| 57 | 1.3.4 | **保单管理** | 14d | 2017-10-25 A | 2017-11-09 |  | 56% | 6.22d | 16d | 3d |  |  | 72h | 40h |
| 58 | 1.3.4.1 | **保单查询** | 14d | 2017-10-25 A | 2017-11-09 |  | 56% | 6.22d | 16d |  |  |  | 72h | 40h |
| 59 | 1.3.4.1.1 | 保单列表查询 | 2d | 2017-10-25 A | 2017-10-26 A |  | 100% |  |  |  | start no earlier than 2017-10-25 | 王心洋 | 16h | 16h |
| 60 | 1.3.4.1.2 | 保单详情查询 | 3d | 2017-10-27 A | 2017-11-03 A | 59 | 100% |  |  |  |  | 王心洋 | 24h | 24h |
| 61 | 1.3.4.1.3 | 前后端联调测试 | 4d | 2017-11-06 | 2017-11-09 |  |  |  | 16d |  | start no earlier than 2017-11-06 | 王心洋 | 32h |  |
| 62 | 1.3.5 | **查看页面关联信息查询服务** | 5d | 2017-11-13 | 2017-11-17 |  |  |  | 14d |  |  |  | 56h |  |
| 63 | 1.3.5.1 | 投保单、保单关联查询关联信息服务 | 2d | 2017-11-13 | 2017-11-14 |  |  |  | 14d | 0d | start no earlier than 2017-11-13 | 钱浩 | 16h |  |
| 64 | 1.3.5.2 | 立案号查询信息服务 | 1d | 2017-11-15 | 2017-11-15 | 63 |  |  | 12d | 0d |  | 钱浩 | 8h |  |
| 65 | 1.3.5.3 | 预赔号查询信息服务 | 1d | 2017-11-16 | 2017-11-16 | 64 |  |  | 12d | 0d |  | 钱浩 | 8h |  |
| 66 | 1.3.5.4 | 实赔号查询信息服务 | 1d | 2017-11-17 | 2017-11-17 | 65 |  |  | 12d | 0d |  | 钱浩 | 8h |  |
| 67 | 1.3.5.5 | 分保保单号查询信息服务 | 2d | 2017-11-16 | 2017-11-17 |  |  |  | 14d |  | start no earlier than 2017-11-16 | 宋振振 | 16h |  |
| 68 | 1.3.6 | 前后端联调测试 | 5d | 2017-11-20 | 2017-11-24 |  |  |  | 8d |  | start no earlier than 2017-11-20 | 宋振振 | 40h |  |

| ID | WBS | Task | Duration | Start | Finish | Predecessors | Total slack | Free slack | Constraint | Resources | Work |
| --- | --- | --- | --- | --- | --- | --- | --- | --- | --- | --- | --- |
| 69 | 1.3.7 | **联合出单** | 21d | 2017-11-10 | 2017-12-02 |  | 1d |  |  |  | 168h |
| 70 | 1.3.7.1 | **联合出单保存服务** | 7d | 2017-11-10 | 2017-11-16 |  | 15d |  |  |  | 56h |
| 71 | 1.3.7.1.1 | 数据校验服务 | 3d | 2017-11-10 | 2017-11-12 |  | 15d | 0d | start no earlier than 2017-11-10 | 王心洋 | 24h |
| 72 | 1.3.7.1.2 | 联合出单投保保存服务 | 4d | 2017-11-13 | 2017-11-16 | 71 | 15d |  | start no earlier than 2017-11-09 | 王心洋 | 32h |
| 73 | 1.3.7.2 | **联合出单暂存服务** | 2d | 2017-11-17 | 2017-11-18 |  | 13d |  |  |  | 16h |
| 74 | 1.3.7.2.1 | 联合出单投保暂存服务 | 2d | 2017-11-17 | 2017-11-18 |  | 13d |  | start no earlier than 2017-11-17 | 王心洋 | 16h |
| 75 | 1.3.7.3 | 联合出单提交核保 | 3d | 2017-11-20 | 2017-11-22 |  | 1d | 0d | start no earlier than 2017-11-20 | 王心洋 | 24h |
| 76 | 1.3.7.4 | 前后端联调测试 | 9d | 2017-11-23 | 2017-12-02 | 75 | 1d |  |  | 王心洋 | 72h |
| 77 | 1.3.8 | **客户设置** | 28d | 2017-11-04 | 2017-12-04 |  | 0d |  |  |  | 80h |
| 78 | 1.3.8.1 | 客户查询 | 2d | 2017-11-04 | 2017-11-05 |  | 26d |  | finish no earlier than 2017-11-05 | 张俊 | 16h |
| 79 | 1.3.8.2 | 菜单设置及权限 | 2d | 2017-11-11 | 2017-11-12 |  | 19d |  | start no earlier than 2017-11-11 | 张俊 | 16h |
| 80 | 1.3.8.3 | 客户风险等级设置 | 2d | 2017-11-28 | 2017-11-29 | 81 | 4d |  | start no earlier than 2017-11-18 | 张俊 | 16h |
| 81 | 1.3.8.4 | 前后端联调测试 | 2d | 2017-11-25 | 2017-11-27 |  | 4d | 0d | start no earlier than 2017-11-25 | 张俊 | 16h |
| 82 | 1.3.8.5 | 前后端联调测试 | 2d | 2017-12-02 | 2017-12-04 |  | 0d |  | start no earlier than 2017-12-02 | 张俊 | 16h |
