Schedule from MS Project, 2006-10-27 to 2017-12-15, A marks actual dates.

## Calendars

- 标准: Mon-Fri 08:00-12:00, 13:00-17:00; Sat-Sun off. Exceptions (off unless hours are given): 2017-10-21 08:00-12:00, 13:00-17:00.

## Resources

| Resource |
| --- |
| 宋振振 |
| 田健 |
| A |
| B |
| 钱浩 |
| 王心洋 |

## Schedule

| ID | WBS | Task | Type | Duration | Start | Finish | Predecessors | Complete | Remaining | Total slack | Free slack | Constraint | Resources | Work | Actual work |
| --- | --- | --- | --- | --- | --- | --- | --- | --- | --- | --- | --- | --- | --- | --- | --- |
| 1 | 1 | 提交核保逻辑实现 |  | 4d | 2017-10-16 A | 2017-10-19 |  | 75% | 1d | 39d | 0d | start no earlier than 2017-10-16 | 钱浩 | 32h | 24h |
| 2 | 2 | 保费计算（从清单系统获取分户信息，计算补贴金额与自缴份额）(已完成) |  | 4d | 2017-10-16 A | 2017-10-19 A |  | 100% |  |  |  | start no earlier than 2006-10-16 | 田健 | 32h | 32h |
| 3 | 3 | 开发自测 |  | 1d? | 2017-10-20 A | 2017-10-20 A | 2 | 100% |  |  |  |  |  |  |  |
| 4 | 4 | **投保单查询** |  | 8d? | 2017-10-18 A | 2017-10-26 |  | 84% | 1.25d? | 36d |  |  |  | 128h | 108h |
| 5 | 4.1 | 投保单查询逻辑 |  | 1d? | 2017-10-18 A | 2017-10-18 A |  | 100% |  |  |  | start no earlier than 2017-10-23 | 宋振振 | 8h | 8h |
| 6 | 4.2 | 投保单查询信息列表投保单链接 |  | 1d | 2017-10-19 A | 2017-10-19 A |  | 100% |  |  |  | start no earlier than 2017-10-24 | 宋振振 | 8h | 8h |
| 7 | 4.3 | 投保单查询信息列表撤单逻辑实现 |  | 1d | 2017-10-20 A | 2017-10-20 A | 6 | 100% |  |  |  |  | 宋振振 | 8h | 8h |
| 8 | 4.4 | 开发自测 |  | 1d? | 2017-10-20 A | 2017-10-20 |  | 50% | 0.5d? | 41d |  | start no earlier than 2017-10-20 | 宋振振 | 8h | 4h |
| 9 | 4.5 | 恐怖分子名单查询逻辑 | milestone | 0d | 2017-10-21 A | 2017-10-21 A |  | 100% |  |  |  |  | 宋振振 |  |  |
| 10 | 4.6 | 开发自测 |  | 1d? | 2017-10-21 A | 2017-10-21 A | 8 | 100% |  |  |  | start no earlier than 2017-10-21 | 宋振振 | 8h | 8h |
| 11 | 4.7 | 投保单录入页面所有下拉框配置prpdcode表公用成一个服务 |  | 1d | 2017-10-21 A | 2017-10-21 A |  | 100% |  |  |  | start no earlier than 2017-10-27 | 田健 | 8h | 8h |
| 12 | 4.8 | 开发自测 |  | 1d? | 2017-10-23 A | 2017-10-23 A | 11 | 100% |  |  |  |  | 田健 | 8h | 8h |
| 13 | 4.9 | **新增或修改客户信息逻辑服务** |  | 1d? | 2017-10-21 A | 2017-10-21 |  | 67% | 0.33d? | 40d |  |  |  | 24h | 16h |
| 14 | 4.9.1 | 保存逻辑 |  | 1d | 2017-10-21 A | 2017-10-21 A |  | 100% |  |  |  | start no earlier than 2017-11-02 | 钱浩 | 8h | 8h |
| 15 | 4.9.2 | 变更信息逻辑 |  | 1d | 2017-10-21 A | 2017-10-21 A | 14 | 100% |  |  |  |  | 钱浩 | 8h | 8h |
| 16 | 4.9.3 | 开发自测 |  | 1d? | 2017-10-21 | 2017-10-21 |  |  |  | 40d |  | start no earlier than 2017-10-21 | 钱浩 | 8h |  |
| 17 | 4.10 | 查看核保信息对接接口（与双核系统） |  | 3d | 2017-10-23 A | 2017-10-25 A |  | 100% |  |  |  | start no earlier than 2017-10-23 | 田健 | 24h | 24h |
| 18 | 4.11 | 开发自测 |  | 1d? | 2017-10-26 A | 2017-10-26 A | 17 | 100% |  |  |  |  | 田健 | 8h | 8h |
| 19 | 4.12 | 投保单查询信息列表上传对接接口 |  | 1d | 2017-10-23 A | 2017-10-23 A |  | 100% |  |  |  | finish no earlier than 2017-10-23 | 钱浩 | 8h | 8h |
| 20 | 4.13 | 开发自测 |  | 1d? | 2017-10-24 | 2017-10-24 | 19 |  |  | 38d |  |  | 钱浩 | 8h |  |
| 21 | 5 | 基本信息页面第三方识别说明逻辑 |  | 2d | 2017-12-13 A | 2017-12-14 A | 54 | 100% |  |  |  |  | 宋振振 | 16h | 16h |
| 22 | 6 | 开发自测 |  | 1d? | 2017-12-15 A | 2017-12-15 A | 21 | 100% |  |  |  |  | 宋振振 | 8h | 8h |
| 23 | 7 | 条款查询逻辑 |  | 1d | 2017-10-30 | 2017-10-30 |  |  |  | 28d | 0d | start no earlier than 2017-10-30 | 钱浩 | 8h |  |
| 24 | 8 | 使用模板查询逻辑 |  | 1d | 2017-10-31 | 2017-10-31 | 23 |  |  | 28d | 0d |  | 钱浩 | 8h |  |
| 25 | 9 | 开发自测 |  | 1d? | 2017-11-01 | 2017-11-01 | 24 |  |  | 28d | 0d |  | 钱浩 | 8h |  |
| 26 | 10 | 分户清单下载 |  | 4d | 2017-11-07 | 2017-11-10 |  |  |  | 24d | 0d | start no earlier than 2017-11-07 | 宋振振 | 32h |  |
| 27 | 11 | 开发自测 |  | 1d? | 2017-11-13 | 2017-11-13 | 26 |  |  | 24d |  |  | 宋振振 | 8h |  |
| 28 | 12 | 险种的查询（联合出单的险种选择与非联合出单的险种查询） |  | 2d | 2017-11-02 | 2017-11-03 | 25 |  |  | 28d | 0d |  | 宋振振 | 16h |  |
| 29 | 13 | 开发自测 |  | 1d? | 2017-11-06 | 2017-11-06 | 28 |  |  | 28d | 10d |  | 宋振振 | 8h |  |
| 30 | 14 | 风险等级说明服务 |  | 1d | 2017-10-23 A | 2017-10-23 A |  | 100% |  |  |  | start no earlier than 2017-10-23 | 宋振振 | 8h | 8h |
| 31 | 15 | 开发自测 |  | 1d? | 2017-10-24 A | 2017-10-24 A | 30 | 100% |  |  |  |  | 宋振振 | 8h | 8h |
| 32 | 16 | 证件号码查询逻辑 |  | 2d | 2017-10-20 | 2017-10-21 | 1 |  |  | 39d | 0d |  | 宋振振 | 16h |  |
| 33 | 17 | 开发自测 |  | 1d? | 2017-10-23 | 2017-10-23 | 32 |  |  | 39d |  |  | 宋振振 | 8h |  |
| 34 | 18 | 合同信息页面清单查询（与清单系统对接） |  | 2d | 2017-11-09 | 2017-11-10 |  |  |  | 24d | 0d | start no earlier than 2017-11-09 | 钱浩 | 16h |  |
| 35 | 19 | 开发自测 |  | 1d? | 2017-11-13 | 2017-11-13 | 34 |  |  | 24d |  |  | 钱浩 | 8h |  |
| 36 | 20 | 客户类型下的国籍、职业等查询逻辑 |  | 2d | 2006-11-14 | 2006-11-15 |  |  |  | 2892d | 0d | start no earlier than 2006-11-14 | 钱浩 | 16h |  |
| 37 | 21 | 开发自测 |  | 1d? | 2006-11-16 | 2006-11-16 | 36 |  |  | 2892d |  |  | 钱浩 | 8h |  |
| 38 | 22 | 投保单保存逻辑 |  | 4d | 2017-10-31 A | 2017-11-03 |  | 15% | 3.4d | 25d | 0d | start no earlier than 2017-10-31 | 田健 | 32h | 4.8h |
| 39 | 23 | 开发自测 |  | 1d? | 2017-11-06 | 2017-11-06 | 38 |  |  | 25d | 0d |  | 田健 | 8h |  |
| 40 | 24 | 投保单暂存逻辑 |  | 3d | 2017-11-07 | 2017-11-09 | 39 |  |  | 25d | 0d |  | 田健 | 24h |  |
| 41 | 25 | 开发自测 |  | 1d? | 2017-11-10 | 2017-11-10 | 40 |  |  | 25d |  |  | 田健 | 8h |  |
| 42 | 26 | 清单绘制时保存清单表逻辑(与清单系统对接) |  | 5d | 2017-10-20 A | 2017-10-25 |  | 40% | 3d | 32d |  | start no earlier than 2017-10-20 | 王心洋 | 40h | 16h |
| 43 | 27 | 开发自测 |  | 1d | 2017-10-25 | 2017-10-25 |  |  |  | 37d |  | start no earlier than 2017-10-25 | 王心洋 | 8h |  |
| 44 | 28 | 共保页面中共保人查询（与再保系统对接） |  | 2d | 2017-11-17 A | 2017-11-20 | 50 | 50% | 1d | 19d |  | start no earlier than 2017-11-17 | 钱浩 | 16h | 8h |
| 45 | 29 | 开发自测 |  | 1d? | 2017-11-21 | 2017-11-21 | 29 |  |  | 18d |  | start no earlier than 2017-11-21 | 钱浩 | 8h |  |
| 46 | 30 | 前后端联调测试 |  | 6d | 2006-11-23 | 2006-11-30 |  |  |  | 2882d |  | start no earlier than 2006-11-23 | 钱浩; 宋振振; 田健 | 144h |  |
| 47 | 31 | 上传影像对接接口（与影像系统） |  | 1d | 2017-12-01 A | 2017-12-01 A |  | 100% |  |  |  | start no earlier than 2017-12-01 | 钱浩 | 8h | 8h |
| 48 | 32 | 开发自测 |  | 1d? | 2017-12-04 A | 2017-12-04 A | 47 | 100% |  |  |  |  | 钱浩 | 8h | 8h |
| 49 | 33 | 影像查看对接接口（与影像系统） |  | 1d | 2017-10-24 A | 2017-10-24 A |  | 100% |  |  |  | start no earlier than 2017-12-01 | 钱浩 | 8h | 8h |
| 50 | 34 | 开发自测 |  | 1d? | 2017-10-24 A | 2017-10-24 A | 49 | 100% |  |  |  |  | 钱浩 | 8h | 8h |

| ID | WBS | Task | Duration | Start | Finish | Predecessors | Total slack | Free slack | Constraint | Resources | Work |
| --- | --- | --- | --- | --- | --- | --- | --- | --- | --- | --- | --- |
| 51 | 35 | **保单查询** | 3d? | 2017-12-08 | 2017-12-12 |  | 3d |  |  |  | 24h |
| 52 | 35.1 | 保单查询逻辑 | 1d? | 2017-12-08 | 2017-12-08 |  | 0.8d | 0d | start no earlier than 2017-12-08 | 宋振振 | 8h |
| 53 | 35.2 | 保单查询信息列表保单号链接 | 1d? | 2017-12-11 | 2017-12-11 | 52 | 0.8d | 0d |  | 宋振振 | 8h |
| 54 | 35.3 | 开发自测 | 1d? | 2017-12-12 | 2017-12-12 | 53 | 0.8d | 0d |  | 宋振振 | 8h |
| 55 | 36 | 联合出单单号生成的逻辑实现 | 2d | 2017-11-08 | 2017-11-09 |  | 26d |  | start no earlier than 2017-11-08 | 钱浩 | 16h |
| 56 | 37 | 开发自测 | 1d? | 2017-12-11 | 2017-12-11 |  | 4d |  | start no earlier than 2017-12-11 | 钱浩 | 8h |
| 57 | 38 | 联合出单的投保单生成逻辑 | 5d | 2017-12-01 | 2017-12-07 |  | 5d | 0d | start no earlier than 2017-12-01 | 田健 | 40h |
| 58 | 39 | 开发自测 | 1d? | 2017-12-08 | 2017-12-08 | 57 | 5d |  |  | 田健 | 8h |
| 59 | 40 | 联合出单的提交核保逻辑的实现 | 4d | 2017-12-11 | 2017-12-14 | 42 | 0d |  | start no earlier than 2017-12-11 | 田健 | 32h |
| 60 | 41 | 开发自测 | 1d | 2017-12-15 | 2017-12-15 | 59 | 0d |  |  | 田健 | 8h |
| 62 | 42 | 生成投保单工作量：74 | 1d? | 2006-10-27 | 2006-10-27 |  | 2906d |  |  |  |  |
| 63 | 43 | 总计工作量：101 | 1d? | 2006-10-27 | 2006-10-27 |  | 2906d |  |  |  |  |
