Schedule from MS Project, 2017-10-17 to 2017-12-18, A marks actual dates.
寰�杞�涓�鍥�

## Calendars

- 标准: Mon-Fri 08:00-12:00, 13:00-17:00; Sat-Sun off. Exceptions (off unless hours are given): 2017-11-18 to 2017-11-19 08:00-12:00, 13:00-17:00, 2017-11-26 08:00-12:00, 13:00-17:00, 2017-12-03 08:00-12:00, 13:00-17:00.

## Resources

| Resource |
| --- |
| 闫磊 |
| 杨昆 |
| 杨航 |
| 安齐崇 |
| 马俊玲 |
| 张进 |
| 陈旭 |
| 李洋 |
| 杨璐 |
| 1杨璐 |
| 暂存 |
| 贾楠楠 |

## Schedule

| ID | WBS | Task | Type | Duration | Start | Finish | Complete | Remaining | Total slack | Constraint | Resources | Work | Actual work |
| --- | --- | --- | --- | --- | --- | --- | --- | --- | --- | --- | --- | --- | --- |
| 1 | 1 | **报案登记** |  | 20d? | 2017-10-17 A | 2017-11-13 | 99% | 0.25d? | 29d |  |  |  |  |
| 2 | 1.1 | **报案任务** |  | 20d? | 2017-10-17 A | 2017-11-13 | 98% | 0.33d? | 29d |  |  |  |  |
| 3 | 1.1.1 | 查询页面（查询） |  | 2d? | 2017-10-17 A | 2017-10-18 A | 100% |  |  | finish no earlier than 2017-10-20 |  |  |  |
| 4 | 1.1.2 | 报案登记初始化页面(未处理、正在处理) |  | 1d? | 2017-11-13 A | 2017-11-13 A | 100% |  |  |  |  |  |  |
| 5 | 1.1.3 | 报案登记（关联） |  | 1d? | 2017-10-19 A | 2017-10-19 A | 100% |  |  | finish no earlier than 2017-10-19 |  |  |  |
| 6 | 1.1.4 | 报案登记（关联）-出险时保单信息 |  | 1d? | 2017-11-13 A | 2017-11-13 A | 100% |  |  |  |  |  |  |
| 7 | 1.1.5 | 已出险次数查询 |  | 1d? | 2017-10-20 A | 2017-10-20 | 90% | 0.1d? | 45d | finish no earlier than 2017-10-20 |  |  |  |
| 8 | 1.1.6 | 报案信息：暂存、提交 | milestone | 0d? | 2017-10-23 A | 2017-10-23 A | 100% |  |  | finish no earlier than 2017-10-23 |  |  |  |
| 9 | 1.1.7 | 打印抄件 | milestone | 0d? | 2017-10-24 A | 2017-10-24 A | 100% |  |  | finish no earlier than 2017-10-24 |  |  |  |
| 10 | 1.2 | **报案任务查询** |  | 14d? | 2017-10-25 A | 2017-11-13 A | 100% |  |  |  |  |  |  |
| 11 | 1.2.1 | 报案查询页面（查询） |  | 1d? | 2017-10-25 A | 2017-10-25 A | 100% |  |  | finish no earlier than 2017-10-25 |  |  |  |
| 12 | 1.2.2 | 查看报案信息 |  | 1d? | 2017-11-13 A | 2017-11-13 A | 100% |  |  |  |  |  |  |
| 13 | 1.2.3 | 报案撤销 | milestone | 0d? | 2017-10-30 A | 2017-10-30 A | 100% |  |  |  |  |  |  |
| 14 | 2 | **调度任务处理** |  | 10d? | 2017-10-31 A | 2017-11-13 A | 100% |  |  |  |  |  |  |
| 15 | 2.1 | 调度任务查询 |  | 1d? | 2017-10-31 A | 2017-10-31 A | 100% |  |  |  |  |  |  |
| 16 | 2.2 | 点击报案号查看报案信息 |  | 1d? | 2017-11-13 A | 2017-11-13 A | 100% |  |  |  |  |  |  |
| 17 | 2.3 | 修改、改派、调度页面初始化 |  | 1d? | 2017-11-13 A | 2017-11-13 A | 100% |  |  |  |  |  |  |
| 18 | 2.4 | 调度改派 |  | 2d? | 2017-11-09 A | 2017-11-10 A | 100% |  |  | finish no earlier than 2017-11-10 |  |  |  |
| 19 | 3 | **查勘定损任务处理(种植险、养殖险）** |  | 15.4d? | 2017-11-13 A | 2017-11-29 A | 100% |  |  |  |  | 75.2h | 75.2h |
| 20 | 3.1 | **查询及查询结果页面** |  | 15.4d? | 2017-11-13 A | 2017-11-29 A | 100% |  |  |  |  | 75.2h | 75.2h |
| 21 | 3.1.1 | 查勘定损查询 |  | 5.4d? | 2017-11-13 A | 2017-11-29 A | 100% |  |  |  | 闫磊 | 43.2h | 43.2h |
| 22 | 3.1.2 | 任务转交 |  | 1d? | 2017-11-13 A | 2017-11-13 A | 100% |  |  |  | 闫磊 | 8h | 8h |
| 23 | 3.1.3 | 查勘定损任务修改、查看、处理页面初始化 |  | 1d? | 2017-11-14 A | 2017-11-14 A | 100% |  |  |  | 安齐崇 | 8h | 8h |
| 24 | 3.1.4 | 查勘定损任务-暂存 |  | 1d? | 2017-11-17 A | 2017-11-17 A | 100% |  |  | finish no earlier than 2017-11-17 | 杨昆 | 8h | 8h |
| 25 | 3.1.5 | 查勘定损任务-提交 |  | 1d? | 2017-11-13 A | 2017-11-13 A | 100% |  |  |  | 杨航 | 8h | 8h |

Notes:
- 7: 需要承保提供服务

| ID | WBS | Task | Duration | Start | Finish | Complete | Remaining | Total slack | Constraint | Resources | Work | Actual work |
| --- | --- | --- | --- | --- | --- | --- | --- | --- | --- | --- | --- | --- |
| 26 | 4 | **立案任务处理** | 17d? | 2017-11-13 A | 2017-11-30 | 99% | 0.1d? | 13d |  |  | 264h | 262.4h |
| 27 | 4.1 | **立案任务查询** | 13d? | 2017-11-13 A | 2017-11-26 A | 100% |  |  |  |  | 200h | 200h |
| 28 | 4.1.1 | 立案信息（查询） | 6d? | 2017-11-20 A | 2017-11-26 A | 100% |  |  | start no earlier than 2017-11-20 | 闫磊 | 48h | 48h |
| 29 | 4.1.2 | 查询结果页面（处理、修改、查看）页面初始化 | 6d? | 2017-11-20 A | 2017-11-26 A | 100% |  |  | finish no earlier than 2017-11-26 | 安齐崇 | 48h | 48h |
| 30 | 4.1.3 | 调整估损金额 | 1d? | 2017-11-13 A | 2017-11-13 A | 100% |  |  |  | 杨航 | 8h | 8h |
| 31 | 4.1.4 | 立案转交 | 6d? | 2017-11-20 A | 2017-11-26 A | 100% |  |  | finish no earlier than 2017-11-26 | 闫磊 | 48h | 48h |
| 32 | 4.1.5 | 申请注销/拒赔 | 6d? | 2017-11-20 A | 2017-11-26 A | 100% |  |  | finish no earlier than 2017-11-26 | 马俊玲 | 48h | 48h |
| 33 | 4.2 | **立案任务处理(种植险、养殖险)** | 17d? | 2017-11-13 A | 2017-11-30 | 98% | 0.42d? | 13d |  |  | 64h | 62.4h |
| 34 | 4.2.1 | 生成危险单位 | 6d? | 2017-11-20 A | 2017-11-26 A | 100% |  |  | finish no earlier than 2017-11-26 | 杨璐 | 48h | 48h |
| 35 | 4.2.2 | 放弃任务 | 1d? | 2017-11-30 A | 2017-11-30 A | 100% |  |  | finish no earlier than 2017-11-26 | 闫磊 | 8h | 8h |
| 36 | 4.2.3 | 提交 | 1d? | 2017-11-13 A | 2017-11-13 | 80% | 0.2d? | 29d |  | 杨昆 | 8h | 6.4h |
| 37 | 5 | **特殊赔案处理** | 24d? | 2017-11-13 A | 2017-12-08 A | 100% |  |  |  |  | 48h | 48h |
| 38 | 5.1 | **特殊赔案查询** | 20d? | 2017-11-13 A | 2017-12-04 A | 100% |  |  |  |  | 24h | 24h |
| 39 | 5.1.1 | 查询页面（查询） | 1d? | 2017-12-04 A | 2017-12-04 A | 100% |  |  | start no earlier than 2017-12-04 | 闫磊 | 8h | 8h |
| 40 | 5.1.2 | 查询结果页面（处理、修改、查看、重新提交）页面初始化 | 1d? | 2017-11-13 A | 2017-11-13 A | 100% |  |  |  | 安齐崇 | 8h | 8h |
| 41 | 5.1.3 | 转交 | 1d? | 2017-11-13 A | 2017-11-13 A | 100% |  |  |  | 闫磊 | 8h | 8h |
| 42 | 5.2 | **特殊赔案处理** | 24d? | 2017-11-13 A | 2017-12-08 A | 100% |  |  |  |  | 24h | 24h |
| 43 | 5.2.1 | 暂存 | 1d? | 2017-12-04 A | 2017-12-04 A | 100% |  |  | finish no earlier than 2017-12-10 | 杨昆 | 8h | 8h |
| 44 | 5.2.2 | 放弃任务 | 1d? | 2017-11-13 A | 2017-11-13 A | 100% |  |  |  | 闫磊 | 8h | 8h |
| 45 | 5.2.3 | 提交 | 1d? | 2017-12-08 A | 2017-12-08 A | 100% |  |  |  | 杨昆 | 8h | 8h |
| 46 | 6 | **理算任务处理** | 19d? | 2017-11-13 A | 2017-12-03 | 80% | 3.87d? | 11d |  |  | 448h | 404.8h |
| 47 | 6.1 | **理算查询页面** | 6d? | 2017-11-27 A | 2017-12-03 A | 100% |  |  |  |  | 240h | 240h |
| 48 | 6.1.1 | 查询页面（查询） | 6d? | 2017-11-27 A | 2017-12-03 A | 100% |  |  | start no earlier than 2017-11-27 | 闫磊 | 48h | 48h |
| 49 | 6.1.2 | 查询结果页面（立案号超链接） | 6d? | 2017-11-27 A | 2017-12-03 A | 100% |  |  | finish no earlier than 2017-12-03 | 闫磊 | 48h | 48h |
| 50 | 6.1.3 | 查询结果页面（处理、修改、查看、重新提交）页面初始化 | 6d? | 2017-11-27 A | 2017-12-03 A | 100% |  |  | finish no earlier than 2017-12-03 | 安齐崇 | 48h | 48h |
| 51 | 6.1.4 | 转交 | 6d? | 2017-11-27 A | 2017-12-03 A | 100% |  |  | finish no earlier than 2017-12-03 | 闫磊 | 48h | 48h |
| 52 | 6.1.5 | 申请注销/拒赔 | 6d? | 2017-11-27 A | 2017-12-03 A | 100% |  |  | finish no earlier than 2017-12-03 | 马俊玲 | 48h | 48h |

| ID | WBS | Task | Type | Duration | Start | Finish | Predecessors | Complete | Remaining | Total slack | Constraint | Resources | Work | Actual work |
| --- | --- | --- | --- | --- | --- | --- | --- | --- | --- | --- | --- | --- | --- | --- |
| 53 | 6.2 | **理算处理页面（种植险、养殖险）** |  | 6d? | 2017-11-27 | 2017-12-03 |  |  |  | 11d |  |  |  |  |
| 54 | 6.2.1 | **赔款计算书** |  | 6d? | 2017-11-27 | 2017-12-03 |  |  |  | 11d |  |  |  |  |
| 55 | 6.2.1.1 | 特别约定（详情） |  | 6d? | 2017-11-27 | 2017-12-03 |  |  |  | 11d | start no earlier than 2017-11-27 |  |  |  |
| 56 | 6.3 | **赔付标的信息** |  | 19d? | 2017-11-13 A | 2017-12-03 A |  | 100% |  |  |  | 闫磊 | 104h | 104h |
| 57 | 6.3.1 | 查看 |  | 6d? | 2017-11-27 A | 2017-12-03 A |  | 100% |  |  | start no earlier than 2017-11-27 | 闫磊 | 48h | 48h |
| 58 | 6.3.2 | 耳标号验证 |  | 1d? | 2017-11-13 A | 2017-11-13 A |  | 100% |  |  |  | 马俊玲 | 8h | 8h |
| 59 | 6.4 | **其他** |  | 19d? | 2017-11-13 A | 2017-12-03 |  | 58% | 7.89d? | 11d |  |  | 104h | 60.8h |
| 60 | 6.4.1 | 生成赔款计算过程*** |  | 6d? | 2017-11-27 A | 2017-12-03 |  | 10% | 5.4d? | 11d | start no earlier than 2017-11-27 | 杨航 | 48h | 4.8h |
| 61 | 6.4.2 | 暂存 |  | 6d? | 2017-11-27 A | 2017-12-03 A |  | 100% |  |  | start no earlier than 2017-11-27 | 闫磊 | 48h | 48h |
| 62 | 6.4.3 | 提交 |  | 1d? | 2017-11-13 A | 2017-11-14 A |  | 100% |  |  |  | 闫磊 | 8h | 8h |
| 63 | 6.4.4 | 审核意见【暂不处理】 | milestone | 0d? | 2017-11-27 A | 2017-11-27 A |  | 100% |  |  | finish no earlier than 2017-11-27 |  |  |  |
| 64 | 7 | **工作流管理** |  | 38d? | 2017-11-01 A | 2017-12-18 A |  | 100% |  |  |  | 杨航 | 912h | 912h |
| 65 | 7.1 | **工作流查询页面** |  | 33d? | 2017-11-08 A | 2017-12-18 A |  | 100% |  |  |  | 杨航 | 536h | 536h |
| 66 | 7.1.1 | 新建 |  | 3d? | 2017-11-08 A | 2017-11-10 A |  | 100% |  |  | finish no earlier than 2017-11-10 | 杨航 | 24h | 24h |
| 67 | 7.1.2 | 查询 |  | 3d? | 2017-11-09 A | 2017-11-13 A |  | 100% |  |  | start no earlier than 2017-11-06 | 杨航 | 24h | 24h |
| 68 | 7.1.3 | 模板号链接 |  | 2d? | 2017-11-14 A | 2017-11-15 A |  | 100% |  |  | start no earlier than 2017-11-06 | 杨航 | 16h | 16h |
| 69 | 7.1.4 | 分配 |  | 26d? | 2017-11-17 A | 2017-12-18 A |  | 100% |  |  | finish no earlier than 2017-12-18 | 杨航 | 208h | 208h |
| 70 | 7.2 | **工作流处理页面** |  | 3d? | 2017-11-01 A | 2017-11-03 A |  | 100% |  |  |  | 杨航 | 72h | 72h |
| 71 | 7.2.1 | 编辑 |  | 3d? | 2017-11-01 A | 2017-11-03 A |  | 100% |  |  | finish no earlier than 2017-11-03 | 杨航 | 24h | 24h |
| 72 | 7.2.2 | 保存 |  | 3d? | 2017-11-01 A | 2017-11-03 A |  | 100% |  |  | start no earlier than 2017-11-01 | 杨航 | 24h | 24h |
| 73 | 8 | **并案处理** |  | 17d? | 2017-11-13 A | 2017-11-30 |  | 55% | 7.73d? | 13d |  | 李洋 | 464h | 226.18h |
| 74 | 8.1 | **合并案件** |  | 2d? | 2017-11-23 A | 2017-11-26 A |  | 100% |  |  |  | 李洋 | 16h | 16h |
| 75 | 8.1.1 | 查询 | milestone | 0d? | 2017-11-23 A | 2017-11-23 A |  | 100% |  |  | finish no earlier than 2017-11-16 | 李洋 |  |  |
| 76 | 8.1.2 | 报案号关联链接 | milestone | 0d? | 2017-11-24 A | 2017-11-24 A | 75 | 100% |  |  |  | 李洋 |  |  |
| 77 | 8.1.3 | 新增合并 | milestone | 0d? | 2017-11-25 A | 2017-11-25 A | 76 | 100% |  |  |  | 李洋 |  |  |
| 78 | 8.1.4 | 删除合并 | milestone | 0d? | 2017-11-26 A | 2017-11-26 A |  | 100% |  |  |  | 李洋 |  |  |

| ID | WBS | Task | Type | Duration | Start | Finish | Predecessors | Complete | Remaining | Total slack | Free slack | Constraint | Resources | Work | Actual work |
| --- | --- | --- | --- | --- | --- | --- | --- | --- | --- | --- | --- | --- | --- | --- | --- |
| 79 | 8.2 | **查勘定损任务处理** |  | 11d? | 2017-11-13 A | 2017-11-23 A |  | 100% |  |  |  |  | 李洋 | 136h | 136h |
| 80 | 8.2.1 | 查询 |  | 2d? | 2017-11-20 A | 2017-11-21 A |  | 100% |  |  |  | finish no earlier than 2017-11-21 | 李洋 | 16h | 16h |
| 81 | 8.2.2 | 报案号链接 |  | 1d? | 2017-11-22 A | 2017-11-22 A | 80 | 100% |  |  |  |  | 李洋 | 8h | 8h |
| 82 | 8.2.3 | （处理、修改、查看）页面初始化 |  | 1d? | 2017-11-23 A | 2017-11-23 A | 81, 80 | 100% |  |  |  | finish no earlier than 2017-11-23 | 李洋 | 8h | 8h |
| 83 | 8.2.4 | 暂存 |  | 1d? | 2017-11-13 A | 2017-11-13 A |  | 100% |  |  |  |  | 李洋 | 8h | 8h |
| 84 | 8.2.5 | 提交 |  | 1d? | 2017-11-13 A | 2017-11-13 A |  | 100% |  |  |  |  | 李洋 | 8h | 8h |
| 85 | 8.3 | **立案任务处理** |  | 17d? | 2017-11-13 | 2017-11-30 |  |  |  | 13d |  |  | 李洋 | 176h |  |
| 86 | 8.3.1 | 查询 | milestone | 0d? | 2017-11-27 | 2017-11-27 |  |  |  | 17d |  | finish no earlier than 2017-11-27 | 李洋 |  |  |
| 87 | 8.3.2 | 报案号链接 |  | 1d? | 2017-11-13 | 2017-11-13 |  |  |  | 29d |  |  | 李洋 | 8h |  |
| 88 | 8.3.3 | （处理、修改、查看）页面初始化 |  | 2d? | 2017-11-28 | 2017-11-29 |  |  |  | 13d | 0d | finish no earlier than 2017-11-29 | 李洋 | 16h |  |
| 89 | 8.3.4 | 暂存 |  | 1d? | 2017-11-30 | 2017-11-30 | 88 |  |  | 13d |  | finish no earlier than 2017-11-30 | 李洋 | 8h |  |
| 90 | 8.3.5 | 提交 |  | 1d? | 2017-11-13 | 2017-11-13 |  |  |  | 29d |  |  | 李洋 | 8h |  |
| 91 | 9 | 自动立案 |  | 7d? | 2017-12-01 A | 2017-12-08 |  | 10% | 6.3d? | 6d |  | finish no earlier than 2017-12-08 | 杨航 | 56h | 5.6h |
| 92 | 10 | 单证上传 |  | 2d? | 2017-11-27 A | 2017-11-28 A |  | 100% |  |  |  | finish no earlier than 2017-11-28 | 杨航 | 16h | 16h |
