# 信达-理赔（新）

Schedule from MS Project, 2017-10-17 to 2017-12-15, A marks actual dates.
寰�杞�涓�鍥�

## Calendars

- 标准: Mon-Fri 08:00-12:00, 13:00-17:00; Sat-Sun off.

## Resources

| Resource |
| --- |
| 安齐崇 |
| 杨昆 |
| 杨航 |
| 马俊玲 |
| 李斌 |

## Schedule

| ID | Task | Duration | Start | Finish | Complete | Remaining | Total slack | Constraint | Resources | Work | Actual work |
| --- | --- | --- | --- | --- | --- | --- | --- | --- | --- | --- | --- |
| 1 | 预报案（插入、修改） | 2d | 2017-10-17 | 2017-10-18 |  |  | 42d | start no earlier than 2017-10-17 | 安齐崇 | 16h |  |
| 2 | 推送数据至客户管理系统做预报案 | 1d | 2017-10-19 | 2017-10-19 |  |  | 41d | start no earlier than 2017-10-19 | 安齐崇 | 8h |  |
| 3 | 联合报案保单查询 | 1d | 2017-10-20 | 2017-10-20 |  |  | 40d | start no earlier than 2017-10-20 | 安齐崇 | 8h |  |
| 4 | 查询保单信息（查询） | 1d | 2017-10-23 A | 2017-10-23 | 60% | 0.4d | 39d | start no earlier than 2017-10-23 | 安齐崇 | 8h | 4.8h |
| 5 | 出险时保单信息-投保人、被保险人信息（查询） | 1d | 2017-10-24 A | 2017-10-24 | 50% | 0.5d | 38d | start no earlier than 2017-10-24 | 安齐崇 | 8h | 4h |
| 6 | 出险时保单信息保单主信息、特别约定、保费等其他信息（查询） | 1d | 2017-10-25 | 2017-10-25 |  |  | 37d | start no earlier than 2017-10-25 | 安齐崇 | 8h |  |
| 7 | 出险信息（查询） | 1d | 2017-10-26 | 2017-10-26 |  |  | 36d | start no earlier than 2017-10-26 | 安齐崇 | 8h |  |
| 8 | 关联保单（查询） | 2d | 2017-10-27 | 2017-10-30 |  |  | 34d | start no earlier than 2017-10-27 | 安齐崇 | 16h |  |
| 9 | 历次批单(查询) | 1d | 2017-10-31 | 2017-10-31 |  |  | 33d | start no earlier than 2017-10-31 | 安齐崇 | 8h |  |
| 10 | 耳标号清单(查询) | 1d | 2017-11-01 | 2017-11-01 |  |  | 32d | start no earlier than 2017-11-01 | 安齐崇 | 8h |  |
| 11 | 历次赔案（查询） | 2d | 2017-11-02 | 2017-11-03 |  |  | 30d | start no earlier than 2017-11-02 | 安齐崇 | 16h |  |
| 12 | 理赔沟通（查询、插入） | 3d | 2017-11-06 | 2017-11-08 |  |  | 27d | start no earlier than 2017-11-06 | 安齐崇 | 24h |  |
| 13 | 报案登记页面初始化（查询） | 2d | 2017-11-09 A | 2017-11-10 | 60% | 0.8d | 25d | start no earlier than 2017-11-09 | 安齐崇 | 16h | 9.6h |
| 14 | 抄单打印（查询） | 1d | 2017-11-13 A | 2017-11-13 | 10% | 0.9d | 24d | start no earlier than 2017-11-13 | 安齐崇 | 8h | 0.8h |
| 15 | 报案登记提交（插入、修改） | 2d | 2017-11-14 | 2017-11-15 |  |  | 22d | start no earlier than 2017-11-14 | 杨昆 | 16h |  |
| 16 | 事故者信息保益信息 | 1d | 2017-11-16 | 2017-11-16 |  |  | 21d | start no earlier than 2017-11-16 | 安齐崇 | 8h |  |
| 17 | 报案登记提交（插入、修改） | 2d | 2017-11-17 | 2017-11-20 |  |  | 19d | start no earlier than 2017-11-17 | 安齐崇 | 16h |  |
| 18 | 案件信息推送驻点员App接口 | 2d | 2017-11-21 | 2017-11-22 |  |  | 17d | start no earlier than 2017-11-21 | 安齐崇 | 16h |  |
| 19 | 报案暂存查询 | 1d | 2017-11-23 | 2017-11-23 |  |  | 16d | start no earlier than 2017-11-23 | 安齐崇 | 8h |  |
| 20 | 报案暂存单提交、调度（修改） | 2d | 2017-11-24 | 2017-11-27 |  |  | 14d | start no earlier than 2017-11-24 | 安齐崇 | 16h |  |
| 21 | 报案登记暂存（插入、修改） | 2d | 2017-11-28 | 2017-11-29 |  |  | 12d | start no earlier than 2017-11-28 | 安齐崇 | 16h |  |
| 22 | 已报案任务查询（查询） | 1d | 2017-11-30 A | 2017-11-30 | 80% | 0.2d | 11d | start no earlier than 2017-11-30 | 安齐崇 | 8h | 6.4h |
| 23 | 具体案件详情（查询） | 1d | 2017-12-01 A | 2017-12-01 | 40% | 0.6d | 10d | start no earlier than 2017-12-01 | 安齐崇 | 8h | 3.2h |
| 24 | 报案任务查询（查询） | 3d | 2017-11-29 | 2017-12-01 |  |  | 10d | start no earlier than 2017-11-29 | 安齐崇 | 24h |  |
| 25 | 第三方支付信息查询（查询） | 2d | 2017-12-04 | 2017-12-05 |  |  | 8d | start no earlier than 2017-12-04 | 安齐崇 | 16h |  |
| 26 | 依据支付号提供支付信息详情查询 | 1d | 2017-12-06 | 2017-12-06 |  |  | 7d | start no earlier than 2017-12-06 | 安齐崇 | 8h |  |
| 27 | 待处理调度任务（查询） | 1d | 2017-10-23 | 2017-10-23 |  |  | 39d | start no earlier than 2017-10-23 | 杨昆 | 8h |  |
| 28 | 待处理调度任务操作（查询） | 1d | 2017-10-24 | 2017-10-24 |  |  | 38d | start no earlier than 2017-10-24 | 杨昆 | 8h |  |
| 29 | 正在处理调度任务（查询） | 1d | 2017-10-25 | 2017-10-25 |  |  | 37d | start no earlier than 2017-10-25 | 杨昆 | 8h |  |
| 30 | 系统内调度（插入、修改） | 2d | 2017-10-26 | 2017-10-27 |  |  | 35d | start no earlier than 2017-10-26 | 杨昆 | 16h |  |
| 31 | 正在处理调度任务（查询） | 1d | 2017-10-30 | 2017-10-30 |  |  | 34d | start no earlier than 2017-10-30 | 杨昆 | 8h |  |
| 32 | 调度（插入） | 2d | 2017-10-31 | 2017-11-01 |  |  | 32d | start no earlier than 2017-10-31 | 杨昆 | 16h |  |
| 33 | 调度改派查询 | 1d | 2017-11-02 | 2017-11-02 |  |  | 31d | start no earlier than 2017-11-02 | 杨昆 | 8h |  |
| 34 | 调度改派初始化页面 | 2d | 2017-11-03 | 2017-11-06 |  |  | 29d | start no earlier than 2017-11-03 | 杨昆 | 16h |  |
| 35 | 调度任务查询 | 1d | 2017-11-07 | 2017-11-07 |  |  | 28d | start no earlier than 2017-11-07 | 杨昆 | 8h |  |
| 36 | 调度任务详情查询 | 2d | 2017-11-08 | 2017-11-09 |  |  | 26d | start no earlier than 2017-11-08 | 杨昆 | 16h |  |
| 37 | 未处理查勘定损查询 | 1d | 2017-11-10 | 2017-11-10 |  |  | 25d | start no earlier than 2017-11-10 | 杨昆 | 8h |  |
| 38 | 未处理查勘定损任务操作(查询) | 1d | 2017-11-13 | 2017-11-13 |  |  | 24d | start no earlier than 2017-11-13 | 杨昆 | 8h |  |
| 39 | 系统外调度（插入、修改） | 2d | 2017-11-14 | 2017-11-15 |  |  | 22d | start no earlier than 2017-11-14 | 杨昆 | 16h |  |
| 40 | 电子单证（查询） | 1d | 2017-11-16 | 2017-11-16 |  |  | 21d | start no earlier than 2017-11-16 | 杨昆 | 8h |  |
| 41 | 索赔须知（查询） | 1d | 2017-11-17 | 2017-11-17 |  |  | 20d | start no earlier than 2017-11-17 | 杨昆 | 8h |  |
| 42 | 索赔清单（查询） | 1d | 2017-11-20 | 2017-11-20 |  |  | 19d | start no earlier than 2017-11-20 | 杨昆 | 8h |  |
| 43 | 耳标号校验（查询） | 2d | 2017-11-21 | 2017-11-22 |  |  | 17d | start no earlier than 2017-11-21 | 杨昆 | 16h |  |
| 44 | 未处理查勘定损任务提交(修改) | 2d | 2017-11-23 | 2017-11-24 |  |  | 15d | start no earlier than 2017-11-23 | 杨昆 | 16h |  |
| 45 | 打印报案记录待抄单（查询） | 2d | 2017-11-27 | 2017-11-28 |  |  | 13d | start no earlier than 2017-11-27 | 杨昆 | 16h |  |
| 46 | 系统内改派、系统外改派（修改） | 2d | 2017-11-29 | 2017-11-30 |  |  | 11d | start no earlier than 2017-11-29 | 杨昆 | 16h |  |
| 47 | 未处理查勘任务转交（修改） | 2d | 2017-12-01 | 2017-12-04 |  |  | 9d | start no earlier than 2017-12-01 | 杨昆 | 16h |  |
| 48 | 未处理查勘任务提交（插入、修改） | 2d | 2017-12-05 | 2017-12-06 |  |  | 7d | start no earlier than 2017-12-05 | 杨昆 | 16h |  |
| 49 | 查勘定损任务正在处理查勘任务（查询） | 2d | 2017-12-07 | 2017-12-08 |  |  | 5d | start no earlier than 2017-12-07 | 杨昆 | 16h |  |
| 50 | 正在处理查勘定损信息页面（查询） | 1d | 2017-12-11 | 2017-12-11 |  |  | 4d | start no earlier than 2017-12-11 | 杨昆 | 8h |  |
| 51 | 查勘定损任务正在处理查勘任务-保单抄件详情（查询） | 1d | 2017-12-12 | 2017-12-12 |  |  | 3d | start no earlier than 2017-12-12 | 杨昆 | 8h |  |
| 52 | 查勘定损任务正在处理查勘任务提交（插入、修改） | 2d | 2017-12-13 | 2017-12-14 |  |  | 1d | start no earlier than 2017-12-13 | 杨昆 | 16h |  |
| 53 | 查勘定损任务查勘定损任务查询（查询） | 1d | 2017-12-15 | 2017-12-15 |  |  | 0d | start no earlier than 2017-12-15 | 杨昆 | 8h |  |
| 54 | 查勘定损任务查勘定损任务详情查看页面（查询） | 1d | 2017-12-07 | 2017-12-07 |  |  | 6d | start no earlier than 2017-12-07 | 安齐崇 | 8h |  |
| 55 | 查勘定损任务>查勘定损任务详情查看页面-单证上传（插入、修改） | 2d | 2017-12-08 | 2017-12-11 |  |  | 4d | start no earlier than 2017-12-08 | 安齐崇 | 16h |  |
| 56 | 未处理查勘任务暂存、放弃任务（插入、修改） | 2d | 2017-12-12 | 2017-12-13 |  |  | 2d | start no earlier than 2017-12-12 | 安齐崇 | 16h |  |
| 57 | 报案撤销任务处理未处理查勘任务（查询） | 1d | 2017-12-14 | 2017-12-14 |  |  | 1d | start no earlier than 2017-12-14 | 安齐崇 | 8h |  |
| 58 | 报案撤销任务处理报案撤销处理提交（插入、修改） | 1d | 2017-12-15 | 2017-12-15 |  |  | 0d | start no earlier than 2017-12-15 | 安齐崇 | 8h |  |
| 59 | 未处理立案任务查询（查询） | 2d | 2017-10-23 | 2017-10-24 |  |  | 38d | start no earlier than 2017-10-23 | 杨航 | 16h |  |
| 60 | 未处理立案任务操作页面（查询） | 1d | 2017-10-25 | 2017-10-25 |  |  | 37d | start no earlier than 2017-10-25 | 杨航 | 8h |  |
| 61 | 未处理立案任务查询提交（插入、修改） | 2d | 2017-10-26 | 2017-10-27 |  |  | 35d | start no earlier than 2017-10-26 | 杨航 | 16h |  |
| 62 | 自动立案处理 | 3d | 2017-10-30 | 2017-11-01 |  |  | 32d | start no earlier than 2017-10-30 | 杨航 | 24h |  |
| 63 | 正在处理立案任务（查询） | 1d | 2017-11-02 | 2017-11-02 |  |  | 31d | start no earlier than 2017-11-02 | 杨航 | 8h |  |
| 64 | 正在处理立案任务操作页面（查询） | 1d | 2017-11-03 | 2017-11-03 |  |  | 30d | start no earlier than 2017-11-03 | 杨航 | 8h |  |
| 65 | 未处理查勘任务暂存、放弃任务（插入、修改） | 2d | 2017-11-06 | 2017-11-07 |  |  | 28d | start no earlier than 2017-11-06 | 杨航 | 16h |  |
| 66 | 正在处理立案任务提交（插入、修改） | 2d | 2017-11-08 | 2017-11-09 |  |  | 26d | start no earlier than 2017-11-08 | 杨航 | 16h |  |
| 67 | 立案任务处理-申请注销/拒赔（查询） | 1d | 2017-11-10 | 2017-11-10 |  |  | 25d | start no earlier than 2017-11-10 | 杨航 | 8h |  |
| 68 | 立案任务处理-申请注销/拒赔操作页面（查询） | 1d | 2017-11-13 | 2017-11-13 |  |  | 24d | start no earlier than 2017-11-13 | 杨航 | 8h |  |
| 69 | 立案任务处理-申请注销/拒赔提交（插入、修改） | 2d | 2017-11-14 | 2017-11-15 |  |  | 22d | start no earlier than 2017-11-14 | 杨航 | 16h |  |
| 70 | 立案任务处理-立案任务查询（查询） | 1d | 2017-11-16 | 2017-11-16 |  |  | 21d | start no earlier than 2017-11-16 | 杨航 | 8h |  |

Notes:
- 4: 预计本周完成
- 5: 需要承保提供服务 --杨航
- 13: 1
- 14: 熟悉业务规则
- 15: 杨昆
- 22: 目前处于测试状态
- 23: 马俊玲20171023

| ID | Task | Duration | Start | Finish | Complete | Remaining | Total slack | Constraint | Resources | Work | Actual work |
| --- | --- | --- | --- | --- | --- | --- | --- | --- | --- | --- | --- |
| 71 | 立案任务处理-立案任务详情查询页面（查询） | 1d | 2017-11-17 | 2017-11-17 |  |  | 20d | start no earlier than 2017-11-17 | 杨航 | 8h |  |
| 72 | 未处理特殊赔案任务（查询） | 1d | 2017-11-20 | 2017-11-20 |  |  | 19d | start no earlier than 2017-11-20 | 杨航 | 8h |  |
| 73 | 未处理特殊赔案操作页面（查询） | 1d | 2017-11-21 | 2017-11-21 |  |  | 18d | start no earlier than 2017-11-21 | 杨航 | 8h |  |
| 74 | 立案任务-放弃任务处理（插入、修改） | 2d | 2017-11-22 | 2017-11-23 |  |  | 16d | start no earlier than 2017-11-22 | 杨航 | 16h |  |
| 75 | 处理特殊赔案-关联预赔清单（查询、修改） | 2d | 2017-11-24 | 2017-11-27 |  |  | 14d | start no earlier than 2017-11-24 | 杨航 | 16h |  |
| 76 | 处理特殊赔案-下载预赔模板（查询） | 1d | 2017-11-27 | 2017-11-27 |  |  | 14d | start no earlier than 2017-11-27 | 杨航 | 8h |  |
| 77 | 处理特殊赔案-讨论留言（修改） | 2d | 2017-11-28 | 2017-11-29 |  |  | 12d | start no earlier than 2017-11-28 | 杨航 | 16h |  |
| 78 | 处理特殊赔案-查看留言（查询） | 2d | 2017-11-30 | 2017-12-01 |  |  | 10d | start no earlier than 2017-11-30 | 杨航 | 16h |  |
| 79 | 处理特殊赔案-预付赔款登记（修改） | 3d | 2017-12-04 | 2017-12-06 |  |  | 7d | start no earlier than 2017-12-04 | 杨航 | 24h |  |
| 80 | 处理特殊赔案查询页面-导入预赔清单（插入、修改） | 3d | 2017-12-07 | 2017-12-11 |  |  | 4d | start no earlier than 2017-12-07 | 杨航 | 24h |  |
| 81 | 处理特殊赔案查询页面-提交（插入、修改） | 2d | 2017-12-12 | 2017-12-13 |  |  | 2d | start no earlier than 2017-12-12 | 杨航 | 16h |  |
| 82 | 暂存特殊赔案任务查询（查询） | 2d | 2017-12-14 | 2017-12-15 |  |  | 0d | start no earlier than 2017-12-14 | 杨航 | 16h |  |
| 83 | 批量申请注销/拒赔（插入、修改） | 2d | 2017-10-23 | 2017-10-24 |  |  | 38d | start no earlier than 2017-10-23 | 马俊玲 | 16h |  |
| 84 | 暂存处理特殊赔案操作页面（查询） | 1d | 2017-10-25 | 2017-10-25 |  |  | 37d | start no earlier than 2017-10-25 | 马俊玲 | 8h |  |
| 85 | 暂存处理特殊赔案操作页面-提交（插入、修改） | 2d | 2017-10-26 | 2017-10-27 |  |  | 35d | start no earlier than 2017-10-26 | 马俊玲 | 16h |  |
| 86 | 特殊赔案任务处理-特殊赔案查询（查询） | 1d | 2017-10-30 | 2017-10-30 |  |  | 34d | start no earlier than 2017-10-30 | 马俊玲 | 8h |  |
| 87 | 特殊赔案任务处理-特殊赔案查询详情（查询） | 2d | 2017-10-31 | 2017-11-01 |  |  | 32d | start no earlier than 2017-10-31 | 马俊玲 | 16h |  |
| 88 | 特殊赔案任务处理-核赔退回的特殊赔案（查询） | 1d | 2017-11-02 | 2017-11-02 |  |  | 31d | start no earlier than 2017-11-02 | 马俊玲 | 8h |  |
| 89 | 特殊赔案任务处理-核赔退回特殊赔案详情（查询） | 1d | 2017-11-03 | 2017-11-03 |  |  | 30d | start no earlier than 2017-11-03 | 马俊玲 | 8h |  |
| 90 | 特殊赔案任务处理-核赔退回特殊赔案详情页面-提交（插入、修改） | 2d | 2017-11-06 | 2017-11-07 |  |  | 28d | start no earlier than 2017-11-06 | 马俊玲 | 16h |  |
| 91 | 未处理理算任务（查询） | 1d | 2017-11-08 | 2017-11-08 |  |  | 27d | start no earlier than 2017-11-08 | 马俊玲 | 8h |  |
| 92 | 暂存处理特殊赔案操作页面-暂存、放弃任务（插入、修改） | 2d | 2017-11-09 | 2017-11-10 |  |  | 25d | start no earlier than 2017-11-09 | 马俊玲 | 16h |  |
| 93 | 未处理理算任务详情（查询） | 1d | 2017-11-13 | 2017-11-13 |  |  | 24d | start no earlier than 2017-11-13 | 马俊玲 | 8h |  |
| 94 | 未处理理算任务操作-生成赔付标的信息（插入） | 2d | 2017-11-14 | 2017-11-15 |  |  | 22d | start no earlier than 2017-11-14 | 马俊玲 | 16h |  |
| 95 | 未处理理算任务操作-膳制赔款清单（查询） | 1d | 2017-11-16 | 2017-11-16 |  |  | 21d | start no earlier than 2017-11-16 | 马俊玲 | 8h |  |
| 96 | 未处理理算任务操作-下载模板（查询） | 1d | 2017-11-17 | 2017-11-17 |  |  | 20d | start no earlier than 2017-11-17 | 马俊玲 | 8h |  |
| 97 | 未处理理算任务操作-导入银行支付信息（插入） | 1d | 2017-11-20 | 2017-11-20 |  |  | 19d | start no earlier than 2017-11-20 | 马俊玲 | 8h |  |
| 98 | 未处理理算任务操作-关联银行支付信息（修改） | 2d | 2017-11-21 | 2017-11-22 |  |  | 17d | start no earlier than 2017-11-21 | 马俊玲 | 16h |  |
| 99 | 正在处理理算任务（查询） | 1d | 2017-11-23 | 2017-11-23 |  |  | 16d | start no earlier than 2017-11-23 | 马俊玲 | 8h |  |
| 100 | 正在处理理算任务（查询） | 1d | 2017-11-24 | 2017-11-24 |  |  | 15d | start no earlier than 2017-11-24 | 马俊玲 | 8h |  |
| 101 | 处理特殊赔案-暂存（插入、修改） | 2d | 2017-11-27 | 2017-11-28 |  |  | 13d | start no earlier than 2017-11-27 | 马俊玲 | 16h |  |
| 102 | 正在处理理算任务操作-提交（插入、修改） | 2d | 2017-11-29 | 2017-11-30 |  |  | 11d | start no earlier than 2017-11-29 | 马俊玲 | 16h |  |
| 103 | 理算任务处理-申请注销（查询） | 1d | 2017-12-01 | 2017-12-01 |  |  | 10d | start no earlier than 2017-12-01 | 马俊玲 | 8h |  |
| 104 | 理算任务处理-申请拒赔（查询） | 1d | 2017-12-04 | 2017-12-04 |  |  | 9d | start no earlier than 2017-12-04 | 马俊玲 | 8h |  |
| 105 | 理算任务处理-申请注销/拒赔查询 | 1d | 2017-12-05 | 2017-12-05 |  |  | 8d | start no earlier than 2017-12-05 | 马俊玲 | 8h |  |
| 106 | 理算任务处理-申请注销/拒赔-提交（插入、修改） | 1d | 2017-12-06 | 2017-12-06 |  |  | 7d | start no earlier than 2017-12-06 | 马俊玲 | 8h |  |
| 107 | 理算任务处理-理算查询（查询） | 1d | 2017-12-07 | 2017-12-07 |  |  | 6d | start no earlier than 2017-12-07 | 马俊玲 | 8h |  |
| 108 | 理算任务处理-理算查询结果（删除） | 1d | 2017-12-08 | 2017-12-08 |  |  | 5d | start no earlier than 2017-12-08 | 马俊玲 | 8h |  |
| 109 | 理算任务处理-核赔退回理算任务（查询） | 1d | 2017-12-11 | 2017-12-11 |  |  | 4d | start no earlier than 2017-12-11 | 马俊玲 | 8h |  |
| 110 | 大牲畜耳标号数据保存 | 1d | 2017-12-12 | 2017-12-12 |  |  | 3d | start no earlier than 2017-12-12 | 马俊玲 | 8h |  |
| 111 | 理算任务处理-核赔退回理算任务详细信息（查询） | 1d | 2017-12-13 | 2017-12-13 |  |  | 2d | start no earlier than 2017-12-13 | 马俊玲 | 8h |  |
| 112 | 创建模板(插入) | 1d | 2017-12-14 | 2017-12-14 |  |  | 1d | start no earlier than 2017-12-14 | 马俊玲 | 8h |  |
| 113 | 理算任务处理-核赔退回理算任务详细信息页面-提交（修改） | 1d | 2017-12-15 | 2017-12-15 |  |  | 0d | start no earlier than 2017-12-15 | 马俊玲 | 8h |  |
| 114 | 工作流列表页面 | 2d | 2017-10-23 A | 2017-10-24 | 40% | 1.2d | 38d | start no earlier than 2017-10-23 | 李斌 | 16h | 6.4h |
| 115 | 模板维护页面(修改) | 2d | 2017-10-25 A | 2017-10-26 | 10% | 1.8d | 36d | start no earlier than 2017-10-25 | 李斌 | 16h | 1.6h |
| 116 | 模板批量分配 | 2d | 2017-10-27 | 2017-10-30 |  |  | 34d | start no earlier than 2017-10-27 | 李斌 | 16h |  |
| 117 | 工作流模板路径列表 | 2d | 2017-10-31 | 2017-11-01 |  |  | 32d | start no earlier than 2017-10-31 | 李斌 | 16h |  |
| 118 | 工作流模板路径条件 | 1d | 2017-11-02 | 2017-11-02 |  |  | 31d | start no earlier than 2017-11-02 | 李斌 | 8h |  |
| 119 | 并案处理-案件合并(修改) | 2d | 2017-11-03 | 2017-11-06 |  |  | 29d | start no earlier than 2017-11-03 | 李斌 | 16h |  |
| 120 | 并案处理-案件合并修改 | 2d | 2017-11-07 | 2017-11-08 |  |  | 27d | start no earlier than 2017-11-07 | 李斌 | 16h |  |
| 121 | 并案处理-正在处理查勘定损任务(修改、插入) | 2d | 2017-11-09 | 2017-11-10 |  |  | 25d | start no earlier than 2017-11-09 | 李斌 | 16h |  |
| 122 | 并案处理-正在处理立案任务(修改、插入) | 2d | 2017-11-13 | 2017-11-14 |  |  | 23d | start no earlier than 2017-11-13 | 李斌 | 16h |  |

Notes:
- 114: 杨航
- 115: 10% 完成初始化方法
