Schedule from MS Project, 2017-10-23 to 2017-11-30, A marks actual dates.
Bbs.Machenike.Com

## Calendars

- 标准: Mon-Fri 08:00-12:00, 13:00-17:00; Sat-Sun off.

## Resources

| Resource |
| --- |
| 董坤 |
| A |
| 祁小龙 |
| B |
| A/B |
| 祁小龙/董坤/A/B |
| 王志文 |
| 李文刚 |
| 孙朋飞 |
| ALL |

## Schedule

| ID | WBS | Task | Duration | Start | Finish | Predecessors | Complete | Remaining | Total slack | Free slack | Constraint | Resources | Work | Actual work |
| --- | --- | --- | --- | --- | --- | --- | --- | --- | --- | --- | --- | --- | --- | --- |
| 1 | 1 | **理赔系统** | 18d | 2017-10-23 A | 2017-11-15 |  | 8% | 16.5d | 11d |  |  |  | 568h | 48h |
| 2 | 1.1 | **理赔管理** | 18d | 2017-10-23 A | 2017-11-15 |  | 8% | 16.5d | 11d |  |  |  | 568h | 48h |
| 3 | 1.1.1 | **1.结案任务处理** | 7d | 2017-10-23 A | 2017-10-31 |  | 26% | 5.2d | 7d |  |  |  | 56h | 14.4h |
| 4 | 1.1.1.1 | **未处理结案任务** | 5d | 2017-10-23 A | 2017-10-27 |  | 36% | 3.2d | 7d |  |  |  | 40h | 14.4h |
| 5 | 1.1.1.1.1 | 手工结案登记查询及保存 | 3d | 2017-10-23 A | 2017-10-25 |  | 60% | 1.2d | 7d | 0d | start no earlier than 2017-10-23 | 董坤 | 24h | 14.4h |
| 6 | 1.1.1.1.2 | 理赔沟通功能开发 | 1d | 2017-10-26 | 2017-10-26 | 5 |  |  | 7d | 0d |  | 董坤 | 8h |  |
| 7 | 1.1.1.1.3 | 单元测试 | 1d | 2017-10-27 | 2017-10-27 | 6 |  |  | 7d | 0d |  | 董坤 | 8h |  |
| 8 | 1.1.1.2 | **结案任务查询** | 2d | 2017-10-30 | 2017-10-31 |  |  |  | 7d |  |  |  | 16h |  |
| 9 | 1.1.1.2.1 | 结案任务查询与展示 | 1d | 2017-10-30 | 2017-10-30 | 7 |  |  | 7d | 0d | start no earlier than 2017-10-30 | 董坤 | 8h |  |
| 10 | 1.1.1.2.2 | 单元测试 | 1d | 2017-10-31 | 2017-10-31 | 9 |  |  | 7d | 0d |  | 董坤 | 8h |  |
| 11 | 1.1.2 | **2.重开赔案** | 7d | 2017-10-23 A | 2017-10-31 |  | 29% | 5d | 10d |  |  |  | 56h | 16h |
| 12 | 1.1.2.1 | 重开赔案涉及的数据表结构整理 | 1d | 2017-10-23 A | 2017-10-23 A |  | 100% |  |  |  | finish no earlier than 2017-10-23 | 王志文 | 8h | 8h |
| 13 | 1.1.2.2 | 查询方法开发 | 2d | 2017-10-24 A | 2017-10-25 | 12 | 50% | 1d | 10d | 0d | start no earlier than 2017-10-23 | 王志文 | 16h | 8h |
| 14 | 1.1.2.3 | 重开赔案提交 | 3d | 2017-10-26 | 2017-10-30 | 13 |  |  | 10d | 0d |  | 王志文 | 24h |  |
| 15 | 1.1.2.4 | 单元测试 | 1d | 2017-10-31 | 2017-10-31 | 14 |  |  | 10d | 0d |  | 王志文 | 8h |  |
| 16 | 1.1.3 | **3.班表管理** | 14d | 2017-10-23 A | 2017-11-09 |  | 6% | 13.12d | 15d |  |  |  | 144h | 9.6h |
| 17 | 1.1.3.1 | 班表涉及数据表整理 | 1d | 2017-10-23 | 2017-10-23 |  |  |  | 1.2d | 0d | finish no earlier than 2017-10-23 |  |  |  |
| 18 | 1.1.3.2 | 新增班表 | 6d | 2017-10-24 A | 2017-10-31 | 17 | 20% | 4.8d | 15d | 0d | start no earlier than 2017-10-23 | 李文刚 | 48h | 9.6h |
| 19 | 1.1.3.3 | 修改班表 | 3d | 2017-11-01 | 2017-11-03 | 18 |  |  | 15d | 0d |  | 李文刚 | 24h |  |
| 20 | 1.1.3.4 | 班表查询 | 3d | 2017-11-06 | 2017-11-08 | 19 |  |  | 15d | 0d |  | 李文刚 | 24h |  |
| 21 | 1.1.3.5 | 班表新增和修改及查询单元测试 | 1d | 2017-11-09 | 2017-11-09 | 20 |  |  | 15d |  |  | 李文刚 | 8h |  |
| 22 | 1.1.3.6 | 区域设置 | 4d | 2017-10-25 | 2017-10-30 |  |  |  | 9d | 0d | start no earlier than 2017-10-25 | 孙朋飞 | 32h |  |
| 23 | 1.1.3.7 | 区域设置单元测试 | 1d | 2017-10-31 | 2017-10-31 | 22 |  |  | 9d | 0d |  | 孙朋飞 | 8h |  |
| 24 | 1.1.4 | **4.流程查询** | 4d | 2017-11-01 | 2017-11-06 |  |  |  | 9d |  |  |  | 32h |  |
| 25 | 1.1.4.1 | 流程查询 | 3d | 2017-11-01 | 2017-11-03 | 23 |  |  | 9d | 0d |  | 孙朋飞 | 24h |  |
| 26 | 1.1.4.2 | 单元测试 | 1d | 2017-11-06 | 2017-11-06 | 25 |  |  | 9d | 0d |  | 孙朋飞 | 8h |  |

| ID | WBS | Task | Duration | Start | Finish | Predecessors | Complete | Remaining | Total slack | Free slack | Constraint | Resources | Work | Actual work |
| --- | --- | --- | --- | --- | --- | --- | --- | --- | --- | --- | --- | --- | --- | --- |
| 27 | 1.1.5 | **5.理赔打印** | 11d | 2017-11-01 | 2017-11-15 |  |  |  | 7d |  |  |  | 136h |  |
| 28 | 1.1.5.1 | 农险赔案卷宗封面查询及打印数据查询 | 1d | 2017-11-01 | 2017-11-01 | 15 |  |  | 10d | 0d | finish no earlier than 2017-10-25 | 王志文 | 8h |  |
| 29 | 1.1.5.2 | 农房保险赔案卷宗封面查询及打印数据查询 | 1d | 2017-11-02 | 2017-11-02 | 28 |  |  | 10d | 0d | finish no earlier than 2017-10-25 | 王志文 | 8h |  |
| 30 | 1.1.5.3 | 现场查勘报告打印查询及打印数据查询 | 1d | 2017-11-03 | 2017-11-03 | 29 |  |  | 10d | 0d | start no earlier than 2017-10-30 | 王志文 | 8h |  |
| 31 | 1.1.5.4 | 赔款理算书打印查询及打印数据查询 | 2d | 2017-11-06 | 2017-11-07 | 30 |  |  | 10d | 0d |  | 王志文 | 16h |  |
| 32 | 1.1.5.5 | 结案报告查询及打印数据查询 | 2d | 2017-11-08 | 2017-11-09 | 31 |  |  | 10d | 0d |  | 王志文 | 16h |  |
| 33 | 1.1.5.6 | 赔款收据查询及打印数据查询 | 2d | 2017-11-10 | 2017-11-13 | 32 |  |  | 10d | 0d |  | 王志文 | 16h |  |
| 34 | 1.1.5.7 | 单元测试 | 2d | 2017-11-14 | 2017-11-15 | 33 |  |  | 10d | 0d |  | 王志文 | 16h |  |
| 35 | 1.1.5.8 | 注销/拒赔通知书查询及打印数据查询 | 1d | 2017-11-01 | 2017-11-01 | 10 |  |  | 7d | 0d |  | 董坤 | 8h |  |
| 36 | 1.1.5.9 | 保单抄件查询及打印数据查询 | 2d | 2017-11-02 | 2017-11-03 | 35 |  |  | 7d | 0d |  | 董坤 | 16h |  |
| 37 | 1.1.5.10 | 自动生成电子单证及发送影像资料 | 2d | 2017-11-06 | 2017-11-07 | 36 |  |  | 7d | 0d |  | 董坤 | 16h |  |
| 38 | 1.1.5.11 | 单元测试 | 1d | 2017-11-08 | 2017-11-08 | 37 |  |  | 7d | 0d |  | 董坤 | 8h |  |
| 39 | 1.1.6 | **6.支付录入** | 16d | 2017-10-24 A | 2017-11-14 |  | 6% | 15d | 6d |  |  |  | 128h | 8h |
| 40 | 1.1.6.1 | 支付管理查询 | 2d | 2017-10-24 A | 2017-10-25 |  | 50% | 1d | 6d | 0d | start no earlier than 2017-10-24 | 祁小龙 | 16h | 8h |
| 41 | 1.1.6.2 | 整单支付保存 | 2d | 2017-10-26 | 2017-10-27 | 40 |  |  | 6d | 0d |  | 祁小龙 | 16h |  |
| 42 | 1.1.6.3 | 清单支付模板查询及下载 | 2d | 2017-10-30 | 2017-10-31 | 41 |  |  | 6d | 0d |  | 祁小龙 | 16h |  |
| 43 | 1.1.6.4 | 清单支付清单导入保存 | 2d | 2017-11-01 | 2017-11-02 | 42 |  |  | 6d | 0d |  | 祁小龙 | 16h |  |
| 44 | 1.1.6.5 | 整单支付修改 | 1d | 2017-11-03 | 2017-11-03 | 43 |  |  | 6d | 0d |  | 祁小龙 | 8h |  |
| 45 | 1.1.6.6 | 清单支付修改 | 1d | 2017-11-06 | 2017-11-06 | 44 |  |  | 6d | 0d |  | 祁小龙 | 8h |  |
| 46 | 1.1.6.7 | 电子回单下载 | 2d | 2017-11-07 | 2017-11-08 | 45 |  |  | 6d | 0d |  | 祁小龙 | 16h |  |
| 47 | 1.1.6.8 | 支付信息查询 | 1d | 2017-11-09 | 2017-11-09 | 46 |  |  | 6d | 0d |  | 祁小龙 | 8h |  |
| 48 | 1.1.6.9 | 支付情况统计表 | 2d | 2017-11-10 | 2017-11-13 | 47 |  |  | 6d | 0d |  | 祁小龙 | 16h |  |
| 49 | 1.1.6.10 | 单元测试 | 1d | 2017-11-14 | 2017-11-14 | 48 |  |  | 6d | 0d |  | 祁小龙 | 8h |  |
| 50 | 1.1.7 | **7.运维管理** | 2d | 2017-11-07 | 2017-11-08 |  |  |  | 9d |  |  |  | 16h |  |
| 51 | 1.1.7.1 | 核赔工作流补传 | 2d | 2017-11-07 | 2017-11-08 | 26 |  |  | 9d | 0d |  | 孙朋飞 | 16h |  |

| ID | WBS | Task | Duration | Start | Finish | Predecessors | Total slack | Free slack | Constraint | Resources | Work |
| --- | --- | --- | --- | --- | --- | --- | --- | --- | --- | --- | --- |
| 52 | 2 | **交易清单系统** | 10d | 2017-11-09 | 2017-11-22 |  | 6d |  |  |  | 120h |
| 53 | 2.1 | 提供损失清单同步接口 | 6d | 2017-11-15 | 2017-11-22 | 49 | 6d |  |  | 祁小龙 | 48h |
| 54 | 2.2 | 提供理算损失清单回写信息接口 | 6d | 2017-11-09 | 2017-11-16 | 38 | 7d | 0d |  | 董坤 | 48h |
| 55 | 2.3 | 提供险别损失清单同步接口 | 3d | 2017-11-09 | 2017-11-13 | 51 | 9d | 0d |  | 孙朋飞 | 24h |
| 56 | 3 | **个人中心** | 6d | 2017-11-14 | 2017-11-21 |  | 7d |  |  |  | 64h |
| 57 | 3.1 | **1.我的任务** | 6d | 2017-11-14 | 2017-11-21 |  | 7d |  |  |  | 64h |
| 58 | 3.1.1 | 公共查询 | 2d | 2017-11-17 | 2017-11-20 | 54 | 7d | 0d | start no earlier than 2017-11-17 | 董坤 | 16h |
| 59 | 3.1.2 | 调度任务 | 1d | 2017-11-21 | 2017-11-21 | 58 | 7d |  |  | 董坤 | 8h |
| 60 | 3.1.3 | 查勘定损任务 | 1d | 2017-11-16 | 2017-11-16 | 34 | 10d |  |  | 王志文 | 8h |
| 61 | 3.1.4 | 立案任务 | 1d | 2017-11-14 | 2017-11-14 | 55 | 9d | 0d |  | 孙朋飞 | 8h |
| 62 | 3.1.5 | 理算任务 | 1d | 2017-11-15 | 2017-11-15 | 61 | 9d | 0d |  | 孙朋飞 | 8h |
| 63 | 3.1.6 | 结案任务 | 1d | 2017-11-16 | 2017-11-16 | 62 | 9d | 0d |  | 孙朋飞 | 8h |
| 64 | 3.1.7 | 单元测试 | 1d | 2017-11-17 | 2017-11-17 | 63 | 9d |  |  | ALL | 8h |
| 65 | 4 | 整体测试 | 3d | 2017-11-23 | 2017-11-27 |  | 0d |  | start no earlier than 2017-11-23 | 董坤; 李文刚; 祁小龙; 孙朋飞; 王志文 | 120h |
| 66 | 5 | 联调测试 | 3d | 2017-11-28 | 2017-11-30 | 65 | 0d |  |  | 董坤; 李文刚; 祁小龙; 孙朋飞; 王志文 | 120h |
