Schedule from MS Project, 2017-10-23 to 2017-11-30, A marks actual dates.
Bbs.Machenike.Com

## Calendars

- 标准: Mon-Fri 08:00-12:00, 13:00-17:00; Sat-Sun off. Exceptions (off unless hours are given): 2017-10-28 08:00-12:00, 13:00-17:00 (加班).

## Resources

| Resource |
| --- |
| 董坤 |
| A |
| 祁小龙 |
| B |
| A/B |
| 祁小龙/董坤/A/B |
| 王志文 |
| 李文刚 |
| 孙朋飞 |
| ALL |

## Schedule

| ID | WBS | Task | Duration | Start | Finish | Predecessors | Complete | Remaining | Total slack | Constraint | Resources | Work | Actual work |
| --- | --- | --- | --- | --- | --- | --- | --- | --- | --- | --- | --- | --- | --- |
| 1 | 1 | **理赔二组开发** | 30d? | 2017-10-23 A | 2017-11-30 |  | 20% | 24.08d? | 0d |  |  | 1232h | 243.2h |
| 2 | 1.1 | **1.结案任务处理** | 10d | 2017-10-23 A | 2017-11-02 |  | 45% | 5.54d | 0d |  |  | 104h | 46.4h |
| 3 | 1.1.1 | 需求理解 | 1d | 2017-10-23 A | 2017-10-23 A |  | 100% |  |  |  | 董坤 | 8h | 8h |
| 4 | 1.1.2 | **系统设计** | 2d | 2017-10-23 A | 2017-10-24 A |  | 100% |  |  |  |  | 32h | 32h |
| 5 | 1.1.2.1 | **接口设计** | 2d | 2017-10-23 A | 2017-10-24 A |  | 100% |  |  |  |  | 32h | 32h |
| 6 | 1.1.2.1.1 | 涉及接口清单整理 | 1d | 2017-10-23 A | 2017-10-23 A |  | 100% |  |  |  | 董坤 | 8h | 8h |
| 7 | 1.1.2.1.2 | 接口涉及数据表结构整理 | 1d | 2017-10-23 A | 2017-10-23 A |  | 100% |  |  |  | 董坤 | 8h | 8h |
| 8 | 1.1.2.1.3 | 接口设计 | 1d | 2017-10-24 A | 2017-10-24 A | 7 | 100% |  |  |  | 董坤 | 8h | 8h |
| 9 | 1.1.2.1.4 | 接口设计评审 | 1d | 2017-10-24 A | 2017-10-24 A | 7 | 100% |  |  |  | 董坤 | 8h | 8h |
| 10 | 1.1.3 | **功能开发** | 8d | 2017-10-25 A | 2017-11-02 | 9 | 10% | 7.2d | 0d |  |  | 64h | 6.4h |
| 11 | 1.1.3.1 | **未处理结案任务** | 3d | 2017-10-25 A | 2017-10-27 |  | 27% | 2.2d | 0d |  |  | 24h | 6.4h |
| 12 | 1.1.3.1.1 | 后端服务开发 | 2d | 2017-10-25 A | 2017-10-26 |  | 40% | 1.2d | 0d | start no earlier than 2017-10-23 | 董坤 | 16h | 6.4h |
| 13 | 1.1.3.1.2 | 单元测试 | 1d | 2017-10-27 | 2017-10-27 | 12 |  |  | 0d |  | 董坤 | 8h |  |
| 14 | 1.1.3.2 | **结案任务查询** | 2d | 2017-10-28 | 2017-10-30 | 13 |  |  | 0d |  |  | 16h |  |
| 15 | 1.1.3.2.1 | 后端服务开发 | 1d | 2017-10-28 | 2017-10-28 |  |  |  | 0d | start no earlier than 2017-10-28 | 董坤 | 8h |  |
| 16 | 1.1.3.2.2 | 单元测试 | 1d | 2017-10-30 | 2017-10-30 | 15 |  |  | 0d |  | 董坤 | 8h |  |
| 17 | 1.1.3.3 | **理赔沟通** | 2d | 2017-10-31 | 2017-11-01 | 16 |  |  | 0d |  |  | 16h |  |
| 18 | 1.1.3.3.1 | 后端服务开发 | 1d | 2017-10-31 | 2017-10-31 |  |  |  | 0d |  | 董坤 | 8h |  |
| 19 | 1.1.3.3.2 | 单元测试 | 1d | 2017-11-01 | 2017-11-01 | 18 |  |  | 0d |  | 董坤 | 8h |  |
| 20 | 1.1.3.4 | 前后端联调 | 1d | 2017-11-02 | 2017-11-02 | 19 |  |  | 0d |  | 董坤 | 8h |  |
| 21 | 1.2 | **2.重开赔案** | 8d | 2017-10-23 A | 2017-10-31 |  | 58% | 3.33d | 4d |  |  | 96h | 56h |
| 22 | 1.2.1 | 需求理解 | 1d | 2017-10-23 A | 2017-10-23 A |  | 100% |  |  |  | 王志文 | 8h | 8h |
| 23 | 1.2.2 | **系统设计** | 1d | 2017-10-23 A | 2017-10-23 A |  | 100% |  |  |  |  | 32h | 32h |
| 24 | 1.2.2.1 | **接口设计** | 1d | 2017-10-23 A | 2017-10-23 A |  | 100% |  |  |  |  | 32h | 32h |
| 25 | 1.2.2.1.1 | 涉及接口清单整理 | 1d | 2017-10-23 A | 2017-10-23 A |  | 100% |  |  |  | 王志文 | 8h | 8h |
| 26 | 1.2.2.1.2 | 接口涉及数据表结构整理 | 1d | 2017-10-23 A | 2017-10-23 A |  | 100% |  |  |  | 王志文 | 8h | 8h |
| 27 | 1.2.2.1.3 | 接口设计 | 1d | 2017-10-23 A | 2017-10-23 A |  | 100% |  |  |  | 王志文 | 8h | 8h |
| 28 | 1.2.2.1.4 | 接口设计评审 | 1d | 2017-10-23 A | 2017-10-23 A |  | 100% |  |  |  | 王志文 | 8h | 8h |

| ID | WBS | Task | Duration | Start | Finish | Predecessors | Complete | Remaining | Total slack | Free slack | Constraint | Resources | Work | Actual work |
| --- | --- | --- | --- | --- | --- | --- | --- | --- | --- | --- | --- | --- | --- | --- |
| 29 | 1.2.3 | **功能开发** | 6d | 2017-10-24 A | 2017-10-30 |  | 33% | 4d | 4d |  |  |  | 48h | 16h |
| 30 | 1.2.3.1 | 后端服务开发 | 5d | 2017-10-24 A | 2017-10-28 | 28 | 40% | 3d | 4d | 0d | start no earlier than 2017-10-23 | 王志文 | 40h | 16h |
| 31 | 1.2.3.2 | 单元测试 | 1d | 2017-10-30 | 2017-10-30 | 30 |  |  | 4d | 0d |  | 王志文 | 8h |  |
| 32 | 1.2.4 | 前后端联调 | 1d | 2017-10-31 | 2017-10-31 | 31 |  |  | 4d | 0d |  | 王志文 | 8h |  |
| 33 | 1.3 | **3.班表管理** | 15d | 2017-10-23 A | 2017-11-09 |  | 33% | 10.11d | 3d |  |  |  | 152h | 49.6h |
| 34 | 1.3.1 | 需求理解 | 1d | 2017-10-23 A | 2017-10-23 A |  | 100% |  |  |  |  | 李文刚 | 8h | 8h |
| 35 | 1.3.2 | **系统设计** | 1d | 2017-10-23 A | 2017-10-23 A |  | 100% |  |  |  |  |  | 32h | 32h |
| 36 | 1.3.2.1 | **接口设计** | 1d | 2017-10-23 A | 2017-10-23 A |  | 100% |  |  |  |  |  | 32h | 32h |
| 37 | 1.3.2.1.1 | 涉及接口清单整理 | 1d | 2017-10-23 A | 2017-10-23 A |  | 100% |  |  |  |  | 李文刚 | 8h | 8h |
| 38 | 1.3.2.1.2 | 接口涉及数据表结构整理 | 1d | 2017-10-23 A | 2017-10-23 A |  | 100% |  |  |  |  | 李文刚 | 8h | 8h |
| 39 | 1.3.2.1.3 | 接口设计 | 1d | 2017-10-23 A | 2017-10-23 A |  | 100% |  |  |  |  | 李文刚 | 8h | 8h |
| 40 | 1.3.2.1.4 | 接口设计评审 | 1d | 2017-10-23 A | 2017-10-23 A |  | 100% |  |  |  |  | 李文刚 | 8h | 8h |
| 41 | 1.3.3 | **功能开发** | 13d | 2017-10-24 A | 2017-11-08 |  | 9% | 11.8d | 3d |  |  |  | 104h | 9.6h |
| 42 | 1.3.3.1 | 后端服务开发 | 12d | 2017-10-24 A | 2017-11-07 | 40 | 10% | 10.8d | 3d | 0d | start no earlier than 2017-10-23 | 李文刚 | 96h | 9.6h |
| 43 | 1.3.3.2 | 单元测试 | 1d | 2017-11-08 | 2017-11-08 | 42 |  |  | 3d | 0d |  | 李文刚 | 8h |  |
| 44 | 1.3.4 | 前后端联调 | 1d | 2017-11-09 | 2017-11-09 | 43 |  |  | 3d | 0d |  | 李文刚 | 8h |  |
| 45 | 1.4 | **4.区域设置** | 7d | 2017-10-25 A | 2017-11-01 |  | 45% | 3.82d | 20d |  |  |  | 88h | 40h |
| 46 | 1.4.1 | 需求理解 | 1d | 2017-10-25 A | 2017-10-25 A |  | 100% |  |  |  |  | 孙朋飞 | 8h | 8h |
| 47 | 1.4.2 | **系统设计** | 1d | 2017-10-25 A | 2017-10-25 A |  | 100% |  |  |  |  |  | 32h | 32h |
| 48 | 1.4.2.1 | **接口设计** | 1d | 2017-10-25 A | 2017-10-25 A |  | 100% |  |  |  |  |  | 32h | 32h |
| 49 | 1.4.2.1.1 | 涉及接口清单整理 | 1d | 2017-10-25 A | 2017-10-25 A |  | 100% |  |  |  |  | 孙朋飞 | 8h | 8h |
| 50 | 1.4.2.1.2 | 接口涉及数据表结构整理 | 1d | 2017-10-25 A | 2017-10-25 A |  | 100% |  |  |  |  | 孙朋飞 | 8h | 8h |
| 51 | 1.4.2.1.3 | 接口设计 | 1d | 2017-10-25 A | 2017-10-25 A |  | 100% |  |  |  |  | 孙朋飞 | 8h | 8h |
| 52 | 1.4.2.1.4 | 接口设计评审 | 1d | 2017-10-25 A | 2017-10-25 A |  | 100% |  |  |  |  | 孙朋飞 | 8h | 8h |

| ID | WBS | Task | Duration | Start | Finish | Predecessors | Total slack | Free slack | Constraint | Resources | Work |
| --- | --- | --- | --- | --- | --- | --- | --- | --- | --- | --- | --- |
| 53 | 1.4.3 | **功能开发** | 5d | 2017-10-26 | 2017-10-31 |  | 20d |  |  |  | 40h |
| 54 | 1.4.3.1 | 区域设置后端服务开发 | 4d | 2017-10-26 | 2017-10-30 | 52 | 20d | 0d | start no earlier than 2017-10-25 | 孙朋飞 | 32h |
| 55 | 1.4.3.2 | 区域设置单元测试 | 1d | 2017-10-31 | 2017-10-31 | 54 | 20d | 0d | finish no earlier than 2017-10-30 | 孙朋飞 | 8h |
| 56 | 1.4.4 | 前后端联调 | 1d | 2017-11-01 | 2017-11-01 | 55 | 20d | 0d |  | 孙朋飞 | 8h |
| 57 | 1.5 | **5.流程查询** | 6d | 2017-11-02 | 2017-11-09 |  | 8d |  |  |  | 80h |
| 58 | 1.5.1 | 需求理解 | 1d | 2017-11-02 | 2017-11-02 | 56 | 20d |  |  | 孙朋飞 | 8h |
| 59 | 1.5.2 | **系统设计** | 1d | 2017-11-02 | 2017-11-02 |  | 8d |  |  |  | 32h |
| 60 | 1.5.2.1 | **接口设计** | 1d | 2017-11-02 | 2017-11-02 |  | 8d |  |  |  | 32h |
| 61 | 1.5.2.1.1 | 涉及接口清单整理 | 1d | 2017-11-02 | 2017-11-02 |  | 20d |  | start no earlier than 2017-11-02 | 孙朋飞 | 8h |
| 62 | 1.5.2.1.2 | 接口涉及数据表结构整理 | 1d | 2017-11-02 | 2017-11-02 |  | 20d |  | start no earlier than 2017-11-02 | 孙朋飞 | 8h |
| 63 | 1.5.2.1.3 | 接口设计 | 1d | 2017-11-02 | 2017-11-02 |  | 20d |  | start no earlier than 2017-11-02 | 孙朋飞 | 8h |
| 64 | 1.5.2.1.4 | 接口设计评审 | 1d | 2017-11-02 | 2017-11-02 |  | 8d | 0d | start no earlier than 2017-11-02 | 孙朋飞 | 8h |
| 65 | 1.5.3 | **功能开发** | 4d | 2017-11-03 | 2017-11-08 | 64 | 8d |  |  |  | 32h |
| 66 | 1.5.3.1 | 流程查询后端服务开发 | 3d | 2017-11-03 | 2017-11-07 |  | 8d | 0d | start no earlier than 2017-11-02 | 孙朋飞 | 24h |
| 67 | 1.5.3.2 | 单元测试 | 1d | 2017-11-08 | 2017-11-08 | 66 | 8d | 0d | start no earlier than 2017-11-02 | 孙朋飞 | 8h |
| 68 | 1.5.4 | 前后端联调 | 1d | 2017-11-09 | 2017-11-09 | 67 | 8d | 0d |  | 孙朋飞 | 8h |
| 69 | 1.6 | **6.理赔打印** | 18d | 2017-11-01 | 2017-11-24 |  | 4d |  |  |  | 168h |
| 70 | 1.6.1 | 需求理解 | 1d | 2017-11-01 | 2017-11-01 | 32 | 4d | 0d |  | 王志文 | 8h |
| 71 | 1.6.2 | **系统设计** | 1d | 2017-11-02 | 2017-11-02 |  | 4d |  |  |  | 32h |
| 72 | 1.6.2.1 | **接口设计** | 1d | 2017-11-02 | 2017-11-02 |  | 4d |  |  |  | 32h |
| 73 | 1.6.2.1.1 | 涉及接口清单整理 | 1d | 2017-11-02 | 2017-11-02 | 70 | 20d |  |  | 王志文 | 8h |
| 74 | 1.6.2.1.2 | 接口涉及数据表结构整理 | 1d | 2017-11-02 | 2017-11-02 | 70 | 20d |  |  | 王志文 | 8h |
| 75 | 1.6.2.1.3 | 接口设计 | 1d | 2017-11-02 | 2017-11-02 | 70 | 20d |  |  | 王志文 | 8h |
| 76 | 1.6.2.1.4 | 接口设计评审 | 1d | 2017-11-02 | 2017-11-02 | 70 | 4d | 0d |  | 王志文 | 8h |

| ID | WBS | Task | Type | Duration | Start | Finish | Predecessors | Complete | Remaining | Total slack | Free slack | Constraint | Resources | Work | Actual work |
| --- | --- | --- | --- | --- | --- | --- | --- | --- | --- | --- | --- | --- | --- | --- | --- |
| 77 | 1.6.3 | **功能开发** |  | 15d | 2017-11-03 | 2017-11-23 |  |  |  | 4d |  |  |  | 120h |  |
| 78 | 1.6.3.1 | 农险赔案卷宗封面查询及打印数据查询 |  | 1d | 2017-11-03 | 2017-11-03 | 76 |  |  | 4d | 0d | finish no earlier than 2017-10-25 | 王志文 | 8h |  |
| 79 | 1.6.3.2 | 农房保险赔案卷宗封面查询及打印数据查询 |  | 1d | 2017-11-06 | 2017-11-06 | 78 |  |  | 4d | 0d | finish no earlier than 2017-10-25 | 王志文 | 8h |  |
| 80 | 1.6.3.3 | 现场查勘报告打印查询及打印数据查询 |  | 1d | 2017-11-07 | 2017-11-07 | 79 |  |  | 4d | 0d | start no earlier than 2017-10-30 | 王志文 | 8h |  |
| 81 | 1.6.3.4 | 赔款理算书打印查询及打印数据查询 |  | 2d | 2017-11-08 | 2017-11-09 | 80 |  |  | 4d | 0d |  | 王志文 | 16h |  |
| 82 | 1.6.3.5 | 结案报告查询及打印数据查询 |  | 2d | 2017-11-10 | 2017-11-13 | 81 |  |  | 4d | 0d |  | 王志文 | 16h |  |
| 83 | 1.6.3.6 | 赔款收据查询及打印数据查询 |  | 2d | 2017-11-14 | 2017-11-15 | 82 |  |  | 4d | 0d |  | 王志文 | 16h |  |
| 84 | 1.6.3.7 | 注销/拒赔通知书查询及打印数据查询 |  | 1d | 2017-11-16 | 2017-11-16 | 83 |  |  | 4d | 0d |  | 王志文 | 8h |  |
| 85 | 1.6.3.8 | 保单抄件查询及打印数据查询 |  | 2d | 2017-11-17 | 2017-11-20 | 84 |  |  | 4d | 0d |  | 王志文 | 16h |  |
| 86 | 1.6.3.9 | 自动生成电子单证及发送影像资料 |  | 2d | 2017-11-21 | 2017-11-22 | 85 |  |  | 4d | 0d |  | 王志文 | 16h |  |
| 87 | 1.6.3.10 | 单元测试 |  | 1d | 2017-11-23 | 2017-11-23 | 86 |  |  | 4d | 0d |  | 王志文 | 8h |  |
| 88 | 1.6.4 | 前后端联调 |  | 1d | 2017-11-24 | 2017-11-24 | 87 |  |  | 4d |  |  | 王志文 | 8h |  |
| 89 | 1.7 | **7.支付录入** |  | 18d? | 2017-10-24 A | 2017-11-15 |  | 29% | 12.76d? | 11d |  |  |  | 176h | 51.2h |
| 90 | 1.7.1 | 7.支付录入 | milestone | 0d? | 2017-10-24 | 2017-10-24 |  |  |  | 0d |  | must start on 2017-10-24 |  |  |  |
| 91 | 1.7.2 | 7.支付录入 | milestone | 0d? | 2017-11-15 | 2017-11-15 |  |  |  | 0d |  | must finish on 2017-11-15 |  |  |  |
| 92 | 1.7.3 | 需求理解 |  | 1d | 2017-10-24 A | 2017-10-24 A |  | 100% |  |  |  |  | 祁小龙 | 8h | 8h |
| 93 | 1.7.4 | **系统设计** |  | 2d | 2017-10-24 A | 2017-10-25 A |  | 100% |  |  |  |  |  | 32h | 32h |
| 94 | 1.7.4.1 | **接口设计** |  | 2d | 2017-10-24 A | 2017-10-25 A |  | 100% |  |  |  |  |  | 32h | 32h |
| 95 | 1.7.4.1.1 | 涉及接口清单整理 |  | 1d | 2017-10-24 A | 2017-10-24 A |  | 100% |  |  |  |  | 祁小龙 | 8h | 8h |
| 96 | 1.7.4.1.2 | 接口涉及数据表结构整理 |  | 1d | 2017-10-24 A | 2017-10-24 A |  | 100% |  |  |  |  | 祁小龙 | 8h | 8h |
| 97 | 1.7.4.1.3 | 接口设计 |  | 1d | 2017-10-25 A | 2017-10-25 A | 92 | 100% |  |  |  |  | 祁小龙 | 8h | 8h |
| 98 | 1.7.4.1.4 | 接口设计评审 |  | 1d | 2017-10-25 A | 2017-10-25 A | 92 | 100% |  |  |  |  | 祁小龙 | 8h | 8h |
| 99 | 1.7.5 | **功能开发** |  | 16d | 2017-10-25 A | 2017-11-14 |  | 9% | 14.6d | 11d |  |  |  | 128h | 11.2h |
| 100 | 1.7.5.1 | 支付管理查询 |  | 2d | 2017-10-25 A | 2017-10-26 | 98 | 70% | 0.6d | 11d | 0d | start no earlier than 2017-10-24 | 祁小龙 | 16h | 11.2h |
| 101 | 1.7.5.2 | 整单支付保存 |  | 2d | 2017-10-27 | 2017-10-28 | 100 |  |  | 11d | 0d |  | 祁小龙 | 16h |  |
| 102 | 1.7.5.3 | 清单支付模板查询及下载 |  | 2d | 2017-10-30 | 2017-10-31 | 101 |  |  | 11d | 0d |  | 祁小龙 | 16h |  |
| 103 | 1.7.5.4 | 清单支付清单导入保存 |  | 2d | 2017-11-01 | 2017-11-02 | 102 |  |  | 11d | 0d |  | 祁小龙 | 16h |  |
| 104 | 1.7.5.5 | 整单支付修改 |  | 1d | 2017-11-03 | 2017-11-03 | 103 |  |  | 11d | 0d |  | 祁小龙 | 8h |  |
| 105 | 1.7.5.6 | 清单支付修改 |  | 1d | 2017-11-06 | 2017-11-06 | 104 |  |  | 11d | 0d |  | 祁小龙 | 8h |  |
| 106 | 1.7.5.7 | 电子回单下载 |  | 2d | 2017-11-07 | 2017-11-08 | 105 |  |  | 11d | 0d |  | 祁小龙 | 16h |  |
| 107 | 1.7.5.8 | 支付信息查询 |  | 1d | 2017-11-09 | 2017-11-09 | 106 |  |  | 11d | 0d |  | 祁小龙 | 8h |  |
| 108 | 1.7.5.9 | 支付情况统计表 |  | 2d | 2017-11-10 | 2017-11-13 | 107 |  |  | 11d | 0d |  | 祁小龙 | 16h |  |
| 109 | 1.7.5.10 | 单元测试 |  | 1d | 2017-11-14 | 2017-11-14 | 108 |  |  | 11d | 0d |  | 祁小龙 | 8h |  |
| 110 | 1.7.6 | 前后端联调 |  | 1d | 2017-11-15 | 2017-11-15 | 109 |  |  | 11d |  |  | 祁小龙 | 8h |  |

| ID | WBS | Task | Duration | Start | Finish | Predecessors | Total slack | Free slack | Resources | Work |
| --- | --- | --- | --- | --- | --- | --- | --- | --- | --- | --- |
| 111 | 1.8 | **8.运维管理** | 7d | 2017-11-10 | 2017-11-20 |  | 8d |  |  | 80h |
| 112 | 1.8.1 | 需求理解 | 1d | 2017-11-10 | 2017-11-10 | 68 | 14d |  | 孙朋飞 | 8h |
| 113 | 1.8.2 | **系统设计** | 2d | 2017-11-10 | 2017-11-13 |  | 8d |  |  | 32h |
| 114 | 1.8.2.1 | **接口设计** | 2d | 2017-11-10 | 2017-11-13 |  | 8d |  |  | 32h |
| 115 | 1.8.2.1.1 | 涉及接口清单整理 | 1d | 2017-11-10 | 2017-11-10 | 68 | 14d |  | 孙朋飞 | 8h |
| 116 | 1.8.2.1.2 | 接口涉及数据表结构整理 | 1d | 2017-11-10 | 2017-11-10 | 68 | 8d | 0d | 孙朋飞 | 8h |
| 117 | 1.8.2.1.3 | 接口设计 | 1d | 2017-11-13 | 2017-11-13 | 116 | 13d |  | 孙朋飞 | 8h |
| 118 | 1.8.2.1.4 | 接口设计评审 | 1d | 2017-11-13 | 2017-11-13 | 116 | 8d | 0d | 孙朋飞 | 8h |
| 119 | 1.8.3 | **功能开发** | 5d | 2017-11-14 | 2017-11-20 |  | 8d |  |  | 40h |
| 120 | 1.8.3.1 | 核赔工作流补传 | 3d | 2017-11-14 | 2017-11-16 | 118 | 8d | 0d | 孙朋飞 | 24h |
| 121 | 1.8.3.2 | 单元测试 | 1d | 2017-11-17 | 2017-11-17 | 120 | 8d | 0d | 孙朋飞 | 8h |
| 122 | 1.8.3.3 | 前后端联调 | 1d | 2017-11-20 | 2017-11-20 | 121 | 8d |  | 孙朋飞 | 8h |
| 123 | 1.9 | **9.交易清单系统** | 20d | 2017-11-03 | 2017-11-30 |  | 0d |  |  | 176h |
| 124 | 1.9.1 | 需求规则收集学习 | 1d | 2017-11-03 | 2017-11-03 | 20 | 0d |  | 董坤 | 8h |
| 125 | 1.9.2 | **系统设计** | 2d | 2017-11-06 | 2017-11-07 |  | 0d |  |  | 32h |
| 126 | 1.9.2.1 | **接口设计** | 2d | 2017-11-06 | 2017-11-07 |  | 0d |  |  | 32h |
| 127 | 1.9.2.1.1 | 涉及接口清单整理 | 1d | 2017-11-06 | 2017-11-06 | 124 | 0d |  | 董坤 | 8h |
| 128 | 1.9.2.1.2 | 接口涉及数据表结构整理 | 1d | 2017-11-06 | 2017-11-06 | 124 | 18d |  | 董坤 | 8h |
| 129 | 1.9.2.1.3 | 接口设计 | 1d | 2017-11-07 | 2017-11-07 | 127 | 17d |  | 董坤 | 8h |
| 130 | 1.9.2.1.4 | 接口设计评审 | 1d | 2017-11-07 | 2017-11-07 | 127 | 0d |  | 董坤 | 8h |
| 131 | 1.9.3 | **功能开发** | 16d | 2017-11-08 | 2017-11-29 |  | 0d |  |  | 128h |
| 132 | 1.9.3.1 | 提供损失清单同步接口 | 6d | 2017-11-08 | 2017-11-15 | 130 | 0d |  | 董坤 | 48h |
| 133 | 1.9.3.2 | 提供理算损失清单回写信息接口 | 6d | 2017-11-16 | 2017-11-23 | 132 | 0d |  | 董坤 | 48h |
| 134 | 1.9.3.3 | 提供险别损失清单同步接口 | 3d | 2017-11-24 | 2017-11-28 | 133 | 0d |  | 董坤 | 24h |
| 135 | 1.9.3.4 | 单元测试 | 1d | 2017-11-29 | 2017-11-29 | 134 | 0d |  | 董坤 | 8h |
| 136 | 1.9.4 | 前后端联调 | 1d | 2017-11-30 | 2017-11-30 | 135 | 0d |  | 董坤 | 8h |

| ID | WBS | Task | Duration | Start | Finish | Predecessors | Total slack | Free slack | Constraint | Resources | Work |
| --- | --- | --- | --- | --- | --- | --- | --- | --- | --- | --- | --- |
| 137 | 1.10 | **10.个人中心** | 14d | 2017-11-10 | 2017-11-29 |  | 1d |  |  |  | 112h |
| 138 | 1.10.1 | 需求理解 | 1d | 2017-11-10 | 2017-11-10 | 44 | 3d | 0d |  | 李文刚 | 8h |
| 139 | 1.10.2 | **系统设计** | 2d | 2017-11-13 | 2017-11-14 |  | 3d |  |  |  | 32h |
| 140 | 1.10.2.1 | **接口设计** | 2d | 2017-11-13 | 2017-11-14 |  | 3d |  |  |  | 32h |
| 141 | 1.10.2.1.1 | 涉及接口清单整理 | 1d | 2017-11-13 | 2017-11-13 | 138 | 3d | 0d |  | 李文刚 | 8h |
| 142 | 1.10.2.1.2 | 接口涉及数据表结构整理 | 1d | 2017-11-13 | 2017-11-13 | 138 | 13d |  |  | 李文刚 | 8h |
| 143 | 1.10.2.1.3 | 接口设计 | 1d | 2017-11-14 | 2017-11-14 | 141 | 12d |  |  | 李文刚 | 8h |
| 144 | 1.10.2.1.4 | 接口设计评审 | 1d | 2017-11-14 | 2017-11-14 | 141 | 3d | 2d |  | 李文刚 | 8h |
| 145 | 1.10.3 | **功能开发** | 8d | 2017-11-17 | 2017-11-28 |  | 1d |  |  |  | 64h |
| 146 | 1.10.3.1 | 公共查询 | 2d | 2017-11-17 | 2017-11-20 | 144 | 1d | 0d | start no earlier than 2017-11-17 | 李文刚 | 16h |
| 147 | 1.10.3.2 | 调度任务 | 1d | 2017-11-21 | 2017-11-21 | 146 | 1d | 0d |  | 李文刚 | 8h |
| 148 | 1.10.3.3 | 查勘定损任务 | 1d | 2017-11-22 | 2017-11-22 | 147 | 1d | 0d |  | 李文刚 | 8h |
| 149 | 1.10.3.4 | 立案任务 | 1d | 2017-11-23 | 2017-11-23 | 148 | 1d | 0d |  | 李文刚 | 8h |
| 150 | 1.10.3.5 | 理算任务 | 1d | 2017-11-24 | 2017-11-24 | 149 | 1d | 0d |  | 李文刚 | 8h |
| 151 | 1.10.3.6 | 结案任务 | 1d | 2017-11-27 | 2017-11-27 | 150 | 1d | 0d |  | 李文刚 | 8h |
| 152 | 1.10.3.7 | 单元测试 | 1d | 2017-11-28 | 2017-11-28 | 151 | 1d | 0d |  | 李文刚 | 8h |
| 153 | 1.10.4 | 前后端联调 | 1d | 2017-11-29 | 2017-11-29 | 152 | 1d |  |  | 李文刚 | 8h |
