Schedule from MS Project, 2017-10-24 to 2017-12-13, A marks actual dates.
Bbs.Machenike.Com

## Calendars

- 标准: Mon-Fri 08:00-12:00, 13:00-17:00; Sat-Sun off.

## Resources

| Resource |
| --- |
| 董坤 |
| A |
| 祁小龙 |
| B |
| A/B |
| 祁小龙/董坤/A/B |
| 王志文 |
| 李文刚 |
| 孙朋飞 |
| ALL |

## Schedule

| ID | WBS | Task | Duration | Start | Finish | Predecessors | Complete | Remaining | Total slack | Constraint | Resources | Work | Actual work |
| --- | --- | --- | --- | --- | --- | --- | --- | --- | --- | --- | --- | --- | --- |
| 1 | 1 | **理赔二组开发** | 37d? | 2017-10-24 A | 2017-12-13 |  | 22% | 28.89d? | 0d |  |  | 1220.8h | 272.79h |
| 2 | 1.1 | **系统设计** | 7d? | 2017-10-26 A | 2017-11-03 |  | 38% | 4.36d? | 28d |  |  | 388.8h | 146.39h |
| 3 | 1.1.1 | **结案任务处理** | 1d? | 2017-10-27 A | 2017-10-27 A |  | 100% |  |  |  |  | 32h | 32h |
| 4 | 1.1.1.1 | 业务分析 | 1d? | 2017-10-27 A | 2017-10-27 A |  | 100% |  |  | start no earlier than 2017-10-27 | 董坤 | 8h | 8h |
| 5 | 1.1.1.2 | 接口涉及数据表结构整理 | 1d? | 2017-10-27 A | 2017-10-27 A |  | 100% |  |  | start no earlier than 2017-10-27 | 董坤 | 8h | 8h |
| 6 | 1.1.1.3 | 接口设计、文档编写 | 1d? | 2017-10-27 A | 2017-10-27 A |  | 100% |  |  | start no earlier than 2017-10-27 | 董坤 | 8h | 8h |
| 7 | 1.1.1.4 | 接口设计评审 | 1d? | 2017-10-27 A | 2017-10-27 A |  | 100% |  |  | start no earlier than 2017-10-27 | 董坤 | 8h | 8h |
| 8 | 1.1.2 | **系统主页** | 1d? | 2017-10-26 A | 2017-10-26 A |  | 100% |  |  |  |  | 32h | 32h |
| 9 | 1.1.2.1 | 业务分析 | 1d? | 2017-10-26 A | 2017-10-26 A |  | 100% |  |  | start no earlier than 2017-10-26 | 祁小龙 | 8h | 8h |
| 10 | 1.1.2.2 | 接口涉及数据表结构整理 | 1d? | 2017-10-26 A | 2017-10-26 A |  | 100% |  |  | start no earlier than 2017-10-26 | 祁小龙 | 8h | 8h |
| 11 | 1.1.2.3 | 接口设计、文档编写 | 1d? | 2017-10-26 A | 2017-10-26 A |  | 100% |  |  | start no earlier than 2017-10-26 | 祁小龙 | 8h | 8h |
| 12 | 1.1.2.4 | 接口设计评审 | 1d? | 2017-10-26 A | 2017-10-26 A |  | 100% |  |  | start no earlier than 2017-10-26 | 祁小龙 | 8h | 8h |
| 13 | 1.1.3 | **重开赔案** | 0.4d | 2017-10-27 A | 2017-10-27 A |  | 100% |  |  |  |  | 12.8h | 12.8h |
| 14 | 1.1.3.1 | 业务分析 | 0.4d | 2017-10-27 A | 2017-10-27 A | 12 | 100% |  |  |  | 祁小龙 | 3.2h | 3.2h |
| 15 | 1.1.3.2 | 接口涉及数据表结构整理 | 0.4d | 2017-10-27 A | 2017-10-27 A |  | 100% |  |  |  | 祁小龙 | 3.2h | 3.2h |
| 16 | 1.1.3.3 | 接口设计、文档编写 | 0.4d | 2017-10-27 A | 2017-10-27 A |  | 100% |  |  |  | 祁小龙 | 3.2h | 3.2h |
| 17 | 1.1.3.4 | 接口设计评审 | 0.4d | 2017-10-27 A | 2017-10-27 A |  | 100% |  |  |  | 祁小龙 | 3.2h | 3.2h |
| 18 | 1.1.4 | **班表管理** | 1d | 2017-10-30 A | 2017-10-30 A | 7 | 100% |  |  |  |  | 24h | 24h |
| 19 | 1.1.4.1 | 业务分析 | 1d | 2017-10-30 A | 2017-10-30 A |  | 100% |  |  |  | 董坤 | 8h | 8h |
| 20 | 1.1.4.2 | 接口涉及数据表结构整理 | 1d | 2017-10-30 A | 2017-10-30 A |  | 100% |  |  |  | 董坤 | 8h | 8h |
| 21 | 1.1.4.3 | 接口设计、文档编写 | 1d | 2017-10-30 A | 2017-10-30 A |  | 100% |  |  |  | 董坤 | 8h | 8h |
| 22 | 1.1.5 | **个人中心** | 1d | 2017-10-31 A | 2017-10-31 | 21 | 32% | 0.68d | 31d |  |  | 32h | 10.39h |
| 23 | 1.1.5.1 | 业务分析 | 1d | 2017-10-31 A | 2017-10-31 A |  | 100% |  |  | start no earlier than 2017-10-27 | 董坤 | 8h | 8h |
| 24 | 1.1.5.2 | 接口涉及数据表结构整理 | 1d | 2017-10-31 A | 2017-10-31 |  | 10% | 0.9d | 31d | start no earlier than 2017-10-27 | 董坤 | 8h | 0.8h |
| 25 | 1.1.5.3 | 接口设计、文档编写 | 1d | 2017-10-31 A | 2017-10-31 |  | 10% | 0.9d | 31d | start no earlier than 2017-10-27 | 董坤 | 8h | 0.8h |
| 26 | 1.1.5.4 | 接口设计评审 | 1d | 2017-10-31 A | 2017-10-31 |  | 10% | 0.9d | 0d | start no earlier than 2017-10-27 | 董坤 | 8h | 0.8h |

| ID | WBS | Task | Duration | Start | Finish | Predecessors | Complete | Remaining | Total slack | Free slack | Resources | Work | Actual work |
| --- | --- | --- | --- | --- | --- | --- | --- | --- | --- | --- | --- | --- | --- |
| 27 | 1.1.6 | **理赔打印** | 1d? | 2017-10-27 | 2017-10-30 | 17 |  |  | 0.6d |  |  | 32h |  |
| 28 | 1.1.6.1 | 业务分析 | 1d? | 2017-10-27 | 2017-10-30 |  |  |  | 32.6d |  | 祁小龙 | 8h |  |
| 29 | 1.1.6.2 | 接口涉及数据表结构整理 | 1d? | 2017-10-27 | 2017-10-30 |  |  |  | 32.6d |  | 祁小龙 | 8h |  |
| 30 | 1.1.6.3 | 接口设计、文档编写 | 1d? | 2017-10-27 | 2017-10-30 |  |  |  | 32.6d |  | 祁小龙 | 8h |  |
| 31 | 1.1.6.4 | 接口设计评审 | 1d? | 2017-10-27 | 2017-10-30 |  |  |  | 0.6d | 0d | 祁小龙 | 8h |  |
| 32 | 1.1.7 | **流程查询** | 1d? | 2017-10-30 | 2017-10-31 | 31 |  |  | 0.6d |  |  | 32h |  |
| 33 | 1.1.7.1 | 业务分析 | 1d? | 2017-10-30 | 2017-10-31 |  |  |  | 31.6d |  | 祁小龙 | 8h |  |
| 34 | 1.1.7.2 | 接口涉及数据表结构整理 | 1d? | 2017-10-30 | 2017-10-31 |  |  |  | 31.6d |  | 祁小龙 | 8h |  |
| 35 | 1.1.7.3 | 接口设计、文档编写 | 1d? | 2017-10-30 | 2017-10-31 |  |  |  | 31.6d |  | 祁小龙 | 8h |  |
| 36 | 1.1.7.4 | 接口设计评审 | 1d? | 2017-10-30 | 2017-10-31 |  |  |  | 0.6d |  | 祁小龙 | 8h |  |
| 37 | 1.1.8 | **运维管理** | 1d? | 2017-11-01 A | 2017-11-01 A | 26 | 100% |  |  |  |  | 32h | 32h |
| 38 | 1.1.8.1 | 业务分析 | 1d? | 2017-11-01 A | 2017-11-01 A |  | 100% |  |  |  | 董坤 | 8h | 8h |
| 39 | 1.1.8.2 | 接口涉及数据表结构整理 | 1d? | 2017-11-01 A | 2017-11-01 A |  | 100% |  |  |  | 董坤 | 8h | 8h |
| 40 | 1.1.8.3 | 接口设计、文档编写 | 1d? | 2017-11-01 A | 2017-11-01 A |  | 100% |  |  |  | 董坤 | 8h | 8h |
| 41 | 1.1.8.4 | 接口设计评审 | 1d? | 2017-11-01 A | 2017-11-01 A |  | 100% |  |  |  | 董坤 | 8h | 8h |
| 42 | 1.1.9 | **支付管理** | 1d? | 2017-11-01 A | 2017-11-01 | 36 | 10% | 0.9d? | 30d |  |  | 32h | 3.19h |
| 43 | 1.1.9.1 | 业务分析 | 1d? | 2017-11-01 A | 2017-11-01 |  | 10% | 0.9d? | 30d |  | 祁小龙 | 8h | 0.8h |
| 44 | 1.1.9.2 | 接口涉及数据表结构整理 | 1d? | 2017-11-01 A | 2017-11-01 |  | 10% | 0.9d? | 30d |  | 祁小龙 | 8h | 0.8h |
| 45 | 1.1.9.3 | 接口设计、文档编写 | 1d? | 2017-11-01 A | 2017-11-01 |  | 10% | 0.9d? | 30d |  | 祁小龙 | 8h | 0.8h |
| 46 | 1.1.9.4 | 接口设计评审 | 1d? | 2017-11-01 A | 2017-11-01 |  | 10% | 0.9d? | 1.4d | 0d | 祁小龙 | 8h | 0.8h |
| 47 | 1.1.10 | **损失率清单查询接口（种植险）** | 1d? | 2017-11-02 | 2017-11-02 | 41 |  |  | 0.8d |  |  | 32h |  |
| 48 | 1.1.10.1 | 业务分析 | 1d? | 2017-11-02 | 2017-11-02 |  |  |  | 29d |  | 董坤 | 8h |  |
| 49 | 1.1.10.2 | 接口涉及数据表结构整理 | 1d? | 2017-11-02 | 2017-11-02 |  |  |  | 29d |  | 董坤 | 8h |  |
| 50 | 1.1.10.3 | 接口设计、文档编写 | 1d? | 2017-11-02 | 2017-11-02 |  |  |  | 29d |  | 董坤 | 8h |  |
| 51 | 1.1.10.4 | 接口设计评审 | 1d? | 2017-11-02 | 2017-11-02 |  |  |  | 0.8d | 0d | 董坤 | 8h |  |

| ID | WBS | Task | Duration | Start | Finish | Predecessors | Complete | Remaining | Total slack | Free slack | Constraint | Resources | Work | Actual work |
| --- | --- | --- | --- | --- | --- | --- | --- | --- | --- | --- | --- | --- | --- | --- |
| 52 | 1.1.11 | **理赔支付清单持久化接口（种植险）** | 1d? | 2017-11-03 | 2017-11-03 | 51 |  |  | 0.8d |  |  |  | 32h |  |
| 53 | 1.1.11.1 | 业务分析 | 1d? | 2017-11-03 | 2017-11-03 |  |  |  | 28d |  |  | 董坤 | 8h |  |
| 54 | 1.1.11.2 | 接口涉及数据表结构整理 | 1d? | 2017-11-03 | 2017-11-03 |  |  |  | 28d |  |  | 董坤 | 8h |  |
| 55 | 1.1.11.3 | 接口设计、文档编写 | 1d? | 2017-11-03 | 2017-11-03 |  |  |  | 28d |  |  | 董坤 | 8h |  |
| 56 | 1.1.11.4 | 接口设计评审 | 1d? | 2017-11-03 | 2017-11-03 |  |  |  | 0.8d | 0d |  | 董坤 | 8h |  |
| 57 | 1.1.12 | **损失清单查询接口（养殖险）** | 1d? | 2017-11-02 | 2017-11-02 | 46 |  |  | 29d |  |  |  | 32h |  |
| 58 | 1.1.12.1 | 业务分析 | 1d? | 2017-11-02 | 2017-11-02 |  |  |  | 29d |  |  | 祁小龙 | 8h |  |
| 59 | 1.1.12.2 | 接口涉及数据表结构整理 | 1d? | 2017-11-02 | 2017-11-02 |  |  |  | 29d |  |  | 祁小龙 | 8h |  |
| 60 | 1.1.12.3 | 接口设计、文档编写 | 1d? | 2017-11-02 | 2017-11-02 |  |  |  | 29d |  |  | 祁小龙 | 8h |  |
| 61 | 1.1.12.4 | 接口设计评审 | 1d? | 2017-11-02 | 2017-11-02 |  |  |  | 29d |  |  | 祁小龙 | 8h |  |
| 62 | 1.1.13 | **理赔支付清单持久化接口（养殖险）** | 1d? | 2017-11-02 | 2017-11-02 | 46 |  |  | 1.4d |  |  |  | 32h |  |
| 63 | 1.1.13.1 | 业务分析 | 1d? | 2017-11-02 | 2017-11-02 |  |  |  | 29d |  |  | 祁小龙 | 8h |  |
| 64 | 1.1.13.2 | 接口涉及数据表结构整理 | 1d? | 2017-11-02 | 2017-11-02 |  |  |  | 29d |  |  | 祁小龙 | 8h |  |
| 65 | 1.1.13.3 | 接口设计、文档编写 | 1d? | 2017-11-02 | 2017-11-02 |  |  |  | 29d |  |  | 祁小龙 | 8h |  |
| 66 | 1.1.13.4 | 接口设计评审 | 1d? | 2017-11-02 | 2017-11-02 |  |  |  | 1.4d | 0d |  | 祁小龙 | 8h |  |
| 67 | 1.2 | **功能开发** | 37d | 2017-10-24 A | 2017-12-13 |  | 15% | 31.54d | 0d |  |  |  | 832h | 126.4h |
| 68 | 1.2.1 | **1.结案任务处理** | 8d | 2017-11-06 A | 2017-11-15 |  | 10% | 7.2d | 0d |  |  |  | 64h | 6.4h |
| 69 | 1.2.1.1 | **未处理结案任务** | 3d | 2017-11-06 A | 2017-11-08 |  | 27% | 2.2d | 0d |  |  |  | 24h | 6.4h |
| 70 | 1.2.1.1.1 | 后端服务开发 | 2d | 2017-11-06 A | 2017-11-07 | 56 | 40% | 1.2d | 0d |  |  | 董坤 | 16h | 6.4h |
| 71 | 1.2.1.1.2 | 单元测试 | 1d | 2017-11-08 | 2017-11-08 | 70 |  |  | 0d |  |  | 董坤 | 8h |  |
| 72 | 1.2.1.2 | **结案任务查询** | 2d | 2017-11-09 | 2017-11-10 | 71 |  |  | 0d |  |  |  | 16h |  |
| 73 | 1.2.1.2.1 | 后端服务开发 | 1d | 2017-11-09 | 2017-11-09 |  |  |  | 0d |  | start no earlier than 2017-10-28 | 董坤 | 8h |  |
| 74 | 1.2.1.2.2 | 单元测试 | 1d | 2017-11-10 | 2017-11-10 | 73 |  |  | 0d |  |  | 董坤 | 8h |  |
| 75 | 1.2.1.3 | **理赔沟通** | 2d | 2017-11-13 | 2017-11-14 | 74 |  |  | 0d |  |  |  | 16h |  |
| 76 | 1.2.1.3.1 | 后端服务开发 | 1d | 2017-11-13 | 2017-11-13 |  |  |  | 0d |  |  | 董坤 | 8h |  |
| 77 | 1.2.1.3.2 | 单元测试 | 1d | 2017-11-14 | 2017-11-14 | 76 |  |  | 0d |  |  | 董坤 | 8h |  |
| 78 | 1.2.1.4 | 前后端联调 | 1d | 2017-11-15 | 2017-11-15 | 77 |  |  | 0d |  |  | 董坤 | 8h |  |

| ID | WBS | Task | Duration | Start | Finish | Predecessors | Complete | Remaining | Total slack | Free slack | Constraint | Resources | Work | Actual work |
| --- | --- | --- | --- | --- | --- | --- | --- | --- | --- | --- | --- | --- | --- | --- |
| 79 | 1.2.2 | **2.重开赔案** | 7d | 2017-10-24 A | 2017-11-01 |  | 69% | 2.2d | 14.3d |  |  |  | 56h | 38.4h |
| 80 | 1.2.2.1 | **功能开发** | 6d | 2017-10-24 A | 2017-10-31 |  | 80% | 1.2d | 14.3d |  |  |  | 48h | 38.4h |
| 81 | 1.2.2.1.1 | 后端服务开发 | 5d | 2017-10-24 A | 2017-10-30 |  | 80% | 1d | 14.3d | 0d | start no earlier than 2017-10-23 | 王志文 | 40h | 32h |
| 82 | 1.2.2.1.2 | 单元测试 | 1d | 2017-10-31 A | 2017-10-31 | 81 | 80% | 0.2d | 14.3d | 0d |  | 王志文 | 8h | 6.4h |
| 83 | 1.2.2.2 | 前后端联调 | 1d | 2017-11-01 | 2017-11-01 | 82 |  |  | 14.3d | 0d |  | 王志文 | 8h |  |
| 84 | 1.2.3 | **3.班表管理** | 14d | 2017-10-24 A | 2017-11-10 |  | 26% | 10.4d | 14d |  |  |  | 112h | 28.8h |
| 85 | 1.2.3.1 | **功能开发** | 13d | 2017-10-24 A | 2017-11-09 |  | 28% | 9.4d | 14d |  |  |  | 104h | 28.8h |
| 86 | 1.2.3.1.1 | 后端服务开发 | 12d | 2017-10-24 A | 2017-11-08 |  | 30% | 8.4d | 14d | 0d | start no earlier than 2017-10-23 | 李文刚 | 96h | 28.8h |
| 87 | 1.2.3.1.2 | 单元测试 | 1d | 2017-11-09 | 2017-11-09 | 86 |  |  | 14d | 0d |  | 李文刚 | 8h |  |
| 88 | 1.2.3.2 | 前后端联调 | 1d | 2017-11-10 | 2017-11-10 | 87 |  |  | 14d | 4d |  | 李文刚 | 8h |  |
| 89 | 1.2.4 | **4.区域设置** | 6d | 2017-10-25 A | 2017-11-01 |  | 67% | 2d | 21.5d |  |  |  | 48h | 32h |
| 90 | 1.2.4.1 | **功能开发** | 5d | 2017-10-25 A | 2017-10-31 |  | 80% | 1d | 21.5d |  |  |  | 40h | 32h |
| 91 | 1.2.4.1.1 | 区域设置后端服务开发 | 4d | 2017-10-25 A | 2017-10-30 |  | 80% | 0.8d | 22.3d | 0d | start no earlier than 2017-10-25 | 孙朋飞 | 32h | 25.6h |
| 92 | 1.2.4.1.2 | 区域设置单元测试 | 1d | 2017-10-31 A | 2017-10-31 | 91 | 80% | 0.2d | 21.5d | 0d | finish no earlier than 2017-10-30 | 孙朋飞 | 8h | 6.4h |
| 93 | 1.2.4.2 | 前后端联调 | 1d | 2017-11-01 | 2017-11-01 | 92 |  |  | 21.5d | 0d |  | 孙朋飞 | 8h |  |
| 94 | 1.2.5 | **5.流程查询** | 5d | 2017-11-02 A | 2017-11-08 | 93 | 18% | 4.1d | 20d |  |  |  | 40h | 7.2h |
| 95 | 1.2.5.1 | **功能开发** | 4d | 2017-11-02 A | 2017-11-07 |  | 23% | 3.1d | 20d |  |  |  | 32h | 7.2h |
| 96 | 1.2.5.1.1 | 流程查询后端服务开发 | 3d | 2017-11-02 A | 2017-11-06 |  | 30% | 2.1d | 20d | 0d | start no earlier than 2017-11-02 | 孙朋飞 | 24h | 7.2h |
| 97 | 1.2.5.1.2 | 单元测试 | 1d | 2017-11-07 | 2017-11-07 | 96 |  |  | 20d | 0d | start no earlier than 2017-11-02 | 孙朋飞 | 8h |  |
| 98 | 1.2.5.2 | 前后端联调 | 1d | 2017-11-08 | 2017-11-08 | 97 |  |  | 20d | 0d |  | 孙朋飞 | 8h |  |
| 99 | 1.2.6 | **6.理赔打印** | 16d | 2017-11-02 A | 2017-11-23 |  | 2% | 15.7d | 14d |  |  |  | 128h | 2.4h |
| 100 | 1.2.6.1 | **功能开发** | 15d | 2017-11-02 A | 2017-11-22 |  | 2% | 14.7d | 14d |  |  |  | 120h | 2.4h |
| 101 | 1.2.6.1.1 | 农险赔案卷宗封面查询及打印数据查询 | 1d | 2017-11-02 A | 2017-11-02 | 83 | 30% | 0.7d | 14d | 0d | finish no earlier than 2017-10-25 | 王志文 | 8h | 2.4h |
| 102 | 1.2.6.1.2 | 农房保险赔案卷宗封面查询及打印数据查询 | 1d | 2017-11-03 | 2017-11-03 | 101 |  |  | 14d | 0d | finish no earlier than 2017-10-25 | 王志文 | 8h |  |
| 103 | 1.2.6.1.3 | 现场查勘报告打印查询及打印数据查询 | 1d | 2017-11-06 | 2017-11-06 | 102 |  |  | 14d | 0d | start no earlier than 2017-10-30 | 王志文 | 8h |  |
| 104 | 1.2.6.1.4 | 赔款理算书打印查询及打印数据查询 | 2d | 2017-11-07 | 2017-11-08 | 103 |  |  | 14d | 0d |  | 王志文 | 16h |  |
| 105 | 1.2.6.1.5 | 结案报告查询及打印数据查询 | 2d | 2017-11-09 | 2017-11-10 | 104 |  |  | 14d | 0d |  | 王志文 | 16h |  |
| 106 | 1.2.6.1.6 | 赔款收据查询及打印数据查询 | 2d | 2017-11-13 | 2017-11-14 | 105 |  |  | 14d | 0d |  | 王志文 | 16h |  |
| 107 | 1.2.6.1.7 | 注销/拒赔通知书查询及打印数据查询 | 1d | 2017-11-15 | 2017-11-15 | 106 |  |  | 14d | 0d |  | 王志文 | 8h |  |
| 108 | 1.2.6.1.8 | 保单抄件查询及打印数据查询 | 2d | 2017-11-16 | 2017-11-17 | 107 |  |  | 14d | 0d |  | 王志文 | 16h |  |
| 109 | 1.2.6.1.9 | 自动生成电子单证及发送影像资料 | 2d | 2017-11-20 | 2017-11-21 | 108 |  |  | 14d | 0d |  | 王志文 | 16h |  |
| 110 | 1.2.6.1.10 | 单元测试 | 1d | 2017-11-22 | 2017-11-22 | 109 |  |  | 14d | 0d |  | 王志文 | 8h |  |
| 111 | 1.2.6.2 | 前后端联调 | 1d | 2017-11-23 | 2017-11-23 | 110 |  |  | 14d |  |  | 王志文 | 8h |  |

| ID | WBS | Task | Duration | Start | Finish | Predecessors | Complete | Remaining | Total slack | Free slack | Constraint | Resources | Work | Actual work |
| --- | --- | --- | --- | --- | --- | --- | --- | --- | --- | --- | --- | --- | --- | --- |
| 112 | 1.2.7 | **7.支付录入** | 17d | 2017-11-03 A | 2017-11-27 |  | 8% | 15.6d | 12d |  |  |  | 136h | 11.2h |
| 113 | 1.2.7.1 | **功能开发** | 16d | 2017-11-03 A | 2017-11-24 |  | 9% | 14.6d | 12d |  |  |  | 128h | 11.2h |
| 114 | 1.2.7.1.1 | 支付管理查询 | 2d | 2017-11-03 A | 2017-11-06 | 66 | 70% | 0.6d | 12d | 0d | start no earlier than 2017-10-24 | 祁小龙 | 16h | 11.2h |
| 115 | 1.2.7.1.2 | 整单支付保存 | 2d | 2017-11-07 | 2017-11-08 | 114 |  |  | 12d | 0d |  | 祁小龙 | 16h |  |
| 116 | 1.2.7.1.3 | 清单支付模板查询及下载 | 2d | 2017-11-09 | 2017-11-10 | 115 |  |  | 12d | 0d |  | 祁小龙 | 16h |  |
| 117 | 1.2.7.1.4 | 清单支付清单导入保存 | 2d | 2017-11-13 | 2017-11-14 | 116 |  |  | 12d | 0d |  | 祁小龙 | 16h |  |
| 118 | 1.2.7.1.5 | 整单支付修改 | 1d | 2017-11-15 | 2017-11-15 | 117 |  |  | 12d | 0d |  | 祁小龙 | 8h |  |
| 119 | 1.2.7.1.6 | 清单支付修改 | 1d | 2017-11-16 | 2017-11-16 | 118 |  |  | 12d | 0d |  | 祁小龙 | 8h |  |
| 120 | 1.2.7.1.7 | 电子回单下载 | 2d | 2017-11-17 | 2017-11-20 | 119 |  |  | 12d | 0d |  | 祁小龙 | 16h |  |
| 121 | 1.2.7.1.8 | 支付信息查询 | 1d | 2017-11-21 | 2017-11-21 | 120 |  |  | 12d | 0d |  | 祁小龙 | 8h |  |
| 122 | 1.2.7.1.9 | 支付情况统计表 | 2d | 2017-11-22 | 2017-11-23 | 121 |  |  | 12d | 0d |  | 祁小龙 | 16h |  |
| 123 | 1.2.7.1.10 | 单元测试 | 1d | 2017-11-24 | 2017-11-24 | 122 |  |  | 12d | 0d |  | 祁小龙 | 8h |  |
| 124 | 1.2.7.2 | 前后端联调 | 1d | 2017-11-27 | 2017-11-27 | 123 |  |  | 12d |  |  | 祁小龙 | 8h |  |
| 125 | 1.2.8 | **8.运维管理** | 5d | 2017-11-09 | 2017-11-15 | 98 |  |  | 20d |  |  |  | 40h |  |
| 126 | 1.2.8.1 | **功能开发** | 5d | 2017-11-09 | 2017-11-15 |  |  |  | 20d |  |  |  | 40h |  |
| 127 | 1.2.8.1.1 | 核赔工作流补传 | 3d | 2017-11-09 | 2017-11-13 |  |  |  | 20d | 0d |  | 孙朋飞 | 24h |  |
| 128 | 1.2.8.1.2 | 单元测试 | 1d | 2017-11-14 | 2017-11-14 | 127 |  |  | 20d | 0d |  | 孙朋飞 | 8h |  |
| 129 | 1.2.8.1.3 | 前后端联调 | 1d | 2017-11-15 | 2017-11-15 | 128 |  |  | 20d |  |  | 孙朋飞 | 8h |  |
| 130 | 1.2.9 | **9.交易清单系统** | 20d | 2017-11-16 | 2017-12-13 | 78 |  |  | 0d |  |  |  | 136h |  |
| 131 | 1.2.9.1 | **功能开发** | 19d | 2017-11-16 | 2017-12-12 |  |  |  | 0d |  |  |  | 128h |  |
| 132 | 1.2.9.1.1 | 损失率清单查询接口（种植险） | 6d | 2017-11-16 | 2017-11-23 |  |  |  | 0d |  |  | 董坤 | 48h |  |
| 133 | 1.2.9.1.2 | 理赔支付清单持久化接口（种植险） | 6d | 2017-11-24 | 2017-12-01 | 132 |  |  | 0d |  |  | 董坤 | 48h |  |
| 134 | 1.2.9.1.3 | 损失清单查询接口（养殖险） | 3d | 2017-12-04 | 2017-12-06 | 133 |  |  | 0d |  |  | 董坤 | 24h |  |
| 135 | 1.2.9.1.4 | 理赔支付清单持久化接口（养殖险） | 3d | 2017-12-07 | 2017-12-11 | 134 |  |  | 0d |  |  |  |  |  |
| 136 | 1.2.9.1.5 | 单元测试 | 1d | 2017-12-12 | 2017-12-12 | 135 |  |  | 0d |  |  | 董坤 | 8h |  |
| 137 | 1.2.9.2 | 前后端联调 | 1d | 2017-12-13 | 2017-12-13 | 136 |  |  | 0d |  |  | 董坤 | 8h |  |

| ID | WBS | Task | Duration | Start | Finish | Predecessors | Total slack | Free slack | Constraint | Resources | Work |
| --- | --- | --- | --- | --- | --- | --- | --- | --- | --- | --- | --- |
| 138 | 1.2.10 | **10.个人中心** | 9d | 2017-11-17 | 2017-11-29 | 88 | 10d |  |  |  | 72h |
| 139 | 1.2.10.1 | **功能开发** | 8d | 2017-11-17 | 2017-11-28 |  | 10d |  |  |  | 64h |
| 140 | 1.2.10.1.1 | 公共查询 | 2d | 2017-11-17 | 2017-11-20 |  | 10d | 0d | start no earlier than 2017-11-17 | 李文刚 | 16h |
| 141 | 1.2.10.1.2 | 调度任务 | 1d | 2017-11-21 | 2017-11-21 | 140 | 10d | 0d |  | 李文刚 | 8h |
| 142 | 1.2.10.1.3 | 查勘定损任务 | 1d | 2017-11-22 | 2017-11-22 | 141 | 10d | 0d |  | 李文刚 | 8h |
| 143 | 1.2.10.1.4 | 立案任务 | 1d | 2017-11-23 | 2017-11-23 | 142 | 10d | 0d |  | 李文刚 | 8h |
| 144 | 1.2.10.1.5 | 理算任务 | 1d | 2017-11-24 | 2017-11-24 | 143 | 10d | 0d |  | 李文刚 | 8h |
| 145 | 1.2.10.1.6 | 结案任务 | 1d | 2017-11-27 | 2017-11-27 | 144 | 10d | 0d |  | 李文刚 | 8h |
| 146 | 1.2.10.1.7 | 单元测试 | 1d | 2017-11-28 | 2017-11-28 | 145 | 10d | 0d |  | 李文刚 | 8h |
| 147 | 1.2.10.2 | 前后端联调 | 1d | 2017-11-29 | 2017-11-29 | 146 | 10d |  |  | 李文刚 | 8h |
