Schedule from MS Project, 2018-02-06 to 2018-04-06, A marks actual dates.
Microsoft

## Calendars

- 标准: Mon-Fri 08:00-12:00, 13:00-17:00; Sat-Sun off. Exceptions (off unless hours are given): 2018-02-11 08:00-12:00, 13:00-17:00 (春节补班), 2018-02-15 to 2018-02-21 (春节放假), 2018-02-24 08:00-12:00, 13:00-17:00 (春节补班).

## Resources

| Resource |
| --- |
| 王保良 |
| 王道洋 |
| 陈道洋 |
| 王志文 |
| 孙朋飞 |
| 李文刚 |
| 王心洋 |
| 李磊 |
| 戴旭等三个人 |
| 田健 |
| 钱浩 |
| 何伟东 |
| 李冬松 |
| 刘曼曼 |
| 龚翔 |
| go |

## Schedule

| ID | WBS | Task | Duration | Start | Finish | Predecessors | Complete | Remaining | Total slack | Constraint | Resources | Work | Actual work |
| --- | --- | --- | --- | --- | --- | --- | --- | --- | --- | --- | --- | --- | --- |
| 1 | 1 | **理赔部分** | 40d | 2018-02-06 A | 2018-04-06 |  | 62% | 15.33d | 0d |  |  | 1684h | 1068h |
| 2 | 1.1 | **理赔系统联调工作** | 29d | 2018-02-06 A | 2018-03-22 |  | 77% | 6.68d | 11d |  |  | 1104h | 849.6h |
| 3 | 1.1.1 | **首页** | 8d | 2018-02-07 A | 2018-02-23 A |  | 100% |  |  |  |  | 40h | 40h |
| 4 | 1.1.1.1 | 快捷操作配置及展示联调 | 0.5d | 2018-02-07 A | 2018-02-07 A |  | 100% |  |  | start no earlier than 2018-02-07 | 王保良 | 4h | 4h |
| 5 | 1.1.1.2 | 机构切换联动菜单 | 0.5d | 2018-02-07 A | 2018-02-08 A | 4 | 100% |  |  |  | 王保良 | 4h | 4h |
| 6 | 1.1.1.3 | 机构切换联动待处理数字显示 | 1d | 2018-02-13 A | 2018-02-14 A | 13 | 100% |  |  | start no earlier than 2018-02-12 | 王保良 | 8h | 8h |
| 7 | 1.1.1.4 | 机构切换联动待处理数据列表 | 1d | 2018-02-14 A | 2018-02-22 A | 6 | 100% |  |  |  | 王保良 | 8h | 8h |
| 8 | 1.1.1.5 | 个人信息查看及修改联调 | 1d | 2018-02-08 A | 2018-02-09 A | 5 | 100% |  |  | start no earlier than 2018-02-06 | 王保良 | 8h | 8h |
| 9 | 1.1.1.6 | 首页功能单元测试 | 1d | 2018-02-22 A | 2018-02-23 A | 7 | 100% |  |  |  | 王保良 | 8h | 8h |
| 10 | 1.1.2 | **报案环节** | 3d | 2018-02-09 A | 2018-02-13 A |  | 100% |  |  |  |  | 24h | 24h |
| 11 | 1.1.2.1 | 报案登记需求验证及调整 | 1d | 2018-02-09 A | 2018-02-11 A | 8 | 100% |  |  |  | 王保良 | 8h | 8h |
| 12 | 1.1.2.2 | 报案环节校验内容调试 | 1d | 2018-02-11 A | 2018-02-12 A | 11 | 100% |  |  |  | 王保良 | 8h | 8h |
| 13 | 1.1.2.3 | 报案环节单元测试 | 1d | 2018-02-12 A | 2018-02-13 A | 12 | 100% |  |  |  | 王保良 | 8h | 8h |
| 14 | 1.1.3 | **调度环节** | 5d | 2018-02-23 A | 2018-03-01 A |  | 100% |  |  |  |  | 40h | 40h |
| 15 | 1.1.3.1 | 调度环节需求验证及调整 | 1d | 2018-02-23 A | 2018-02-24 A | 9 | 100% |  |  |  | 王保良 | 8h | 8h |
| 16 | 1.1.3.2 | 调度环节校验内容调整 | 1d | 2018-02-24 A | 2018-02-26 A | 15 | 100% |  |  |  | 王保良 | 8h | 8h |
| 17 | 1.1.3.3 | 发起调查接口对接 | 2d | 2018-02-26 A | 2018-02-28 A | 16 | 100% |  |  | start no earlier than 2018-02-06 | 王保良 | 16h | 16h |
| 18 | 1.1.3.4 | 调度环节单元测试 | 1d | 2018-02-28 A | 2018-03-01 A | 17 | 100% |  |  |  | 王保良 | 8h | 8h |
| 19 | 1.1.4 | **查勘定损** | 5d | 2018-02-07 A | 2018-02-13 A |  | 100% |  |  |  |  | 40h | 40h |
| 20 | 1.1.4.1 | 查勘定损需求验证及调整 | 1d | 2018-02-07 A | 2018-02-08 A |  | 100% |  |  | start no earlier than 2018-02-07 | 陈道洋 | 8h | 8h |
| 21 | 1.1.4.2 | 关联清单功能联调 | 1d | 2018-02-08 A | 2018-02-09 A | 20 | 100% |  |  |  | 陈道洋 | 8h | 8h |
| 22 | 1.1.4.3 | 定损清单下载功能联调 | 1d | 2018-02-09 A | 2018-02-11 A | 21 | 100% |  |  |  | 陈道洋 | 8h | 8h |
| 23 | 1.1.4.4 | 查勘定损校验内容调试 | 1d | 2018-02-11 A | 2018-02-12 A | 22 | 100% |  |  |  | 陈道洋 | 8h | 8h |
| 24 | 1.1.4.5 | 查勘定损环节单元测试 | 1d | 2018-02-12 A | 2018-02-13 A | 23 | 100% |  |  |  | 陈道洋 | 8h | 8h |

Notes:
- 17: 金禾接口若无法提供，则任务延后.

| ID | WBS | Task | Duration | Start | Finish | Predecessors | Complete | Resources | Work | Actual work |
| --- | --- | --- | --- | --- | --- | --- | --- | --- | --- | --- |
| 25 | 1.1.5 | **立案环节** | 17d | 2018-02-06 A | 2018-03-06 A |  | 100% |  | 104h | 104h |
| 26 | 1.1.5.1 | 立案环节流程调试 | 2d | 2018-02-06 A | 2018-02-08 A |  | 100% | 王志文 | 16h | 16h |
| 27 | 1.1.5.2 | 立案环节需求验证及调试 | 1d | 2018-02-13 A | 2018-02-14 A | 24 | 100% | 陈道洋 | 8h | 8h |
| 28 | 1.1.5.3 | 立案环节校验内容调整 | 1d | 2018-02-14 A | 2018-02-22 A | 27 | 100% | 陈道洋 | 8h | 8h |
| 29 | 1.1.5.4 | 关联清单功能联调 | 0.5d | 2018-02-22 A | 2018-02-22 A | 28 | 100% | 陈道洋 | 4h | 4h |
| 30 | 1.1.5.5 | 定损清单下载功能联调 | 0.5d | 2018-02-22 A | 2018-02-23 A | 29 | 100% | 陈道洋 | 4h | 4h |
| 31 | 1.1.5.6 | 电子单证功能验证及调整 | 4d | 2018-02-23 A | 2018-02-28 A | 30 | 100% | 陈道洋 | 32h | 32h |
| 32 | 1.1.5.7 | 自动立案功能测试及问题修改 | 3d | 2018-02-28 A | 2018-03-05 A | 31 | 100% | 陈道洋 | 24h | 24h |
| 33 | 1.1.5.8 | 立案环节单元测试 | 1d | 2018-03-05 A | 2018-03-06 A | 32 | 100% | 陈道洋 | 8h | 8h |
| 34 | 1.1.6 | **特殊赔案** | 11d | 2018-02-09 A | 2018-03-01 A |  | 100% |  | 88h | 88h |
| 35 | 1.1.6.1 | 特殊赔案申请环节需求验证及调试 | 2d | 2018-02-09 A | 2018-02-12 A | 87 | 100% | 王心洋 | 16h | 16h |
| 36 | 1.1.6.2 | 特殊赔案申请环节校验内容调整 | 2d | 2018-02-12 A | 2018-02-14 A | 35 | 100% | 王心洋 | 16h | 16h |
| 37 | 1.1.6.3 | 特殊赔案任务处理环节需求验证及调试 | 2d | 2018-02-14 A | 2018-02-23 A | 36 | 100% | 王心洋 | 16h | 16h |
| 38 | 1.1.6.4 | 特殊赔案处理环节校验内容调整及调试 | 2d | 2018-02-23 A | 2018-02-26 A | 37 | 100% | 王心洋 | 16h | 16h |
| 39 | 1.1.6.5 | 特殊赔案流程调试 | 1d | 2018-02-26 A | 2018-02-27 A | 38 | 100% | 王心洋 | 8h | 8h |
| 40 | 1.1.6.6 | 特殊赔案清单功能验证及调试 | 1d | 2018-02-27 A | 2018-02-28 A | 39 | 100% | 王心洋 | 8h | 8h |
| 41 | 1.1.6.7 | 特殊赔案单元测试 | 1d | 2018-02-28 A | 2018-03-01 A | 40 | 100% | 王心洋 | 8h | 8h |
| 42 | 1.1.7 | **理算环节** | 10d | 2018-02-08 A | 2018-02-27 A |  | 100% |  | 80h | 80h |
| 43 | 1.1.7.1 | 计算书需求验证及调试 | 1d | 2018-02-08 A | 2018-02-09 A | 26 | 100% | 王志文 | 8h | 8h |
| 44 | 1.1.7.2 | 关联清单功能验证 | 1d | 2018-02-09 A | 2018-02-11 A | 43 | 100% | 王志文 | 8h | 8h |
| 45 | 1.1.7.3 | 理赔清单功能验证 | 2d | 2018-02-11 A | 2018-02-13 A | 44 | 100% | 王志文 | 16h | 16h |
| 46 | 1.1.7.4 | 清单下载功能验证 | 1d | 2018-02-13 A | 2018-02-14 A | 45 | 100% | 王志文 | 8h | 8h |
| 47 | 1.1.7.5 | 共保赔款计算功能验证 | 1d | 2018-02-14 A | 2018-02-22 A | 46 | 100% | 王志文 | 8h | 8h |
| 48 | 1.1.7.6 | 金额汇总计算功能验证 | 1d | 2018-02-22 A | 2018-02-23 A | 47 | 100% | 王志文 | 8h | 8h |
| 49 | 1.1.7.7 | 计算书校验内容调整 | 1d | 2018-02-23 A | 2018-02-24 A | 48 | 100% | 王志文 | 8h | 8h |
| 50 | 1.1.7.8 | 双核对接(理赔方面) | 1d | 2018-02-24 A | 2018-02-26 A | 49 | 100% | 王志文 | 8h | 8h |
| 51 | 1.1.7.9 | 理算环节单元测试 | 1d | 2018-02-26 A | 2018-02-27 A | 50 | 100% | 王志文 | 8h | 8h |

| ID | WBS | Task | Duration | Start | Finish | Predecessors | Complete | Remaining | Total slack | Free slack | Constraint | Resources | Work | Actual work |
| --- | --- | --- | --- | --- | --- | --- | --- | --- | --- | --- | --- | --- | --- | --- |
| 52 | 1.1.8 | **双核核赔** | 7d | 2018-02-27 A | 2018-03-08 A |  | 100% |  |  |  |  |  | 56h | 56h |
| 53 | 1.1.8.1 | 实赔双核接口对接 | 7d | 2018-02-27 A | 2018-03-08 A | 51 | 100% |  |  |  |  | 王志文 | 56h | 56h |
| 54 | 1.1.9 | **结案环节** | 7d | 2018-03-01 A | 2018-03-12 A |  | 100% |  |  |  |  |  | 56h | 56h |
| 55 | 1.1.9.1 | 结案功能需求验证及调试 | 1d | 2018-03-01 A | 2018-03-02 A | 18 | 100% |  |  |  |  | 王保良 | 8h | 8h |
| 56 | 1.1.9.2 | 结案功能验证内容调整 | 1d | 2018-03-02 A | 2018-03-05 A | 55 | 100% |  |  |  |  | 王保良 | 8h | 8h |
| 57 | 1.1.9.3 | 自动结案功能验证 | 2d | 2018-03-05 A | 2018-03-07 A | 56 | 100% |  |  |  |  | 王保良 | 16h | 16h |
| 58 | 1.1.9.4 | 结案环节单元测试 | 1d | 2018-03-07 A | 2018-03-08 A | 57 | 100% |  |  |  |  | 王保良 | 8h | 8h |
| 59 | 1.1.9.5 | 预赔双核接口对接 | 2d | 2018-03-08 A | 2018-03-12 A | 53 | 100% |  |  |  |  | 王心洋 | 16h | 16h |
| 60 | 1.1.10 | **重开赔案** | 12d | 2018-03-06 | 2018-03-22 |  |  |  | 11d |  |  |  | 96h |  |
| 61 | 1.1.10.1 | 重开赔案需求验证及调试 | 3d | 2018-03-06 | 2018-03-09 | 95 |  |  | 11d | 0d | start no earlier than 2018-02-27 | 李文刚 | 24h |  |
| 62 | 1.1.10.2 | 重开赔案校验功能调整 | 3d | 2018-03-09 | 2018-03-14 | 61 |  |  | 11d | 0d |  | 李文刚 | 24h |  |
| 63 | 1.1.10.3 | 双核对接 | 3d | 2018-03-14 | 2018-03-19 | 62 |  |  | 11d | 0d |  | 李文刚 | 24h |  |
| 64 | 1.1.10.4 | 重开赔案单元测试 | 3d | 2018-03-19 | 2018-03-22 | 63 |  |  | 11d |  |  | 李文刚 | 24h |  |
| 65 | 1.1.11 | **支付录入** | 28d | 2018-02-06 A | 2018-03-21 |  | 47% | 14.93d | 12d |  |  |  | 120h | 56h |
| 66 | 1.1.11.1 | 支付管理前后端联调 | 2d | 2018-02-06 A | 2018-02-08 A |  | 100% |  |  |  |  | 李磊 | 16h | 16h |
| 67 | 1.1.11.2 | 支付录入查询前后端联调 | 2d | 2018-02-08 A | 2018-02-11 A | 66 | 100% |  |  |  |  | 李磊 | 16h | 16h |
| 68 | 1.1.11.3 | 整单支付前后端联调 | 1.5d | 2018-03-14 | 2018-03-15 | 109 |  |  | 5d | 0d |  | 王心洋 | 12h |  |
| 69 | 1.1.11.4 | 清单支付前后端联调 | 1d | 2018-03-15 | 2018-03-16 | 68 |  |  | 5d | 0d |  | 王心洋 | 8h |  |
| 70 | 1.1.11.5 | 支付情况统计前后端联调 | 2d | 2018-02-11 A | 2018-02-13 A | 67 | 100% |  |  |  |  | 李磊 | 16h | 16h |
| 71 | 1.1.11.6 | 支付环节校验内容调整 | 2.5d | 2018-03-16 | 2018-03-21 | 69 |  |  | 5d | 0d |  | 王心洋 | 20h |  |
| 72 | 1.1.11.7 | 双核对接 | 3d | 2018-02-24 | 2018-02-28 | 81 |  |  | 26d |  |  | 孙朋飞 | 24h |  |
| 73 | 1.1.11.8 | 支付环节单元测试 | 1d | 2018-03-08 A | 2018-03-09 A | 71 | 100% |  |  |  |  | 李磊 | 8h | 8h |
| 74 | 1.1.12 | **区域设置** | 5d | 2018-02-06 A | 2018-02-12 A |  | 100% |  |  |  |  |  | 40h | 40h |
| 75 | 1.1.12.1 | 区域设置前后端联调（前端页面开发） | 3d | 2018-02-06 A | 2018-02-09 A |  | 100% |  |  |  |  | 孙朋飞 | 24h | 24h |
| 76 | 1.1.12.2 | 区域设置校验内容调整 | 1d | 2018-02-09 A | 2018-02-11 A | 75 | 100% |  |  |  |  | 孙朋飞 | 8h | 8h |
| 77 | 1.1.12.3 | 区域设置单元测试 | 1d | 2018-02-11 A | 2018-02-12 A | 76 | 100% |  |  |  |  | 孙朋飞 | 8h | 8h |

| ID | WBS | Task | Duration | Start | Finish | Predecessors | Complete | Remaining | Total slack | Free slack | Constraint | Resources | Work | Actual work |
| --- | --- | --- | --- | --- | --- | --- | --- | --- | --- | --- | --- | --- | --- | --- |
| 78 | 1.1.13 | **流程查询** | 5d | 2018-02-12 A | 2018-02-24 A |  | 100% |  |  |  |  |  | 40h | 40h |
| 79 | 1.1.13.1 | 流程查询需求验证及调试 | 3d | 2018-02-12 A | 2018-02-22 A | 77 | 100% |  |  |  |  | 孙朋飞 | 24h | 24h |
| 80 | 1.1.13.2 | 流程查询校验内容调整 | 1d | 2018-02-22 A | 2018-02-23 A | 79 | 100% |  |  |  |  | 孙朋飞 | 8h | 8h |
| 81 | 1.1.13.3 | 流程查询单元测试 | 1d | 2018-02-23 A | 2018-02-24 A | 80 | 100% |  |  |  |  | 孙朋飞 | 8h | 8h |
| 82 | 1.1.14 | **班表管理** | 3d | 2018-02-06 A | 2018-02-09 A |  | 100% |  |  |  |  |  | 24h | 24h |
| 83 | 1.1.14.1 | 班表管理需求验证及问题调整 | 1d | 2018-02-06 A | 2018-02-07 A |  | 100% |  |  |  |  | 李文刚 | 8h | 8h |
| 84 | 1.1.14.2 | 班表管理检验内容调整 | 1d | 2018-02-07 A | 2018-02-08 A | 83 | 100% |  |  |  |  | 李文刚 | 8h | 8h |
| 85 | 1.1.14.3 | 班表管理单元测试 | 1d | 2018-02-08 A | 2018-02-09 A | 84 | 100% |  |  |  |  | 李文刚 | 8h | 8h |
| 86 | 1.1.15 | **自动理赔** | 3d | 2018-02-06 A | 2018-02-09 A |  | 100% |  |  |  |  |  | 24h | 24h |
| 87 | 1.1.15.1 | 自动理赔集成测试 | 3d | 2018-02-06 A | 2018-02-09 A |  | 100% |  |  |  |  | 王心洋 | 24h | 24h |
| 88 | 1.1.16 | **理赔打印** | 14d | 2018-02-09 A | 2018-03-06 A |  | 100% |  |  |  |  |  | 112h | 112h |
| 89 | 1.1.16.1 | 农险卷宗封面前后端联调验证 | 2d | 2018-02-09 A | 2018-02-12 A | 85 | 100% |  |  |  |  | 李文刚 | 16h | 16h |
| 90 | 1.1.16.2 | 现场查勘报告前后端联调验证 | 2d | 2018-02-12 A | 2018-02-14 A | 89 | 100% |  |  |  |  | 李文刚 | 16h | 16h |
| 91 | 1.1.16.3 | 保单抄件前后端联调验证 | 2d | 2018-02-14 A | 2018-02-23 A | 90 | 100% |  |  |  |  | 李文刚 | 16h | 16h |
| 92 | 1.1.16.4 | 结案报告前后端联调验证 | 2d | 2018-02-23 A | 2018-02-26 A | 91 | 100% |  |  |  |  | 李文刚 | 16h | 16h |
| 93 | 1.1.16.5 | 赔款理算书前后端联调验证 | 2d | 2018-02-26 A | 2018-02-28 A | 92 | 100% |  |  |  |  | 李文刚 | 16h | 16h |
| 94 | 1.1.16.6 | 赔款收据前后端联调验证 | 2d | 2018-02-28 A | 2018-03-02 A | 93 | 100% |  |  |  |  | 李文刚 | 16h | 16h |
| 95 | 1.1.16.7 | 注销拒赔通知书前后端联调验证 | 2d | 2018-03-02 A | 2018-03-06 A | 94 | 100% |  |  |  |  | 李文刚 | 16h | 16h |
| 96 | 1.1.17 | **工作流管理** | 7d | 2018-03-05 | 2018-03-14 |  |  |  | 17d |  |  |  | 56h |  |
| 97 | 1.1.17.1 | 工作流模板管理调试 | 1d | 2018-03-05 | 2018-03-06 |  |  |  | 16d | 0d | start no earlier than 2018-03-05 | 龚翔 | 8h |  |
| 98 | 1.1.17.2 | 工作流权限管理 | 1d | 2018-03-06 | 2018-03-07 | 97 |  |  | 16d | 0d |  | 龚翔 | 8h |  |
| 99 | 1.1.17.3 | 工作流模板数据区分调整 | 3d | 2018-03-07 | 2018-03-12 | 98 |  |  | 16d | 0d |  | 龚翔 | 24h |  |
| 100 | 1.1.17.4 | 单元测试 | 2d | 2018-03-12 | 2018-03-14 | 99 |  |  | 16d |  |  | 龚翔 | 16h |  |
| 101 | 1.1.18 | **并案处理** | 8d | 2018-03-12 A | 2018-03-22 |  | 40% | 4.8d | 2.5d |  |  |  | 64h | 25.6h |
| 102 | 1.1.18.1 | 并案处理需求验证及调整 | 2d | 2018-03-12 A | 2018-03-14 A | 108 | 100% |  |  |  |  | 孙朋飞 | 16h | 16h |
| 103 | 1.1.18.2 | 并案处理校验调整 | 2d | 2018-03-14 A | 2018-03-16 | 102 | 60% | 0.8d | 2.5d | 0d |  | 孙朋飞 | 16h | 9.6h |
| 104 | 1.1.18.3 | 并案处理各环节处理验证 | 2d | 2018-03-16 | 2018-03-20 | 103 |  |  | 2.5d | 0d |  | 孙朋飞 | 16h |  |
| 105 | 1.1.18.4 | 单元测试 | 2d | 2018-03-20 | 2018-03-22 | 104 |  |  | 2.5d | 0d |  | 孙朋飞 | 16h |  |

| ID | WBS | Task | Duration | Start | Finish | Predecessors | Complete | Remaining | Total slack | Free slack | Resources | Work | Actual work |
| --- | --- | --- | --- | --- | --- | --- | --- | --- | --- | --- | --- | --- | --- |
| 106 | 1.2 | **对外提供接口** | 21d | 2018-02-28 A | 2018-03-29 |  | 83% | 3.5d | 6d |  |  | 120h | 100h |
| 107 | 1.2.1 | 补充流程节点接口开发 | 5d | 2018-02-28 A | 2018-03-07 A | 72 | 100% |  |  |  | 孙朋飞 | 40h | 40h |
| 108 | 1.2.2 | 对外提供流程图展示URL开发 | 3d | 2018-03-07 A | 2018-03-12 A | 107 | 100% |  |  |  | 孙朋飞 | 24h | 24h |
| 109 | 1.2.3 | 损失清单接口封装 | 2d | 2018-03-12 A | 2018-03-14 A | 59 | 100% |  |  |  | 王心洋 | 16h | 16h |
| 110 | 1.2.4 | 预报案调度接口 | 5d | 2018-03-22 A | 2018-03-29 | 105 | 50% | 2.5d | 6d |  | 孙朋飞 | 40h | 20h |
| 111 | 1.3 | **新险种开发** | 40d | 2018-02-06 A | 2018-04-06 |  | 23% | 30.68d | 0d |  |  | 460h | 118.4h |
| 112 | 1.3.1 | **能繁母猪险种（3220）** | 10d | 2018-03-06 A | 2018-03-20 |  | 60% | 4d | 5d |  |  | 80h | 48h |
| 113 | 1.3.1.1 | 需求分析 | 2d | 2018-03-06 A | 2018-03-08 A | 33 | 100% |  |  |  | 陈道洋 | 16h | 16h |
| 114 | 1.3.1.2 | 手动导入清单 | 3d | 2018-03-08 A | 2018-03-13 A | 113 | 100% |  |  |  | 陈道洋 | 24h | 24h |
| 115 | 1.3.1.3 | 耳标号验证 | 1d | 2018-03-13 A | 2018-03-14 A | 114 | 100% |  |  |  | 陈道洋 | 8h | 8h |
| 116 | 1.3.1.4 | 赔款金额计算规则配置 | 2d | 2018-03-14 | 2018-03-16 | 115 |  |  | 4d | 0d | 陈道洋 | 16h |  |
| 117 | 1.3.1.5 | 新险种个性化 | 1d | 2018-03-16 | 2018-03-19 | 116 |  |  | 4d | 0d | 陈道洋 | 8h |  |
| 118 | 1.3.1.6 | 单元测试 | 1d | 2018-03-19 | 2018-03-20 | 117 |  |  | 4d | 0d | 陈道洋 | 8h |  |
| 119 | 1.3.2 | **河南省小麦种植保险（3107）** | 2d | 2018-03-20 | 2018-03-22 |  |  |  | 5d |  |  | 16h |  |
| 120 | 1.3.2.1 | 需求分析 | 0.5d | 2018-03-20 | 2018-03-20 | 118 |  |  | 4d | 0d | 陈道洋 | 4h |  |
| 121 | 1.3.2.2 | 赔款金额计算规则配置 | 0.5d | 2018-03-20 | 2018-03-21 | 120 |  |  | 4d | 0d | 陈道洋 | 4h |  |
| 122 | 1.3.2.3 | 单元测试 | 1d | 2018-03-21 | 2018-03-22 | 121 |  |  | 4d | 0d | 陈道洋 | 8h |  |
| 123 | 1.3.3 | **安徽省河蟹养殖物联网天气指数保险(3237)** | 3d | 2018-03-22 | 2018-03-27 |  |  |  | 5d |  |  | 24h |  |
| 124 | 1.3.3.1 | 需求分析 | 1d | 2018-03-22 | 2018-03-23 | 122 |  |  | 4d | 0d | 陈道洋 | 8h |  |
| 125 | 1.3.3.2 | 新险种个性化 | 1d | 2018-03-23 | 2018-03-26 | 124 |  |  | 4d | 0d | 陈道洋 | 8h |  |
| 126 | 1.3.3.3 | 单元测试 | 1d | 2018-03-26 | 2018-03-27 | 125 |  |  | 4d | 0d | 陈道洋 | 8h |  |
| 127 | 1.3.4 | **安徽省玉米目标价格保险(3195)** | 3d | 2018-03-27 | 2018-03-30 |  |  |  | 5d |  |  | 24h |  |
| 128 | 1.3.4.1 | 需求分析 | 1d | 2018-03-27 | 2018-03-28 | 126 |  |  | 4d | 0d | 陈道洋 | 8h |  |
| 129 | 1.3.4.2 | 新险种个性化 | 1d | 2018-03-28 | 2018-03-29 | 128 |  |  | 4d | 0d | 陈道洋 | 8h |  |
| 130 | 1.3.4.3 | 单元测试 | 1d | 2018-03-29 | 2018-03-30 | 129 |  |  | 4d |  | 陈道洋 | 8h |  |

Notes:
- 116: 需要识别养殖险和类种植险
- 121: 3107安徽的已经好了。只需调整赔偿标准

| ID | WBS | Task | Duration | Start | Finish | Predecessors | Complete | Remaining | Total slack | Free slack | Resources | Work | Actual work |
| --- | --- | --- | --- | --- | --- | --- | --- | --- | --- | --- | --- | --- | --- |
| 131 | 1.3.5 | **安徽省中央财政油菜种植保险（3108）** | 3d | 2018-03-08 A | 2018-03-13 A |  | 100% |  |  |  |  | 24h | 24h |
| 132 | 1.3.5.1 | 需求分析 | 0.5d | 2018-03-08 A | 2018-03-08 A | 58 | 100% |  |  |  | 王保良 | 4h | 4h |
| 133 | 1.3.5.2 | 赔款金额计算规则配置 | 0.5d | 2018-03-08 A | 2018-03-09 A | 132 | 100% |  |  |  | 王保良 | 4h | 4h |
| 134 | 1.3.5.3 | 新险种个性化 | 1d | 2018-03-09 A | 2018-03-12 A | 133 | 100% |  |  |  | 王保良 | 8h | 8h |
| 135 | 1.3.5.4 | 单元测试 | 1d | 2018-03-12 A | 2018-03-13 A | 134 | 100% |  |  |  | 王保良 | 8h | 8h |
| 136 | 1.3.6 | **安徽省地方财政小麦种植补充保险条款(3155)** | 3d | 2018-03-13 A | 2018-03-16 |  | 33% | 2d | 8.5d |  |  | 24h | 8h |
| 137 | 1.3.6.1 | 需求分析 | 0.5d | 2018-03-13 A | 2018-03-13 A | 135 | 100% |  |  |  | 王保良 | 4h | 4h |
| 138 | 1.3.6.2 | 赔款金额计算规则配置 | 0.5d | 2018-03-13 A | 2018-03-14 A | 137 | 100% |  |  |  | 王保良 | 4h | 4h |
| 139 | 1.3.6.3 | 新险种个性化 | 1d | 2018-03-14 | 2018-03-15 | 138 |  |  | 7.5d | 0d | 王保良 | 8h |  |
| 140 | 1.3.6.4 | 单元测试 | 1d | 2018-03-15 | 2018-03-16 | 139 |  |  | 7.5d | 0d | 王保良 | 8h |  |
| 141 | 1.3.7 | **安徽省中央财政玉米种植大灾保险条款(3162)** | 3d | 2018-03-16 | 2018-03-21 |  |  |  | 8.5d |  |  | 24h |  |
| 142 | 1.3.7.1 | 需求分析 | 0.5d | 2018-03-16 | 2018-03-16 | 140 |  |  | 7.5d | 0d | 王保良 | 4h |  |
| 143 | 1.3.7.2 | 赔款金额计算规则配置 | 0.5d | 2018-03-16 | 2018-03-19 | 142 |  |  | 7.5d | 0d | 王保良 | 4h |  |
| 144 | 1.3.7.3 | 新险种个性化 | 1d | 2018-03-19 | 2018-03-20 | 143 |  |  | 7.5d | 0d | 王保良 | 8h |  |
| 145 | 1.3.7.4 | 单元测试 | 1d | 2018-03-20 | 2018-03-21 | 144 |  |  | 7.5d | 0d | 王保良 | 8h |  |
| 146 | 1.3.8 | **河南省基础母牛养殖保险（3233）** | 3.5d | 2018-03-21 | 2018-03-26 |  |  |  | 8.5d |  |  | 28h |  |
| 147 | 1.3.8.1 | 需求分析 | 0.5d | 2018-03-21 | 2018-03-21 | 145 |  |  | 7.5d | 0d | 王保良 | 4h |  |
| 148 | 1.3.8.2 | 赔款金额计算规则配置 | 1d | 2018-03-21 | 2018-03-22 | 147 |  |  | 7.5d | 0d | 王保良 | 8h |  |
| 149 | 1.3.8.3 | 新险种个性化 | 1d | 2018-03-22 | 2018-03-23 | 148 |  |  | 7.5d | 0d | 王保良 | 8h |  |
| 150 | 1.3.8.4 | 单元测试 | 1d | 2018-03-23 | 2018-03-26 | 149 |  |  | 7.5d |  | 王保良 | 8h |  |
| 151 | 1.3.9 | **安徽省大豆目标价格保险(3198)** | 1d | 2018-02-06 | 2018-02-07 |  |  |  | 39d |  |  |  |  |
| 152 | 1.3.9.1 | 需求分析 | 1d | 2018-02-06 | 2018-02-07 |  |  |  | 38d |  |  |  |  |
| 153 | 1.3.9.2 | 新险种个性化 | 1d | 2018-02-06 | 2018-02-07 |  |  |  | 38d |  |  |  |  |
| 154 | 1.3.9.3 | 单元测试 | 1d | 2018-02-06 | 2018-02-07 |  |  |  | 38d |  |  |  |  |

Notes:
- 133: 和小麦公式一样，标准不一致
- 138: 和小麦公式一样，标准不一致
- 143: 和小麦公式一样，标准不一致
- 151: 无公式

| ID | WBS | Task | Duration | Start | Finish | Predecessors | Complete | Remaining | Total slack | Free slack | Resources | Work | Actual work |
| --- | --- | --- | --- | --- | --- | --- | --- | --- | --- | --- | --- | --- | --- |
| 155 | 1.3.10 | **安徽省玉米目标价格保险(3195)** | 1d | 2018-02-06 | 2018-02-07 |  |  |  | 39d |  |  |  |  |
| 156 | 1.3.10.1 | 需求分析 | 1d | 2018-02-06 | 2018-02-07 |  |  |  | 38d |  |  |  |  |
| 157 | 1.3.10.2 | 新险种个性化 | 1d | 2018-02-06 | 2018-02-07 |  |  |  | 38d |  |  |  |  |
| 158 | 1.3.10.3 | 单元测试 | 1d | 2018-02-06 | 2018-02-07 |  |  |  | 38d |  |  |  |  |
| 159 | 1.3.11 | **安徽省大棚草莓种植保险(3130)** | 3d | 2018-03-21 | 2018-03-26 |  |  |  | 6d |  |  | 24h |  |
| 160 | 1.3.11.1 | 需求分析 | 0.5d | 2018-03-21 | 2018-03-21 | 71 |  |  | 5d | 0d | 王心洋 | 4h |  |
| 161 | 1.3.11.2 | 赔款金额计算规则配置 | 0.5d | 2018-03-21 | 2018-03-22 | 160 |  |  | 5d | 0d | 王心洋 | 4h |  |
| 162 | 1.3.11.3 | 新险种个性化 | 1d | 2018-03-22 | 2018-03-23 | 161 |  |  | 5d | 0d | 王心洋 | 8h |  |
| 163 | 1.3.11.4 | 单元测试 | 1d | 2018-03-23 | 2018-03-26 | 162 |  |  | 5d | 0d | 王心洋 | 8h |  |
| 164 | 1.3.12 | **安徽省大棚蔬菜种植保险（A款）(3147)** | 3d | 2018-03-26 | 2018-03-29 |  |  |  | 6d |  |  | 24h |  |
| 165 | 1.3.12.1 | 需求分析 | 0.5d | 2018-03-26 | 2018-03-26 | 163 |  |  | 5d | 0d | 王心洋 | 4h |  |
| 166 | 1.3.12.2 | 赔款金额计算规则配置 | 0.5d | 2018-03-26 | 2018-03-27 | 165 |  |  | 5d | 0d | 王心洋 | 4h |  |
| 167 | 1.3.12.3 | 新险种个性化 | 1d | 2018-03-27 | 2018-03-28 | 166 |  |  | 5d | 0d | 王心洋 | 8h |  |
| 168 | 1.3.12.4 | 单元测试 | 1d | 2018-03-28 | 2018-03-29 | 167 |  |  | 5d |  | 王心洋 | 8h |  |
| 169 | 1.3.13 | **贵州省地方财政大棚蔬菜种植保险(3141)** | 5d | 2018-03-08 A | 2018-03-15 |  | 96% | 0.2d | 0d |  |  | 40h | 38.4h |
| 170 | 1.3.13.1 | 需求分析 | 1d | 2018-03-08 A | 2018-03-09 A | 53 | 100% |  |  |  | 王志文 | 8h | 8h |
| 171 | 1.3.13.2 | 赔款金额计算规则配置 | 2d | 2018-03-09 A | 2018-03-13 A | 170 | 100% |  |  |  | 王志文 | 16h | 16h |
| 172 | 1.3.13.3 | 新险种个性化 | 1d | 2018-03-13 A | 2018-03-14 A | 171 | 100% |  |  |  | 王志文 | 8h | 8h |
| 173 | 1.3.13.4 | 单元测试 | 1d | 2018-03-14 A | 2018-03-15 | 172 | 80% | 0.2d | 0d |  | 王志文 | 8h | 6.4h |
| 174 | 1.3.14 | **安徽省淡水养殖（鱼）保险(3224)** | 4d | 2018-03-15 | 2018-03-21 |  |  |  | 0d |  |  | 32h |  |
| 175 | 1.3.14.1 | 需求分析 | 0.5d | 2018-03-15 | 2018-03-15 | 173 |  |  | 0d |  | 王志文 | 4h |  |
| 176 | 1.3.14.2 | 赔款金额计算规则配置 | 1.5d | 2018-03-15 | 2018-03-19 | 175 |  |  | 0d |  | 王志文 | 12h |  |
| 177 | 1.3.14.3 | 新险种个性化 | 1d | 2018-03-19 | 2018-03-20 | 176 |  |  | 0d |  | 王志文 | 8h |  |
| 178 | 1.3.14.4 | 单元测试 | 1d | 2018-03-20 | 2018-03-21 | 177 |  |  | 0d |  | 王志文 | 8h |  |

Notes:
- 155: 无公式
- 161: 多标的公式-3141
- 166: 3141公式兼容
- 171: 多标的公式,公式差异大
- 176: 公式差异大并且需要扩展公式配置

| ID | WBS | Task | Duration | Start | Finish | Predecessors | Total slack | Resources | Work |
| --- | --- | --- | --- | --- | --- | --- | --- | --- | --- |
| 179 | 1.3.15 | **安徽省大棚蔬菜种植保险（B款）(3141)** | 2d | 2018-03-21 | 2018-03-23 |  | 0d |  | 16h |
| 180 | 1.3.15.1 | 需求分析 | 0.5d | 2018-03-21 | 2018-03-21 | 178 | 0d | 王志文 | 4h |
| 181 | 1.3.15.2 | 赔款金额计算规则配置 | 0.5d | 2018-03-21 | 2018-03-22 | 180 | 0d | 王志文 | 4h |
| 182 | 1.3.15.3 | 单元测试 | 1d | 2018-03-22 | 2018-03-23 | 181 | 0d | 王志文 | 8h |
| 183 | 1.3.16 | **河南省大棚蔬菜种植保险（B款）(3141)** | 1.5d | 2018-03-23 | 2018-03-26 |  | 0d |  | 12h |
| 184 | 1.3.16.1 | 赔款金额计算规则配置 | 0.5d | 2018-03-23 | 2018-03-23 | 182 | 0d | 王志文 | 4h |
| 185 | 1.3.16.2 | 单元测试 | 1d | 2018-03-23 | 2018-03-26 | 184 | 0d | 王志文 | 8h |
| 186 | 1.3.17 | **湖北省大棚蔬菜种植保险（B款）(3141)** | 1.5d | 2018-03-26 | 2018-03-28 |  | 0d |  | 12h |
| 187 | 1.3.17.1 | 赔款金额计算规则配置 | 0.5d | 2018-03-26 | 2018-03-27 | 185 | 0d | 王志文 | 4h |
| 188 | 1.3.17.2 | 单元测试 | 1d | 2018-03-27 | 2018-03-28 | 187 | 0d | 王志文 | 8h |
| 189 | 1.3.18 | **湖北省蔬菜（露地型）种植保险(3134)** | 3d | 2018-03-28 | 2018-04-02 |  | 0d |  | 24h |
| 190 | 1.3.18.1 | 需求分析 | 0.5d | 2018-03-28 | 2018-03-28 | 188 | 0d | 王志文 | 4h |
| 191 | 1.3.18.2 | 赔款金额计算规则配置 | 0.5d | 2018-03-28 | 2018-03-29 | 190 | 0d | 王志文 | 4h |
| 192 | 1.3.18.3 | 新险种个性化 | 1d | 2018-03-29 | 2018-03-30 | 191 | 0d | 王志文 | 8h |
| 193 | 1.3.18.4 | 单元测试 | 1d | 2018-03-30 | 2018-04-02 | 192 | 0d | 王志文 | 8h |
| 194 | 1.3.19 | **草莓种植小额信贷组合保险(3129)** | 4d | 2018-04-02 | 2018-04-06 |  | 0d |  | 32h |
| 195 | 1.3.19.1 | 需求分析 | 1d | 2018-04-02 | 2018-04-03 | 193 | 0d | 王志文 | 8h |
| 196 | 1.3.19.2 | 赔款金额计算规则配置 | 1d | 2018-04-03 | 2018-04-04 | 195 | 0d | 王志文 | 8h |
| 197 | 1.3.19.3 | 新险种个性化 | 1d | 2018-04-04 | 2018-04-05 | 196 | 0d | 王志文 | 8h |
| 198 | 1.3.19.4 | 单元测试 | 1d | 2018-04-05 | 2018-04-06 | 197 | 0d | 王志文 | 8h |

Notes:
- 191: 3141公式兼容
- 194: 计划暂定
- 196: 需要需求确认公式
