Schedule from MS Project, 2018-02-06 to 2018-03-30, A marks actual dates.
Microsoft

## Calendars

- 标准: Mon-Fri 08:00-12:00, 13:00-17:00; Sat-Sun off. Exceptions (off unless hours are given): 2018-02-11 08:00-12:00, 13:00-17:00 (春节补班), 2018-02-15 to 2018-02-21 (春节放假), 2018-02-24 08:00-12:00, 13:00-17:00 (春节补班).

## Resources

| Resource |
| --- |
| 王保良 |
| 王道洋 |
| 陈道洋 |
| 王志文 |
| 孙朋飞 |
| 李文刚 |
| 王心洋 |
| 李磊 |
| 戴旭等三个人 |

## Schedule

| ID | WBS | Task | Duration | Start | Finish | Predecessors | Complete | Remaining | Total slack | Free slack | Constraint | Resources | Work | Actual work |
| --- | --- | --- | --- | --- | --- | --- | --- | --- | --- | --- | --- | --- | --- | --- |
| 1 | 1 | **理赔系统联调工作** | 26d | 2018-02-06 A | 2018-03-19 |  | 16% | 21.76d | 9d |  |  |  | 992h | 159.2h |
| 2 | 1.1 | **首页** | 5d | 2018-02-07 A | 2018-02-13 |  | 40% | 3d | 29d |  |  |  | 40h | 16h |
| 3 | 1.1.1 | 快捷操作配置及展示联调 | 0.5d | 2018-02-07 A | 2018-02-07 A |  | 100% |  |  |  | start no earlier than 2018-02-07 | 王保良 | 4h | 4h |
| 4 | 1.1.2 | 机构切换联动菜单 | 0.5d | 2018-02-07 A | 2018-02-08 A | 3 | 100% |  |  |  |  | 王保良 | 4h | 4h |
| 5 | 1.1.3 | 机构切换联动待处理数字显示 | 1d | 2018-02-08 | 2018-02-09 | 4 |  |  | 31d | 0d |  | 王保良 | 8h |  |
| 6 | 1.1.4 | 机构切换联动待处理数据列表 | 1d | 2018-02-09 | 2018-02-11 | 5 |  |  | 31d |  |  | 王保良 | 8h |  |
| 7 | 1.1.5 | 个人信息查看及修改联调 | 1d | 2018-02-11 A | 2018-02-12 A | 6 | 100% |  |  |  | start no earlier than 2018-02-06 | 王保良 | 8h | 8h |
| 8 | 1.1.6 | 首页功能单元测试 | 1d | 2018-02-12 | 2018-02-13 | 7 |  |  | 16d | 0d |  | 王保良 | 8h |  |
| 9 | 1.2 | **报案环节** | 3d | 2018-02-13 | 2018-02-23 |  |  |  | 16d |  |  |  | 24h |  |
| 10 | 1.2.1 | 报案登记需求验证及调整 | 1d | 2018-02-13 | 2018-02-14 | 8 |  |  | 16d | 0d |  | 王保良 | 8h |  |
| 11 | 1.2.2 | 报案环节校验内容调试 | 1d | 2018-02-14 | 2018-02-22 | 10 |  |  | 16d | 0d |  | 王保良 | 8h |  |
| 12 | 1.2.3 | 报案环节单元测试 | 1d | 2018-02-22 | 2018-02-23 | 11 |  |  | 16d | 0d |  | 王保良 | 8h |  |
| 13 | 1.3 | **调度环节** | 5d | 2018-02-23 | 2018-03-01 |  |  |  | 16d |  |  |  | 40h |  |
| 14 | 1.3.1 | 调度环节需求验证及调整 | 1d | 2018-02-23 | 2018-02-24 | 12 |  |  | 16d | 0d |  | 王保良 | 8h |  |
| 15 | 1.3.2 | 调度环节校验内容调整 | 1d | 2018-02-24 | 2018-02-26 | 14 |  |  | 16d | 0d |  | 王保良 | 8h |  |
| 16 | 1.3.3 | 发起调查接口对接 | 2d | 2018-02-26 | 2018-02-28 | 15 |  |  | 16d | 0d | start no earlier than 2018-02-06 | 王保良 | 16h |  |
| 17 | 1.3.4 | 调度环节单元测试 | 1d | 2018-02-28 | 2018-03-01 | 16 |  |  | 16d | 0d |  | 王保良 | 8h |  |
| 18 | 1.4 | **查勘定损** | 5d | 2018-02-07 A | 2018-02-13 |  | 20% | 4d | 22d |  |  |  | 40h | 8h |
| 19 | 1.4.1 | 查勘定损需求验证及调整 | 1d | 2018-02-07 A | 2018-02-08 A |  | 100% |  |  |  | start no earlier than 2018-02-07 | 陈道洋 | 8h | 8h |
| 20 | 1.4.2 | 关联清单功能联调 | 1d | 2018-02-08 | 2018-02-09 | 19 |  |  | 22d | 0d |  | 陈道洋 | 8h |  |
| 21 | 1.4.3 | 定损清单下载功能联调 | 1d | 2018-02-09 | 2018-02-11 | 20 |  |  | 22d | 0d |  | 陈道洋 | 8h |  |
| 22 | 1.4.4 | 查勘定损校验内容调试 | 1d | 2018-02-11 | 2018-02-12 | 21 |  |  | 22d | 0d |  | 陈道洋 | 8h |  |
| 23 | 1.4.5 | 查勘定损环节单元测试 | 1d | 2018-02-12 | 2018-02-13 | 22 |  |  | 22d | 0d |  | 陈道洋 | 8h |  |
| 24 | 1.5 | **立案环节** | 13d | 2018-02-06 A | 2018-02-28 |  | 22% | 10.11d | 22d |  |  |  | 72h | 16h |
| 25 | 1.5.1 | 立案环节流程调试 | 2d | 2018-02-06 A | 2018-02-08 A |  | 100% |  |  |  |  | 王志文 | 16h | 16h |
| 26 | 1.5.2 | 立案环节需求验证及调试 | 1d | 2018-02-13 | 2018-02-14 | 23 |  |  | 22d | 0d |  | 陈道洋 | 8h |  |
| 27 | 1.5.3 | 立案环节校验内容调整 | 1d | 2018-02-14 | 2018-02-22 | 26 |  |  | 22d | 0d |  | 陈道洋 | 8h |  |
| 28 | 1.5.4 | 关联清单功能联调 | 0.5d | 2018-02-22 | 2018-02-22 | 27 |  |  | 22d | 0d |  | 陈道洋 | 4h |  |
| 29 | 1.5.5 | 定损清单下载功能联调 | 0.5d | 2018-02-22 | 2018-02-23 | 28 |  |  | 22d | 0d |  | 陈道洋 | 4h |  |
| 30 | 1.5.6 | 自动立案功能测试及问题修改 | 3d | 2018-02-23 | 2018-02-27 | 29 |  |  | 22d | 0d |  | 陈道洋 | 24h |  |
| 31 | 1.5.7 | 立案环节单元测试 | 1d | 2018-02-27 | 2018-02-28 | 30 |  |  | 22d |  |  | 陈道洋 | 8h |  |

Notes:
- 16: 金禾接口若无法提供，则任务延后.

| ID | WBS | Task | Duration | Start | Finish | Predecessors | Complete | Remaining | Total slack | Free slack | Resources | Work | Actual work |
| --- | --- | --- | --- | --- | --- | --- | --- | --- | --- | --- | --- | --- | --- |
| 32 | 1.6 | **特殊赔案** | 6d | 2018-02-09 | 2018-02-23 |  |  |  | 9d |  |  | 48h |  |
| 33 | 1.6.1 | 特殊赔案环节需求验证及调试 | 1d | 2018-02-09 | 2018-02-11 | 83 |  |  | 9d | 0d | 王心洋 | 8h |  |
| 34 | 1.6.2 | 特殊赔案环节校验内容调整 | 1d | 2018-02-11 | 2018-02-12 | 33 |  |  | 9d | 0d | 王心洋 | 8h |  |
| 35 | 1.6.3 | 特殊赔案流程调试 | 1d | 2018-02-12 | 2018-02-13 | 34 |  |  | 9d | 0d | 王心洋 | 8h |  |
| 36 | 1.6.4 | 特殊赔案清单功能验证及调试 | 1d | 2018-02-13 | 2018-02-14 | 35 |  |  | 9d | 0d | 王心洋 | 8h |  |
| 37 | 1.6.5 | 特殊赔案双核对接 | 1d | 2018-02-14 | 2018-02-22 | 36 |  |  | 9d | 0d | 王心洋 | 8h |  |
| 38 | 1.6.6 | 特殊赔案单元测试 | 1d | 2018-02-22 | 2018-02-23 | 37 |  |  | 9d | 0d | 王心洋 | 8h |  |
| 39 | 1.7 | **理算环节** | 11d | 2018-02-08 A | 2018-02-28 |  | 5% | 10.5d | 10d |  |  | 88h | 4h |
| 40 | 1.7.1 | 计算书需求验证及调试 | 1d | 2018-02-08 A | 2018-02-09 | 25 | 50% | 0.5d | 10d | 0d | 王志文 | 8h | 4h |
| 41 | 1.7.2 | 计算书校验内容调整 | 1d | 2018-02-09 | 2018-02-11 | 40 |  |  | 10d | 0d | 王志文 | 8h |  |
| 42 | 1.7.3 | 关联清单功能验证 | 1d | 2018-02-11 | 2018-02-12 | 41 |  |  | 10d | 0d | 王志文 | 8h |  |
| 43 | 1.7.4 | 理赔清单功能验证 | 2d | 2018-02-12 | 2018-02-14 | 42 |  |  | 10d | 0d | 王志文 | 16h |  |
| 44 | 1.7.5 | 清单下载功能验证 | 1d | 2018-02-14 | 2018-02-22 | 43 |  |  | 10d | 0d | 王志文 | 8h |  |
| 45 | 1.7.6 | 共保赔款计算功能验证 | 1d | 2018-02-22 | 2018-02-23 | 44 |  |  | 10d | 0d | 王志文 | 8h |  |
| 46 | 1.7.7 | 金额汇总计算功能验证 | 1d | 2018-02-23 | 2018-02-24 | 45 |  |  | 10d | 0d | 王志文 | 8h |  |
| 47 | 1.7.8 | 双核对接 | 2d | 2018-02-24 | 2018-02-27 | 46 |  |  | 10d | 0d | 王志文 | 16h |  |
| 48 | 1.7.9 | 理算环节单元测试 | 1d | 2018-02-27 | 2018-02-28 | 47 |  |  | 10d | 0d | 王志文 | 8h |  |
| 49 | 1.8 | **双核核赔** | 3d | 2018-02-28 | 2018-03-05 |  |  |  | 10d |  |  | 24h |  |
| 50 | 1.8.1 | 理赔对接 | 3d | 2018-02-28 | 2018-03-05 | 48 |  |  | 10d | 0d | 王志文 | 24h |  |
| 51 | 1.9 | **结案环节** | 5d | 2018-03-01 | 2018-03-08 |  |  |  | 16d |  |  | 40h |  |
| 52 | 1.9.1 | 结案功能需求验证及调试 | 1d | 2018-03-01 | 2018-03-02 | 17 |  |  | 16d | 0d | 王保良 | 8h |  |
| 53 | 1.9.2 | 结案功能验证内容调整 | 1d | 2018-03-02 | 2018-03-05 | 52 |  |  | 16d | 0d | 王保良 | 8h |  |
| 54 | 1.9.3 | 自动结案功能验证 | 2d | 2018-03-05 | 2018-03-07 | 53 |  |  | 16d | 0d | 王保良 | 16h |  |
| 55 | 1.9.4 | 结案环节单元测试 | 1d | 2018-03-07 | 2018-03-08 | 54 |  |  | 16d |  | 王保良 | 8h |  |

| ID | WBS | Task | Duration | Start | Finish | Predecessors | Complete | Remaining | Total slack | Free slack | Resources | Work | Actual work |
| --- | --- | --- | --- | --- | --- | --- | --- | --- | --- | --- | --- | --- | --- |
| 56 | 1.10 | **重开赔案** | 5d | 2018-02-23 | 2018-03-01 |  |  |  | 9d |  |  | 40h |  |
| 57 | 1.10.1 | 重开赔案需求验证及调试 | 1d | 2018-02-23 | 2018-02-24 | 38 |  |  | 9d | 0d | 王心洋 | 8h |  |
| 58 | 1.10.2 | 重开赔案校验功能调整 | 1d | 2018-02-24 | 2018-02-26 | 57 |  |  | 9d | 0d | 王心洋 | 8h |  |
| 59 | 1.10.3 | 双核对接 | 2d | 2018-02-26 | 2018-02-28 | 58 |  |  | 9d | 0d | 王心洋 | 16h |  |
| 60 | 1.10.4 | 重开赔案单元测试 | 1d | 2018-02-28 | 2018-03-01 | 59 |  |  | 9d | 0d | 王心洋 | 8h |  |
| 61 | 1.11 | **支付录入** | 21d | 2018-02-06 A | 2018-03-12 |  | 31% | 14.4d | 14d |  |  | 112h | 35.2h |
| 62 | 1.11.1 | 支付管理前后端联调 | 2d | 2018-02-06 A | 2018-02-08 A |  | 100% |  |  |  | 李磊 | 16h | 16h |
| 63 | 1.11.2 | 支付录入查询前后端联调 | 2d | 2018-02-08 A | 2018-02-11 A | 62 | 100% |  |  |  | 李磊 | 16h | 16h |
| 64 | 1.11.3 | 整单支付前后端联调 | 1d | 2018-03-05 | 2018-03-06 | 50 |  |  | 10d | 0d | 王志文 | 8h |  |
| 65 | 1.11.4 | 清单支付前后端联调 | 1d | 2018-03-06 | 2018-03-07 | 64 |  |  | 10d | 0d | 王志文 | 8h |  |
| 66 | 1.11.5 | 支付情况统计前后端联调 | 2d | 2018-02-11 A | 2018-02-13 | 63 | 20% | 1.6d | 29d |  | 李磊 | 16h | 3.2h |
| 67 | 1.11.6 | 支付环节校验内容调整 | 2d | 2018-03-07 | 2018-03-09 | 65 |  |  | 10d | 0d | 王志文 | 16h |  |
| 68 | 1.11.7 | 双核对接 | 3d | 2018-02-24 | 2018-02-28 | 77 |  |  | 12d | 0d | 孙朋飞 | 24h |  |
| 69 | 1.11.8 | 支付环节单元测试 | 1d | 2018-03-09 | 2018-03-12 | 67 |  |  | 14d |  | 李磊 | 8h |  |
| 70 | 1.12 | **区域设置** | 5d | 2018-02-06 A | 2018-02-12 |  | 60% | 2d | 27d |  |  | 40h | 24h |
| 71 | 1.12.1 | 区域设置前后端联调（前端页面开发） | 3d | 2018-02-06 A | 2018-02-09 A |  | 100% |  |  |  | 孙朋飞 | 24h | 24h |
| 72 | 1.12.2 | 区域设置校验内容调整 | 1d | 2018-02-09 | 2018-02-11 | 71 |  |  | 27d | 0d | 孙朋飞 | 8h |  |
| 73 | 1.12.3 | 区域设置单元测试 | 1d | 2018-02-11 | 2018-02-12 | 72 |  |  | 27d | 0d | 孙朋飞 | 8h |  |
| 74 | 1.13 | **流程查询** | 5d | 2018-02-12 A | 2018-02-24 |  | 20% | 4d | 25d |  |  | 40h | 8h |
| 75 | 1.13.1 | 流程查询需求验证及调试 | 3d | 2018-02-12 | 2018-02-22 | 73 |  |  | 27d |  | 孙朋飞 | 24h |  |
| 76 | 1.13.2 | 流程查询校验内容调整 | 1d | 2018-02-22 A | 2018-02-23 A | 75 | 100% |  |  |  | 孙朋飞 | 8h | 8h |
| 77 | 1.13.3 | 流程查询单元测试 | 1d | 2018-02-23 | 2018-02-24 | 76 |  |  | 12d | 0d | 孙朋飞 | 8h |  |
| 78 | 1.14 | **班表管理** | 3d | 2018-02-06 A | 2018-02-09 A |  | 100% |  |  |  |  | 24h | 24h |
| 79 | 1.14.1 | 班表管理需求验证及问题调整 | 1d | 2018-02-06 A | 2018-02-07 A |  | 100% |  |  |  | 李文刚 | 8h | 8h |
| 80 | 1.14.2 | 班表管理检验内容调整 | 1d | 2018-02-07 A | 2018-02-08 A | 79 | 100% |  |  |  | 李文刚 | 8h | 8h |
| 81 | 1.14.3 | 班表管理单元测试 | 1d | 2018-02-08 A | 2018-02-09 A | 80 | 100% |  |  |  | 李文刚 | 8h | 8h |

Notes:
- 71: 缺少一个下拉多选框的前端方案

| ID | WBS | Task | Duration | Start | Finish | Predecessors | Complete | Total slack | Free slack | Constraint | Resources | Work | Actual work |
| --- | --- | --- | --- | --- | --- | --- | --- | --- | --- | --- | --- | --- | --- |
| 82 | 1.15 | **自动理赔** | 3d | 2018-02-06 A | 2018-02-09 A |  | 100% |  |  |  |  | 24h | 24h |
| 83 | 1.15.1 | 自动理赔集成测试 | 3d | 2018-02-06 A | 2018-02-09 A |  | 100% |  |  |  | 王心洋 | 24h | 24h |
| 84 | 1.16 | **理赔打印** | 14d | 2018-02-09 | 2018-03-06 |  |  | 18d |  |  |  | 112h |  |
| 85 | 1.16.1 | 农险卷宗封面前后端联调验证 | 2d | 2018-02-09 | 2018-02-12 | 81 |  | 18d | 0d |  | 李文刚 | 16h |  |
| 86 | 1.16.2 | 现场查勘报告前后端联调验证 | 2d | 2018-02-12 | 2018-02-14 | 85 |  | 18d | 0d |  | 李文刚 | 16h |  |
| 87 | 1.16.3 | 保单抄件前后端联调验证 | 2d | 2018-02-14 | 2018-02-23 | 86 |  | 18d | 0d |  | 李文刚 | 16h |  |
| 88 | 1.16.4 | 结案报告前后端联调验证 | 2d | 2018-02-23 | 2018-02-26 | 87 |  | 18d | 0d |  | 李文刚 | 16h |  |
| 89 | 1.16.5 | 赔款理算书前后端联调验证 | 2d | 2018-02-26 | 2018-02-28 | 88 |  | 18d | 0d |  | 李文刚 | 16h |  |
| 90 | 1.16.6 | 赔款收据前后端联调验证 | 2d | 2018-02-28 | 2018-03-02 | 89 |  | 18d | 0d |  | 李文刚 | 16h |  |
| 91 | 1.16.7 | 注销拒赔通知书前后端联调验证 | 2d | 2018-03-02 | 2018-03-06 | 90 |  | 18d |  |  | 李文刚 | 16h |  |
| 92 | 1.17 | **工作流管理** | 11d | 2018-03-02 | 2018-03-19 |  |  | 9d |  |  |  | 88h |  |
| 93 | 1.17.1 | 工作流模板管理调试 | 3d | 2018-03-02 | 2018-03-07 | 105 |  | 9d | 0d |  | 王心洋 | 24h |  |
| 94 | 1.17.2 | 工作流权限管理 | 2d | 2018-03-07 | 2018-03-09 | 93 |  | 9d | 0d |  | 王心洋 | 16h |  |
| 95 | 1.17.3 | 工作流模板数据区分调整 | 4d | 2018-03-09 | 2018-03-15 | 94 |  | 9d | 0d |  | 王心洋 | 32h |  |
| 96 | 1.17.4 | 单元测试 | 2d | 2018-03-15 | 2018-03-19 | 95 |  | 9d |  |  | 王心洋 | 16h |  |
| 97 | 1.18 | **并案处理** | 7d | 2018-03-07 | 2018-03-16 |  |  | 10d |  |  |  | 96h |  |
| 98 | 1.18.1 | 并案处理需求验证及调整 | 3d | 2018-03-07 | 2018-03-12 | 104 |  | 12d | 0d |  | 孙朋飞 | 24h |  |
| 99 | 1.18.2 | 并案处理校验调整 | 2d | 2018-03-12 | 2018-03-14 | 98 |  | 12d |  |  | 孙朋飞 | 16h |  |
| 100 | 1.18.3 | 并案处理各环节处理验证 | 3d | 2018-03-09 | 2018-03-14 | 67 |  | 10d | 0d |  | 王志文 | 24h |  |
| 101 | 1.18.4 | 单元测试 | 2d | 2018-03-14 | 2018-03-16 | 100 |  | 10d |  |  | 王志文; 孙朋飞 | 32h |  |
| 102 | 2 | **对外提供接口** | 5d | 2018-02-28 | 2018-03-07 |  |  | 10d |  |  |  | 48h |  |
| 103 | 2.1 | 补充流程节点接口开发 | 3d | 2018-02-28 | 2018-03-05 | 68 |  | 12d | 0d |  | 孙朋飞 | 24h |  |
| 104 | 2.2 | 对外提供流程图展示URL开发 | 2d | 2018-03-05 | 2018-03-07 | 103 |  | 12d | 0d |  | 孙朋飞 | 16h |  |
| 105 | 2.3 | 损失清单接口封装 | 1d | 2018-03-01 | 2018-03-02 | 60 |  | 9d | 0d |  | 王心洋 | 8h |  |
| 106 | 3 | 理赔系统测试环节 | 28d | 2018-02-14 | 2018-03-30 |  |  | 0d |  | start no earlier than 2018-02-14 | 戴旭等三个人 | 224h |  |
