# 新一代农险种工作计划v0.9

Schedule from MS Project, 2017-09-25 to 2018-03-30, A marks actual dates.

## Calendars

- 标准: Mon-Fri 08:00-12:00, 13:00-17:00; Sat-Sun off. Exceptions (off unless hours are given): 2017-09-30 08:00-12:00, 13:00-17:00, 2017-12-31 08:00-12:00, 13:00-17:00.

## Resources

| Resource |
| --- |
| 何伟东 |
| 李东松 |
| 陈道洋 |
| 宋振振 |
| 田健 |
| 王心洋 |
| 任斌 |
| 董坤 |
| 汪耀仁 |
| 钱浩 |
| 王保良 |
| 潘峰 |
| 祁小龙 |
| 尹凯锋 |
| 王欢 |
| 沈士威 |
| 周欢 |
| 郭靖 |
| 王柏 |
| 杨昆 |
| 汪钊 |
| 杨成程 |
| 梁耀泽 |
| 马俊玲 |
| 陈晓慧 |
| 安齐崇 |
| 王志伟 |
| 张茵 |
| 金美兰 |
| 姜燕 |
| 李晶 |
| 杨航 |
| 倪大章 |
| 童兴辉 |
| 李斌 |
| 胡世界 |
| 王爽 |
| 尹健辉 |
| 邓晓辉 |
| 陈澎 |

## Schedule

| ID | WBS | Task | Duration | Start | Finish | Predecessors | Complete | Remaining | Total slack | Free slack | Constraint | Resources | Work | Actual work |
| --- | --- | --- | --- | --- | --- | --- | --- | --- | --- | --- | --- | --- | --- | --- |
| 1 | 1 | 项目启动 | 1d? | 2017-09-25 | 2017-09-25 |  |  |  | 136d |  | start no earlier than 2017-09-25 |  |  |  |
| 2 | 2 | **需求** | 21d? | 2017-09-26 A | 2017-10-23 |  | 5% | 19.97d? | 115d |  |  | 姜燕; 张茵; 李晶 | 2016h | 93.68h |
| 3 | 2.1 | **需求访谈** | 19.5d | 2017-09-26 A | 2017-10-20 |  | 5% | 18.56d | 116.5d |  |  | 张茵 | 784h | 30.55h |
| 4 | 2.1.1 | **页面展示访谈** | 1d | 2017-09-26 A | 2017-09-26 A |  | 100% |  |  |  |  | 张茵 | 24h | 24h |
| 5 | 2.1.1.1 | 页面风格访谈 | 1d | 2017-09-26 A | 2017-09-26 A |  | 100% |  |  |  |  | 张茵 | 8h | 8h |
| 6 | 2.1.1.2 | 页面交互访谈 | 1d | 2017-09-26 A | 2017-09-26 A |  | 100% |  |  |  |  | 张茵 | 8h | 8h |
| 7 | 2.1.2 | **系统功能访谈** | 8.5d | 2017-10-10 | 2017-10-20 |  |  |  | 116.5d |  |  | 姜燕 | 604h |  |
| 8 | 2.1.2.1 | **承保系统** | 5.5d | 2017-10-10 | 2017-10-17 |  |  |  | 116.5d |  |  | 姜燕 | 360h |  |
| 9 | 2.1.2.1.1 | **子流程访谈** | 4.5d | 2017-10-10 | 2017-10-16 |  |  |  | 116.5d |  |  | 姜燕 | 284h |  |
| 10 | 2.1.2.1.1.1 | **投保流程** | 2d | 2017-10-10 | 2017-10-11 |  |  |  | 116.5d |  |  | 姜燕 | 40h |  |
| 11 | 2.1.2.1.1.1.1 | 流程图访谈 | 1d | 2017-10-10 | 2017-10-10 |  |  |  | 116.5d | 0d | start no earlier than 2017-10-10 | 姜燕 | 8h |  |
| 12 | 2.1.2.1.1.1.2 | 页面要素访谈 | 1d | 2017-10-11 | 2017-10-11 | 11 |  |  | 123d |  |  | 姜燕 | 8h |  |
| 13 | 2.1.2.1.1.1.3 | 业务规则访谈 | 1d | 2017-10-11 | 2017-10-11 | 11 |  |  | 116.5d | 0d | start no earlier than 2017-09-27 | 姜燕 | 8h |  |
| 14 | 2.1.2.1.1.2 | **共保业务流程** | 0.5d | 2017-10-12 | 2017-10-12 |  |  |  | 116.5d |  |  | 姜燕 | 16h |  |
| 15 | 2.1.2.1.1.2.1 | 流程图访谈 | 0.5d | 2017-10-12 | 2017-10-12 | 13 |  |  | 122.5d |  | start no earlier than 2017-09-28 | 姜燕 | 4h |  |
| 16 | 2.1.2.1.1.2.2 | 页面要素访谈 | 0.5d | 2017-10-12 | 2017-10-12 | 13 |  |  | 122.5d |  | start no earlier than 2017-09-28 | 姜燕 | 4h |  |
| 17 | 2.1.2.1.1.2.3 | 业务规则访谈 | 0.5d | 2017-10-12 | 2017-10-12 | 13 |  |  | 116.5d | 0d | start no earlier than 2017-09-28 | 姜燕 | 4h |  |
| 18 | 2.1.2.1.1.3 | **批改流程** | 1d | 2017-10-12 | 2017-10-13 |  |  |  | 116.5d |  |  | 姜燕 | 32h |  |
| 19 | 2.1.2.1.1.3.1 | 流程图访谈 | 1d | 2017-10-12 | 2017-10-13 | 17 |  |  | 121.5d |  | finish no earlier than 2017-09-29 | 姜燕 | 8h |  |
| 20 | 2.1.2.1.1.3.2 | 页面要素访谈 | 1d | 2017-10-12 | 2017-10-13 | 17 |  |  | 121.5d |  | finish no earlier than 2017-09-29 | 姜燕 | 8h |  |
| 21 | 2.1.2.1.1.3.3 | 业务规则访谈 | 1d | 2017-10-12 | 2017-10-13 | 17 |  |  | 116.5d | 0d | finish no earlier than 2017-09-29 | 姜燕 | 8h |  |
| 22 | 2.1.2.1.1.4 | **短信提醒业务流程** | 1d | 2017-10-13 | 2017-10-16 |  |  |  | 120.5d |  |  | 姜燕 | 32h |  |
| 23 | 2.1.2.1.1.4.1 | 流程图访谈 | 1d | 2017-10-13 | 2017-10-16 | 21 |  |  | 120.5d |  | start no earlier than 2017-09-30 | 姜燕 | 8h |  |
| 24 | 2.1.2.1.1.4.2 | 页面要素访谈 | 1d | 2017-10-13 | 2017-10-16 | 21 |  |  | 120.5d |  | start no earlier than 2017-09-30 | 姜燕 | 8h |  |
| 25 | 2.1.2.1.1.4.3 | 业务规则访谈 | 1d | 2017-10-13 | 2017-10-16 | 21 |  |  | 120.5d |  | start no earlier than 2017-09-30 | 姜燕 | 8h |  |

| ID | WBS | Task | Duration | Start | Finish | Predecessors | Total slack | Free slack | Constraint | Resources | Work |
| --- | --- | --- | --- | --- | --- | --- | --- | --- | --- | --- | --- |
| 26 | 2.1.2.1.1.5 | **业务清单查询流程** | 1d | 2017-10-13 | 2017-10-16 |  | 120.5d |  |  | 姜燕 | 32h |
| 27 | 2.1.2.1.1.5.1 | 流程图访谈 | 1d | 2017-10-13 | 2017-10-16 | 21 | 120.5d |  | start no earlier than 2017-09-30 | 姜燕 | 8h |
| 28 | 2.1.2.1.1.5.2 | 页面要素访谈 | 1d | 2017-10-13 | 2017-10-16 | 21 | 120.5d |  | start no earlier than 2017-09-30 | 姜燕 | 8h |
| 29 | 2.1.2.1.1.5.3 | 业务规则访谈 | 1d | 2017-10-13 | 2017-10-16 | 21 | 120.5d |  | start no earlier than 2017-09-30 | 姜燕 | 8h |
| 30 | 2.1.2.1.1.6 | **单证打印流程** | 1d | 2017-10-13 | 2017-10-16 |  | 120.5d |  |  | 姜燕 | 32h |
| 31 | 2.1.2.1.1.6.1 | 流程图访谈 | 1d | 2017-10-13 | 2017-10-16 | 21 | 120.5d |  | start no earlier than 2017-10-09 | 姜燕 | 8h |
| 32 | 2.1.2.1.1.6.2 | 页面要素访谈 | 1d | 2017-10-13 | 2017-10-16 | 21 | 120.5d |  | start no earlier than 2017-10-09 | 姜燕 | 8h |
| 33 | 2.1.2.1.1.6.3 | 业务规则访谈 | 1d | 2017-10-13 | 2017-10-16 | 21 | 120.5d |  | start no earlier than 2017-10-09 | 姜燕 | 8h |
| 34 | 2.1.2.1.1.7 | **影像资料流程** | 1d | 2017-10-13 | 2017-10-16 |  | 120.5d |  |  | 姜燕 | 32h |
| 35 | 2.1.2.1.1.7.1 | 流程图访谈 | 1d | 2017-10-13 | 2017-10-16 | 21 | 120.5d |  | start no earlier than 2017-10-09 | 姜燕 | 8h |
| 36 | 2.1.2.1.1.7.2 | 页面要素访谈 | 1d | 2017-10-13 | 2017-10-16 | 21 | 120.5d |  | start no earlier than 2017-10-09 | 姜燕 | 8h |
| 37 | 2.1.2.1.1.7.3 | 业务规则访谈 | 1d | 2017-10-13 | 2017-10-16 | 21 | 120.5d |  | start no earlier than 2017-10-09 | 姜燕 | 8h |
| 38 | 2.1.2.1.1.8 | **精准扶贫流程** | 1d | 2017-10-13 | 2017-10-16 |  | 116.5d |  |  | 姜燕 | 32h |
| 39 | 2.1.2.1.1.8.1 | 流程图访谈 | 1d | 2017-10-13 | 2017-10-16 | 21 | 120.5d |  | start no earlier than 2017-10-10 | 姜燕 | 8h |
| 40 | 2.1.2.1.1.8.2 | 页面要素访谈 | 1d | 2017-10-13 | 2017-10-16 | 21 | 120.5d |  | start no earlier than 2017-10-10 | 姜燕 | 8h |
| 41 | 2.1.2.1.1.8.3 | 业务规则访谈 | 1d | 2017-10-13 | 2017-10-16 | 21 | 116.5d | 0d | start no earlier than 2017-10-10 | 姜燕 | 8h |
| 42 | 2.1.2.1.2 | **对接访谈** | 1d | 2017-10-16 | 2017-10-17 | 41 | 116.5d | 0d |  | 姜燕 | 32h |
| 43 | 2.1.2.1.2.1 | 原核心系统对接 | 1d | 2017-10-16 | 2017-10-17 |  | 116.5d |  | start no earlier than 2017-10-11 | 姜燕 | 8h |
| 44 | 2.1.2.1.2.2 | 周边系统对接 | 1d | 2017-10-16 | 2017-10-17 |  | 116.5d |  | start no earlier than 2017-10-11 | 姜燕 | 8h |
| 45 | 2.1.2.1.2.3 | 第三方系统对接 | 1d | 2017-10-16 | 2017-10-17 |  | 116.5d |  | start no earlier than 2017-10-11 | 姜燕 | 8h |
| 46 | 2.1.2.2 | **理赔系统** | 1d | 2017-10-19 | 2017-10-20 |  | 116.5d |  |  | 姜燕 | 112h |
| 47 | 2.1.2.2.1 | **子流程访谈** | 1d | 2017-10-19 | 2017-10-20 |  | 116.5d |  |  | 姜燕 | 72h |
| 48 | 2.1.2.2.1.1 | **种植险理赔流程** | 1d | 2017-10-19 | 2017-10-20 |  | 116.5d |  |  | 姜燕 | 32h |
| 49 | 2.1.2.2.1.1.1 | 流程图访谈 | 1d | 2017-10-19 | 2017-10-20 | 65 | 116.5d |  | start no earlier than 2017-10-13 | 姜燕 | 8h |
| 50 | 2.1.2.2.1.1.2 | 页面要素访谈 | 1d | 2017-10-19 | 2017-10-20 | 65 | 116.5d |  | start no earlier than 2017-10-13 | 姜燕 | 8h |
| 51 | 2.1.2.2.1.1.3 | 业务规则访谈 | 1d | 2017-10-19 | 2017-10-20 | 65 | 116.5d |  | start no earlier than 2017-10-13 | 姜燕 | 8h |

| ID | WBS | Task | Duration | Start | Finish | Predecessors | Complete | Remaining | Total slack | Free slack | Constraint | Resources | Work | Actual work |
| --- | --- | --- | --- | --- | --- | --- | --- | --- | --- | --- | --- | --- | --- | --- |
| 52 | 2.1.2.2.1.2 | **养殖险理赔流程** | 1d | 2017-10-19 | 2017-10-20 |  |  |  | 116.5d |  |  | 姜燕 | 32h |  |
| 53 | 2.1.2.2.1.2.1 | 流程图访谈 | 1d | 2017-10-19 | 2017-10-20 | 65 |  |  | 116.5d |  | start no earlier than 2017-10-16 | 姜燕 | 8h |  |
| 54 | 2.1.2.2.1.2.2 | 页面要素访谈 | 1d | 2017-10-19 | 2017-10-20 | 65 |  |  | 116.5d |  | start no earlier than 2017-10-16 | 姜燕 | 8h |  |
| 55 | 2.1.2.2.1.2.3 | 业务规则访谈 | 1d | 2017-10-19 | 2017-10-20 | 65 |  |  | 116.5d |  | start no earlier than 2017-10-16 | 姜燕 | 8h |  |
| 56 | 2.1.2.2.2 | **对接访谈** | 1d | 2017-10-19 | 2017-10-20 | 65 |  |  | 116.5d |  |  | 姜燕 | 32h |  |
| 57 | 2.1.2.2.2.1 | 原核心系统对接 | 1d | 2017-10-19 | 2017-10-20 | 65 |  |  | 116.5d |  | start no earlier than 2017-10-19 | 姜燕 | 8h |  |
| 58 | 2.1.2.2.2.2 | 周边系统对接 | 1d | 2017-10-19 | 2017-10-20 | 65 |  |  | 116.5d |  | start no earlier than 2017-10-19 | 姜燕 | 8h |  |
| 59 | 2.1.2.2.2.3 | 第三方系统对接 | 1d | 2017-10-19 | 2017-10-20 | 65 |  |  | 116.5d |  | start no earlier than 2017-10-19 | 姜燕 | 8h |  |
| 60 | 2.1.2.3 | **交易清单系统** | 1d | 2017-10-17 | 2017-10-18 | 42 |  |  | 116.5d | 0d |  | 姜燕 | 40h |  |
| 61 | 2.1.2.3.1 | **对接访谈** | 1d | 2017-10-17 | 2017-10-18 |  |  |  | 116.5d |  |  | 姜燕 | 32h |  |
| 62 | 2.1.2.3.1.1 | 与承保系统对接 | 1d | 2017-10-17 | 2017-10-18 |  |  |  | 116.5d |  | start no earlier than 2017-10-11 | 姜燕 | 8h |  |
| 63 | 2.1.2.3.1.2 | 与理赔系统对接 | 1d | 2017-10-17 | 2017-10-18 |  |  |  | 116.5d |  | finish no earlier than 2017-10-12 | 姜燕 | 8h |  |
| 64 | 2.1.2.3.1.3 | 与第三方系统对接 | 1d | 2017-10-17 | 2017-10-18 |  |  |  | 116.5d |  | finish no earlier than 2017-10-13 | 姜燕 | 8h |  |
| 65 | 2.1.2.4 | **统一登录系统** | 1d | 2017-10-18 | 2017-10-19 | 60 |  |  | 116.5d | 0d |  | 姜燕 | 24h |  |
| 66 | 2.1.2.4.1 | 统一登录 | 1d | 2017-10-18 | 2017-10-19 |  |  |  | 116.5d |  |  | 姜燕 | 8h |  |
| 67 | 2.1.2.4.2 | 普通登录 | 1d | 2017-10-18 | 2017-10-19 |  |  |  | 116.5d |  |  | 姜燕 | 8h |  |
| 68 | 2.2 | **需求文档编辑** | 20d | 2017-09-26 A | 2017-10-20 |  | 8% | 18.33d | 116d |  |  | 张茵 | 560h | 38.4h |
| 69 | 2.2.1 | 界面设计图 | 1d | 2017-09-26 | 2017-09-26 |  |  |  | 135d |  | start no earlier than 2017-09-26 | 金美兰 | 8h |  |
| 70 | 2.2.2 | UI设计文档 | 1d | 2017-09-26 | 2017-09-26 |  |  |  | 135d |  | finish no earlier than 2017-09-26 | 金美兰 | 8h |  |
| 71 | 2.2.3 | **AXURE原型图** | 2d | 2017-09-26 A | 2017-09-27 A |  | 100% |  |  |  |  | 张茵 | 32h | 32h |
| 72 | 2.2.3.1 | 承保系统 | 1d | 2017-09-26 A | 2017-09-26 A |  | 100% |  |  |  | finish no earlier than 2017-09-26 | 张茵 | 8h | 8h |
| 73 | 2.2.3.2 | 理赔系统 | 1d | 2017-09-27 A | 2017-09-27 A |  | 100% |  |  |  | finish no earlier than 2017-09-27 | 张茵 | 8h | 8h |
| 74 | 2.2.4 | **需求文档** | 7d | 2017-10-12 | 2017-10-20 |  |  |  | 104d | 0d |  | 张茵 | 352h |  |
| 75 | 2.2.4.1 | **功能部分** | 4d | 2017-10-12 | 2017-10-17 |  |  |  | 104d |  |  | 张茵 | 168h |  |
| 76 | 2.2.4.1.1 | **业务功能** | 4d | 2017-10-12 | 2017-10-17 |  |  |  | 104d |  |  | 张茵 | 136h |  |
| 77 | 2.2.4.1.1.1 | **承保系统功能** | 3d | 2017-10-12 | 2017-10-16 |  |  |  | 104d |  |  | 张茵 | 80h |  |
| 78 | 2.2.4.1.1.1.1 | 投保功能 | 1d | 2017-10-12 | 2017-10-12 |  |  |  | 104d | 0d | start no earlier than 2017-10-12 | 张茵 | 8h |  |
| 79 | 2.2.4.1.1.1.2 | 批改功能 | 1d | 2017-10-13 | 2017-10-13 | 78 |  |  | 109d |  | finish no earlier than 2017-10-09 | 张茵 | 8h |  |
| 80 | 2.2.4.1.1.1.3 | 短信提醒功能 | 1d | 2017-10-13 | 2017-10-13 | 78 |  |  | 109d |  | start no earlier than 2017-10-09 | 张茵 | 8h |  |
| 81 | 2.2.4.1.1.1.4 | 业务清单功能 | 1d | 2017-10-13 | 2017-10-13 | 78 |  |  | 104d | 0d | start no earlier than 2017-10-09 | 张茵 | 8h |  |
| 82 | 2.2.4.1.1.1.5 | 单证打印功能 | 1d | 2017-10-16 | 2017-10-16 | 81 |  |  | 108d |  | start no earlier than 2017-10-10 | 张茵 | 8h |  |
| 83 | 2.2.4.1.1.1.6 | 影像资料功能 | 1d | 2017-10-16 | 2017-10-16 | 81 |  |  | 108d |  | start no earlier than 2017-10-10 | 张茵 | 8h |  |
| 84 | 2.2.4.1.1.1.7 | 精准扶贫功能 | 1d | 2017-10-16 | 2017-10-16 | 81 |  |  | 104d | 0d | start no earlier than 2017-10-11 | 张茵 | 8h |  |

| ID | WBS | Task | Duration | Start | Finish | Predecessors | Total slack | Free slack | Constraint | Resources | Work |
| --- | --- | --- | --- | --- | --- | --- | --- | --- | --- | --- | --- |
| 85 | 2.2.4.1.1.2 | **理赔系统功能** | 1d | 2017-10-17 | 2017-10-17 | 84 | 104d | 0d |  | 张茵 | 24h |
| 86 | 2.2.4.1.1.2.1 | 种植险功能 | 1d | 2017-10-17 | 2017-10-17 |  | 104d |  | finish no earlier than 2017-10-16 | 张茵 | 8h |
| 87 | 2.2.4.1.1.2.2 | 养殖险功能 | 1d | 2017-10-17 | 2017-10-17 |  | 104d |  | finish no earlier than 2017-10-17 | 张茵 | 8h |
| 88 | 2.2.4.2 | **数据结构说明** | 1d | 2017-10-18 | 2017-10-18 |  | 104d |  |  | 张茵 | 32h |
| 89 | 2.2.4.2.1 | 承保系统 | 1d | 2017-10-18 | 2017-10-18 | 85 | 106d |  | start no earlier than 2017-10-12 | 张茵 | 8h |
| 90 | 2.2.4.2.2 | 理赔系统 | 1d | 2017-10-18 | 2017-10-18 | 85 | 106d |  | start no earlier than 2017-10-18 | 张茵 | 8h |
| 91 | 2.2.4.2.3 | 交易清单系统 | 1d | 2017-10-18 | 2017-10-18 | 85 | 104d | 0d | finish no earlier than 2017-10-18 | 张茵 | 8h |
| 92 | 2.2.4.3 | **对接说明** | 2d | 2017-10-19 | 2017-10-20 | 91 | 104d |  |  | 张茵 | 96h |
| 93 | 2.2.4.3.1 | **承保系统** | 1d | 2017-10-19 | 2017-10-19 |  | 105d |  |  | 张茵 | 32h |
| 94 | 2.2.4.3.1.1 | 原核心系统对接 | 1d | 2017-10-19 | 2017-10-19 |  | 105d |  | start no earlier than 2017-10-12 | 张茵 | 8h |
| 95 | 2.2.4.3.1.2 | 周边系统对接 | 1d | 2017-10-19 | 2017-10-19 |  | 105d |  | start no earlier than 2017-10-12 | 张茵 | 8h |
| 96 | 2.2.4.3.1.3 | 第三方系统对接 | 1d | 2017-10-19 | 2017-10-19 |  | 105d |  | start no earlier than 2017-10-12 | 张茵 | 8h |
| 97 | 2.2.4.3.2 | **理赔系统** | 1d | 2017-10-19 | 2017-10-19 |  | 105d |  |  | 张茵 | 32h |
| 98 | 2.2.4.3.2.1 | 原核心系统对接 | 1d | 2017-10-19 | 2017-10-19 |  | 105d |  | start no earlier than 2017-10-19 | 张茵 | 8h |
| 99 | 2.2.4.3.2.2 | 周边系统对接 | 1d | 2017-10-19 | 2017-10-19 |  | 105d |  | start no earlier than 2017-10-19 | 张茵 | 8h |
| 100 | 2.2.4.3.2.3 | 第三方系统对接 | 1d | 2017-10-19 | 2017-10-19 |  | 105d |  | start no earlier than 2017-10-19 | 张茵 | 8h |
| 101 | 2.2.4.3.3 | 交易清单系统 | 2d | 2017-10-19 | 2017-10-20 |  | 104d |  | finish no earlier than 2017-10-20 | 张茵 | 16h |
| 102 | 2.3 | **需求评审** | 1d? | 2017-10-23 | 2017-10-23 | 74 | 104d | 0d |  | 李晶 | 168h |
| 103 | 2.3.1 | **承保系统需求评审** | 1d | 2017-10-23 | 2017-10-23 |  | 104d |  |  | 李晶 | 96h |
| 104 | 2.3.1.1 | 流程评审 | 1d | 2017-10-23 | 2017-10-23 |  | 104d |  | start no earlier than 2017-09-30 | 李晶 | 8h |
| 105 | 2.3.1.2 | **功能评审** | 1d | 2017-10-23 | 2017-10-23 |  | 104d |  |  | 李晶 | 72h |
| 106 | 2.3.1.2.1 | 投保功能 | 1d | 2017-10-23 | 2017-10-23 |  | 104d |  | start no earlier than 2017-09-29 | 李晶 | 8h |
| 107 | 2.3.1.2.2 | 共保功能 | 1d | 2017-10-23 | 2017-10-23 |  | 104d |  | start no earlier than 2017-09-30 | 李晶 | 8h |
| 108 | 2.3.1.2.3 | 批改功能 | 1d | 2017-10-23 | 2017-10-23 |  | 104d |  | start no earlier than 2017-10-09 | 李晶 | 8h |
| 109 | 2.3.1.2.4 | 短信提醒功能 | 1d | 2017-10-23 | 2017-10-23 |  | 104d |  | start no earlier than 2017-10-10 | 李晶 | 8h |
| 110 | 2.3.1.2.5 | 业务清单功能 | 1d | 2017-10-23 | 2017-10-23 |  | 104d |  | start no earlier than 2017-10-10 | 李晶 | 8h |
| 111 | 2.3.1.2.6 | 单证打印功能 | 1d | 2017-10-23 | 2017-10-23 |  | 104d |  | start no earlier than 2017-10-11 | 李晶 | 8h |
| 112 | 2.3.1.2.7 | 影像资料功能 | 1d | 2017-10-23 | 2017-10-23 |  | 104d |  | start no earlier than 2017-10-11 | 李晶 | 8h |
| 113 | 2.3.1.2.8 | 精准扶贫功能 | 1d | 2017-10-23 | 2017-10-23 |  | 104d |  | start no earlier than 2017-10-12 | 李晶 | 8h |
| 114 | 2.3.1.3 | 数据结构评审 | 1d | 2017-10-23 | 2017-10-23 |  | 104d |  | start no earlier than 2017-10-13 | 李晶 | 8h |

| ID | WBS | Task | Duration | Start | Finish | Predecessors | Complete | Remaining | Total slack | Free slack | Constraint | Resources | Work | Actual work |
| --- | --- | --- | --- | --- | --- | --- | --- | --- | --- | --- | --- | --- | --- | --- |
| 115 | 2.3.2 | **理赔系统需求评审** | 1d? | 2017-10-23 | 2017-10-23 |  |  |  | 104d |  |  | 李晶 | 48h |  |
| 116 | 2.3.2.1 | 流程评审 | 1d? | 2017-10-23 | 2017-10-23 |  |  |  | 104d |  | start no earlier than 2017-10-16 | 李晶 | 8h |  |
| 117 | 2.3.2.2 | **功能评审** | 1d | 2017-10-23 | 2017-10-23 |  |  |  | 104d |  |  | 李晶 | 24h |  |
| 118 | 2.3.2.2.1 | 种植险功能评审 | 1d | 2017-10-23 | 2017-10-23 |  |  |  | 104d |  | start no earlier than 2017-10-17 | 李晶 | 8h |  |
| 119 | 2.3.2.2.2 | 养殖险功能评审 | 1d | 2017-10-23 | 2017-10-23 |  |  |  | 104d |  | start no earlier than 2017-10-18 | 李晶 | 8h |  |
| 120 | 2.3.2.3 | 数据结构评审 | 1d | 2017-10-23 | 2017-10-23 |  |  |  | 104d |  | start no earlier than 2017-10-19 | 李晶 | 8h |  |
| 121 | 2.3.3 | 基础服务功能评审 | 1d | 2017-10-23 | 2017-10-23 |  |  |  | 104d |  | start no earlier than 2017-10-19 | 李晶 | 8h |  |
| 122 | 2.3.4 | 交易清单系统需求评审 | 1d | 2017-10-23 | 2017-10-23 |  |  |  | 104d |  | start no earlier than 2017-10-20 | 李晶 | 8h |  |
| 123 | 3 | **设计** | 11d | 2017-10-24 | 2017-11-07 | 102 |  |  | 104d |  |  | 姜燕; 胡世界 | 368h |  |
| 124 | 3.1 | 交易清单系统设计 | 1d | 2017-10-24 | 2017-10-24 |  |  |  | 104d | 0d | finish no earlier than 2017-10-13 | 姜燕; 胡世界 | 16h |  |
| 125 | 3.2 | 交易清单系统设计评审 | 1d | 2017-10-25 | 2017-10-25 | 124 |  |  | 104d | 0d | start no earlier than 2017-10-13 | 姜燕; 胡世界 | 16h |  |
| 126 | 3.3 | 承保系统设计 | 3d | 2017-10-26 | 2017-10-30 | 125 |  |  | 104d | 0d | start no earlier than 2017-10-09 | 姜燕; 胡世界 | 48h |  |
| 127 | 3.4 | 承保系统设计评审 | 1d | 2017-10-31 | 2017-10-31 | 126 |  |  | 104d | 0d | start no earlier than 2017-10-20 | 姜燕; 胡世界 | 16h |  |
| 128 | 3.5 | 理赔系统设计 | 2d | 2017-11-01 | 2017-11-02 | 127 |  |  | 104d | 0d | start no earlier than 2017-10-24 | 姜燕; 胡世界 | 32h |  |
| 129 | 3.6 | 理赔系统设计评审 | 1d | 2017-11-03 | 2017-11-03 | 128 |  |  | 104d | 0d |  | 姜燕; 胡世界 | 16h |  |
| 130 | 3.7 | 中科软核心系统自身改造及对接设计 | 1d | 2017-11-06 | 2017-11-06 | 129 |  |  | 104d | 0d | finish no earlier than 2017-10-27 | 姜燕; 胡世界 | 16h |  |
| 131 | 3.8 | 中科软核心系统自身改造及对接设计评审 | 1d | 2017-11-06 | 2017-11-06 | 129 |  |  | 105d |  |  | 姜燕; 胡世界 | 16h |  |
| 132 | 3.9 | 数据结构梳理及评审 | 1d | 2017-11-07 | 2017-11-07 | 130 |  |  | 104d |  | start no earlier than 2017-10-16 | 姜燕; 胡世界 | 16h |  |
| 133 | 4 | **设计-视觉/交互** | 136d? | 2017-09-26 A | 2018-03-30 |  | 13% | 118.4d? | 0d |  |  |  | 156.8h | 103.84h |
| 134 | 4.1 | 项目管理 | 136d? | 2017-09-26 | 2018-03-30 |  |  |  | 0d |  | start no earlier than 2017-09-26 |  |  |  |
| 135 | 4.2 | 整体风格设计-投保单录入单 | 5d? | 2017-10-09 A | 2017-10-13 |  | 80% | 1d? | -1d | 0d | start no earlier than 2017-10-09 | 王爽; 尹健辉 | 60h | 52h |
| 136 | 4.3 | 控件设计 | 2d | 2017-10-16 | 2017-10-17 | 135 |  |  | -10d | 0d |  |  |  |  |
| 137 | 4.4 | **承保系统系统-第一张保单生成并完成打印** | 32d? | 2017-10-06 A | 2017-11-20 | 136 | 50% | 15.84d? | 0d |  |  |  | 96.8h | 51.84h |
| 138 | 4.4.1 | 个人中心 | 1d? | 2017-10-18 | 2017-10-18 |  |  |  | 23d |  |  |  |  |  |

| ID | WBS | Task | Type | Duration | Start | Finish | Predecessors | Complete | Remaining | Total slack | Free slack | Constraint | Resources | Work | Actual work |
| --- | --- | --- | --- | --- | --- | --- | --- | --- | --- | --- | --- | --- | --- | --- | --- |
| 139 | 4.4.2 | **2.1.3.1 登录系统** |  | 4d | 2017-10-18 A | 2017-10-23 |  | 7% | 3.71d | -2d | 0d |  |  | 32h | 8h |
| 140 | 4.4.2.1 | 1 登录/登录失败页面/登录成功页面 |  | 2d | 2017-10-18 A | 2017-10-19 | 135 | 25% | 1.5d | -12d | 0d |  | 王爽; 尹健辉 | 32h | 8h |
| 141 | 4.4.2.2 | 2 重新登录 |  | 2d | 2017-10-20 | 2017-10-23 | 140 |  |  | -12d | 0d |  |  |  |  |
| 142 | 4.4.2.3 | 3 引导页面 |  | 1d | 2017-10-20 | 2017-10-20 |  |  |  | -11d | 0d | start no earlier than 2017-10-20 |  |  |  |
| 143 | 4.4.2.4 | 4 修改密码/修改密码成功与错误页面 |  | 2d | 2017-10-20 | 2017-10-23 |  |  |  | -12d | 0d | start no earlier than 2017-10-20 |  |  |  |
| 144 | 4.4.3 | **2.1.3.4 投保单管理** |  | 18d | 2017-10-06 A | 2017-10-31 | 139 | 74% | 4.75d | 0d |  |  |  | 64.8h | 43.84h |
| 145 | 4.4.3.1 | 1 出单引导 |  | 4d | 2017-10-17 A | 2017-10-25 |  | 70% | 1.2d | 4.8d |  | start no earlier than 2017-10-18 | 邓晓辉 | 32h | 22.4h |
| 146 | 4.4.3.2 | 2 投保单录入页面（基本信息、合同信息、投保人被保险人信息、其他信息） |  | 3.1d | 2017-10-06 A | 2017-10-24 |  | 80% | 0.62d | 5d |  | finish no earlier than 2017-10-24 | 邓晓辉 | 24.8h | 19.84h |
| 147 | 4.4.3.3 | 3 联合出单录入页面 |  | 1d | 2017-10-24 A | 2017-10-24 |  | 20% | 0.8d | 1.76d | 0d |  | 邓晓辉 | 8h | 1.6h |
| 148 | 4.4.3.4 | 4 投保单查询页面 |  | 2d | 2017-10-25 A | 2017-10-26 | 143, 147 | 88% | 0.24d | 0.8d | 0d |  |  |  |  |
| 149 | 4.4.3.5 | 5 查询结果列表页面 |  | 1d | 2017-10-27 A | 2017-10-27 | 148 | 80% | 0.2d | 0.7d | 0d |  |  |  |  |
| 150 | 4.4.3.6 | 6 客户密码设置 |  | 1d | 2017-10-30 A | 2017-10-30 | 149 | 70% | 0.3d | 0.9d | 0d |  |  |  |  |
| 151 | 4.4.3.7 | 7 客户风险等级设置查询页面 |  | 1d | 2017-10-31 A | 2017-10-31 | 150 | 90% | 0.1d | 0d |  |  |  |  |  |
| 152 | 4.4.3.8 | 8 客户风险等级设置页面 | milestone | 0d | 2017-10-31 A | 2017-10-31 A | 151 | 100% |  |  |  |  |  |  |  |
| 153 | 4.4.4 | **2.1.3.5 条款版本管理** |  | 4d | 2017-11-01 A | 2017-11-06 | 144 | 70% | 1.2d | 0d |  |  |  |  |  |
| 154 | 4.4.4.1 | 1 创建条款页面 |  | 4d | 2017-11-01 A | 2017-11-06 |  | 70% | 1.2d | 0d |  |  |  |  |  |
| 155 | 4.4.5 | **2.1.3.6 投保模板管理** |  | 2d | 2017-11-06 A | 2017-11-08 | 153 | 90% | 0.2d | 0d |  |  |  |  |  |
| 156 | 4.4.5.1 | 1 投保模板录入页面 | milestone | 0d | 2017-11-06 A | 2017-11-06 |  | 70% | 0d | 1.8d | 0d |  |  |  |  |
| 157 | 4.4.5.2 | 2 投保模板维护查询页面 |  | 2d | 2017-11-07 A | 2017-11-08 | 156 | 90% | 0.2d | 0d |  |  |  |  |  |
| 158 | 4.4.5.3 | 3 投保模板维护页面 | milestone | 0d | 2017-11-08 A | 2017-11-08 | 157 | 90% | 0d | 0d |  |  |  |  |  |
| 159 | 4.4.5.4 | 4 模板查询页面 | milestone | 0d | 2017-11-08 A | 2017-11-08 | 158 | 70% | 0d | 0d |  |  |  |  |  |
| 160 | 4.4.5.5 | 5 模板详细信息查看页面 | milestone | 0d | 2017-11-08 A | 2017-11-08 | 159 | 70% | 0d | 0d |  |  |  |  |  |
| 161 | 4.4.6 | **2.1.3.7 保单管理** |  | 0d | 2017-11-08 A | 2017-11-08 | 155 |  | 0d | 0d |  |  |  |  |  |
| 162 | 4.4.6.1 | 1 保单查询页面 | milestone | 0d | 2017-11-08 A | 2017-11-08 A |  | 100% |  |  |  |  |  |  |  |
| 163 | 4.4.6.2 | 2 保单详情查看页面 | milestone | 0d | 2017-11-08 A | 2017-11-08 | 162 | 70% | 0d | 0d |  |  |  |  |  |

| ID | WBS | Task | Type | Duration | Start | Finish | Predecessors | Complete | Remaining | Total slack | Free slack |
| --- | --- | --- | --- | --- | --- | --- | --- | --- | --- | --- | --- |
| 164 | 4.4.7 | **2.1.3.8 单证打印** |  | 2d | 2017-11-08 A | 2017-11-10 | 161 | 45% | 1.1d | 0d |  |
| 165 | 4.4.7.1 | 1 投保单打印查询页面 | milestone | 0d | 2017-11-08 A | 2017-11-08 |  | 90% | 0d | 0.9d | 0d |
| 166 | 4.4.7.2 | 2 保单打印查询页面 | milestone | 0d | 2017-11-08 A | 2017-11-08 | 165 | 90% | 0d | 0.9d | 0d |
| 167 | 4.4.7.3 | 3 保单打印页面 |  | 1d | 2017-11-09 A | 2017-11-09 | 166 | 90% | 0.1d | 0d |  |
| 168 | 4.4.7.4 | 4 凭证打印查询页面 | milestone | 0d | 2017-11-09 A | 2017-11-09 | 167 | 90% | 0d | 0d |  |
| 169 | 4.4.7.5 | 5 打印成功页面 |  | 1d | 2017-11-10 | 2017-11-10 | 168 |  |  | 0d |  |
| 170 | 4.4.7.6 | 6 批单打印查询页面 | milestone | 0d | 2017-11-10 A | 2017-11-10 | 169 | 80% | 0d | 0d |  |
| 171 | 4.4.7.7 | 7 批单打印处理页面 | milestone | 0d | 2017-11-10 | 2017-11-10 | 170 |  |  | 0d |  |
| 172 | 4.4.8 | **2.1.3.9 凭证短信发送** |  | 3d | 2017-11-13 A | 2017-11-15 | 164 | 60% | 1.2d | 0d |  |
| 173 | 4.4.8.1 | 1 创建短信模板 |  | 2d | 2017-11-13 A | 2017-11-14 A |  | 100% |  |  |  |
| 174 | 4.4.8.2 | 2 查询页面 | milestone | 0d | 2017-11-14 A | 2017-11-14 | 173 | 90% | 0d | 0d |  |
| 175 | 4.4.8.3 | 3 发送详情 |  | 1d | 2017-11-15 | 2017-11-15 | 174 |  |  | 0d |  |
| 176 | 4.4.8.4 | 4 汇总信息 |  | 1d | 2017-11-13 | 2017-11-13 |  |  |  | 2d |  |
| 177 | 4.4.8.5 | 5 发送页面 |  | 2d | 2017-11-13 A | 2017-11-14 |  | 80% | 0.4d | 1d |  |
| 178 | 4.4.9 | **2.1.3.11 支付信息维护** |  | 0d | 2017-11-15 A | 2017-11-15 | 172 |  | 0d | 0d |  |
| 179 | 4.4.9.1 | 1 支付信息录入查询页面 | milestone | 0d | 2017-11-15 A | 2017-11-15 |  | 90% | 0d | 0d |  |
| 180 | 4.4.9.2 | 2 整单支付信息录入页面 | milestone | 0d | 2017-11-15 A | 2017-11-15 | 179 | 80% | 0d | 0d |  |
| 181 | 4.4.9.3 | 3 清单支付页面 | milestone | 0d | 2017-11-15 A | 2017-11-15 | 180 | 90% | 0d | 0d |  |
| 182 | 4.4.9.4 | 4 支付信息查询页面 | milestone | 0d | 2017-11-15 | 2017-11-15 | 181 |  |  | 0d |  |
| 183 | 4.4.9.5 | 5 支付信息详情查询页面 | milestone | 0d | 2017-11-15 | 2017-11-15 | 182 |  |  | 0d |  |
| 184 | 4.4.10 | 2.1.3.12 业务清单查询 | milestone | 0d | 2017-11-15 | 2017-11-15 | 178 |  |  | 0d |  |
| 185 | 4.4.11 | 2.1.3.13 影像资料 |  | 3d | 2017-11-16 | 2017-11-20 | 184 |  |  | 0d |  |
| 186 | 4.5 | **承保系统设计-承保系统批改及周边系统对接** |  | 8d | 2017-11-20 A | 2017-11-30 | 137 | 57% | 3.4d | 0d |  |
| 187 | 4.5.1 | 1 普通批改查询页面 | milestone | 0d | 2017-11-20 A | 2017-11-20 A |  | 100% |  |  |  |
| 188 | 4.5.2 | 2 普通批改操作页面 | milestone | 0d | 2017-11-20 A | 2017-11-20 A | 187 | 100% |  |  |  |
| 189 | 4.5.3 | 3 批文录入页面 |  | 2d | 2017-11-21 A | 2017-11-22 | 188 | 70% | 0.6d | 6d | 0d |
| 190 | 4.5.4 | 4 批单保存成功页面 | milestone | 0d | 2017-11-22 | 2017-11-22 | 189 |  |  | 6d |  |
| 191 | 4.5.5 | 5 批单查询页面 | milestone | 0d | 2017-11-22 A | 2017-11-22 A | 190 | 100% |  |  |  |
| 192 | 4.5.6 | 6 查询结果列表页面 | milestone | 0d | 2017-11-22 A | 2017-11-22 A | 191 | 100% |  |  |  |
| 193 | 4.5.7 | 7 变更保险期限批改页面 |  | 2d | 2017-11-23 A | 2017-11-24 | 192 | 90% | 0.2d | 2d | 0d |
| 194 | 4.5.8 | 8 全单退保批改页面 | milestone | 0d | 2017-11-24 A | 2017-11-24 | 193 | 90% | 0d | 2d | 0d |
| 195 | 4.5.9 | 9 保单注销批改页面 | milestone | 0d | 2017-11-24 | 2017-11-24 | 194 |  |  | 2d | 0d |
| 196 | 4.5.10 | 10 见费出单保单注销页面 | milestone | 0d | 2017-11-24 | 2017-11-24 | 195 |  |  | 2d | 0d |
| 197 | 4.5.11 | 11 业务来源批改页面 | milestone | 0d | 2017-11-24 | 2017-11-24 | 196 |  |  | 2d | 0d |
| 198 | 4.5.12 | 12 业务员批改页面 | milestone | 0d | 2017-11-24 | 2017-11-24 | 197 |  |  | 2d | 0d |
| 199 | 4.5.13 | 13 调整费率页面 | milestone | 0d | 2017-11-24 | 2017-11-24 | 198 |  |  | 2d | 0d |
| 200 | 4.5.14 | 14 调整单位保额页面 | milestone | 0d | 2017-11-24 | 2017-11-24 | 199 |  |  | 2d | 0d |
| 201 | 4.5.15 | 15 调整补贴比例 | milestone | 0d | 2017-11-24 | 2017-11-24 | 200 |  |  | 2d | 0d |
| 202 | 4.5.16 | 16 批文录入页面 | milestone | 0d | 2017-11-24 | 2017-11-24 | 201 |  |  | 2d | 0d |
| 203 | 4.5.17 | 17 批单保存成功页面 | milestone | 0d | 2017-11-24 | 2017-11-24 | 202 |  |  | 2d | 0d |
| 204 | 4.5.18 | 18 批单管理首页面 |  | 2d | 2017-11-27 | 2017-11-28 | 203 |  |  | 2d | 0d |
| 205 | 4.5.19 | 19 批单管理查询页面 | milestone | 0d | 2017-11-28 | 2017-11-28 | 204 |  |  | 2d |  |
| 206 | 4.5.20 | 20 批文修改页面 | milestone | 0d | 2017-11-28 A | 2017-11-28 A | 205 | 100% |  |  |  |
| 207 | 4.5.21 | 21 批单删除页面 | milestone | 0d | 2017-11-28 | 2017-11-28 | 206 |  |  | 1.4d | 0d |
| 208 | 4.5.22 | 22 手工提交核批页面 | milestone | 0d | 2017-11-28 | 2017-11-28 | 207 |  |  | 1.4d | 0d |
| 209 | 4.5.23 | 23 查询页面 | milestone | 0d | 2017-11-28 A | 2017-11-28 | 208 | 90% | 0d | 1.4d | 0d |
| 210 | 4.5.24 | 24 批单查询结果列表页面 | milestone | 0d | 2017-11-28 | 2017-11-28 | 209 |  |  | 1.4d | 0d |
| 211 | 4.5.25 | 25 批单详情查看页面 | milestone | 0d | 2017-11-28 A | 2017-11-28 | 210 | 70% | 0d | 1.4d | 0d |
| 212 | 4.5.26 | 26 批改前清单信息页面 |  | 2d | 2017-11-29 A | 2017-11-30 | 211 | 70% | 0.6d | 0d |  |
| 213 | 4.5.27 | 27 批改后清单信息页面 | milestone | 0d | 2017-11-30 A | 2017-11-30 | 212 | 70% | 0d | 0d |  |
| 214 | 4.5.28 | 28 批改变化量信息页面 | milestone | 0d | 2017-11-30 | 2017-11-30 | 213 |  |  | 0d |  |
| 215 | 4.6 | 承保系统设计-承保新险种开发完毕（20个产品） | milestone | 0d | 2017-11-30 | 2017-11-30 | 186 |  |  | 0d |  |

| ID | WBS | Task | Type | Duration | Start | Finish | Predecessors | Complete | Remaining | Total slack | Free slack |
| --- | --- | --- | --- | --- | --- | --- | --- | --- | --- | --- | --- |
| 216 | 4.7 | **理赔系统设计** |  | 26d | 2017-12-01 A | 2018-01-04 | 215 |  | 26d | 61d |  |
| 217 | 4.7.1 | **2.2.3.1 登录系统** |  | 4d | 2017-12-01 | 2017-12-06 |  |  |  | 0d |  |
| 218 | 4.7.1.1 | 1 登录 |  | 2d | 2017-12-01 | 2017-12-04 |  |  |  | 0d |  |
| 219 | 4.7.1.2 | 2 重新登录 |  | 1d | 2017-12-05 | 2017-12-05 | 218 |  |  | 0d |  |
| 220 | 4.7.1.3 | 3 修改密码 |  | 1d | 2017-12-06 | 2017-12-06 | 219 |  |  | 0d |  |
| 221 | 4.7.2 | **2.2.3.4 我的任务** |  | 5d | 2017-12-07 | 2017-12-13 | 217 |  |  | 0d |  |
| 222 | 4.7.2.1 | 1 我的任务 |  | 5d | 2017-12-07 | 2017-12-13 |  |  |  | 0d |  |
| 223 | 4.7.3 | **2.2.3.5 理赔管理** |  | 13d | 2017-12-13 A | 2017-12-31 | 221 |  | 13d | 61d | 0d |
| 224 | 4.7.3.1 | 1 报案登记查询页面 | milestone | 0d | 2017-12-13 A | 2017-12-13 A |  | 100% |  |  |  |
| 225 | 4.7.3.2 | 2 报案登记页面 | milestone | 0d | 2017-12-13 | 2017-12-13 | 224 |  |  | 61d | 0d |
| 226 | 4.7.3.3 | 3 正在处理报案任务查询页面 | milestone | 0d | 2017-12-13 | 2017-12-13 | 225 |  |  | 61d | 0d |
| 227 | 4.7.3.4 | 4 正在处理报案任务操作页面 | milestone | 0d | 2017-12-13 | 2017-12-13 | 226 |  |  | 61d | 0d |
| 228 | 4.7.3.5 | 5 报案任务查询页面 | milestone | 0d | 2017-12-13 | 2017-12-13 | 227 |  |  | 61d | 0d |
| 229 | 4.7.3.6 | 6 报案任务详情查看页面 | milestone | 0d | 2017-12-13 | 2017-12-13 | 228 |  |  | 61d | 0d |
| 230 | 4.7.3.7 | 7 待处理调度任务查询页面 | milestone | 0d | 2017-12-13 | 2017-12-13 | 229 |  |  | 61d | 0d |
| 231 | 4.7.3.8 | 8 待处理调度任务操作页面 | milestone | 0d | 2017-12-13 | 2017-12-13 | 230 |  |  | 61d | 0d |
| 232 | 4.7.3.9 | 9 正在处理调度任务查询页面 | milestone | 0d | 2017-12-13 | 2017-12-13 | 231 |  |  | 61d | 0d |
| 233 | 4.7.3.10 | 10 正在处理调度任务页面 | milestone | 0d | 2017-12-13 | 2017-12-13 | 232 |  |  | 61d | 0d |
| 234 | 4.7.3.11 | 11 调度改派查询页面 | milestone | 0d | 2017-12-13 | 2017-12-13 | 233 |  |  | 61d | 0d |
| 235 | 4.7.3.12 | 12 调度改派页面 | milestone | 0d | 2017-12-13 | 2017-12-13 | 234 |  |  | 61d | 0d |
| 236 | 4.7.3.13 | 13 调度任务查询页面 | milestone | 0d | 2017-12-13 | 2017-12-13 | 235 |  |  | 61d | 0d |
| 237 | 4.7.3.14 | 14 调度任务详情查看页面 | milestone | 0d | 2017-12-13 | 2017-12-13 | 236 |  |  | 61d | 0d |
| 238 | 4.7.3.15 | 15 班表查询页面 | milestone | 0d | 2017-12-13 | 2017-12-13 | 237 |  |  | 61d | 0d |
| 239 | 4.7.3.16 | 16 未处理查勘定损查询页面 | milestone | 0d | 2017-12-13 | 2017-12-13 | 238 |  |  | 61d | 0d |
| 240 | 4.7.3.17 | 17 未处理查勘定损任务操作页面 |  | 4d | 2017-12-14 | 2017-12-19 | 239 |  |  | 61d | 0d |
| 241 | 4.7.3.18 | 18 正在处理查勘定损任务查询页面 | milestone | 0d | 2017-12-19 | 2017-12-19 | 240 |  |  | 61d | 0d |
| 242 | 4.7.3.19 | 19 正在处理查勘定损任务操作页面 | milestone | 0d | 2017-12-19 | 2017-12-19 | 241 |  |  | 61d | 0d |
| 243 | 4.7.3.20 | 20 查勘定损任务查询页面 | milestone | 0d | 2017-12-19 | 2017-12-19 | 242 |  |  | 61d | 0d |
| 244 | 4.7.3.21 | 21 查勘定损任务详情查看页面 | milestone | 0d | 2017-12-19 | 2017-12-19 | 243 |  |  | 61d | 0d |
| 245 | 4.7.3.22 | 22 未处理立案任务查询页面 | milestone | 0d | 2017-12-19 | 2017-12-19 | 244 |  |  | 61d | 0d |
| 246 | 4.7.3.23 | 23 未处理立案任务操作页面 | milestone | 0d | 2017-12-19 | 2017-12-19 | 245 |  |  | 61d | 0d |
| 247 | 4.7.3.24 | 24 正在处理立案任务查询页面 | milestone | 0d | 2017-12-19 | 2017-12-19 | 246 |  |  | 61d | 0d |
| 248 | 4.7.3.25 | 25 正在处理立案任务操作页面 | milestone | 0d | 2017-12-19 | 2017-12-19 | 247 |  |  | 61d | 0d |
| 249 | 4.7.3.26 | 26 申请注销/拒赔查询页面 | milestone | 0d | 2017-12-19 | 2017-12-19 | 248 |  |  | 61d | 0d |
| 250 | 4.7.3.27 | 27 申请注销/拒赔操作页面 | milestone | 0d | 2017-12-19 | 2017-12-19 | 249 |  |  | 61d | 0d |
| 251 | 4.7.3.28 | 28 立案任务查询页面 | milestone | 0d | 2017-12-19 | 2017-12-19 | 250 |  |  | 61d | 0d |
| 252 | 4.7.3.29 | 29 立案任务详情查询页面 | milestone | 0d | 2017-12-19 | 2017-12-19 | 251 |  |  | 61d | 0d |
| 253 | 4.7.3.30 | 30 未处理特殊赔案查询页面 | milestone | 0d | 2017-12-19 | 2017-12-19 | 252 |  |  | 61d | 0d |
| 254 | 4.7.3.31 | 31 未处理特殊赔案操作页面 | milestone | 0d | 2017-12-19 | 2017-12-19 | 253 |  |  | 61d | 0d |
| 255 | 4.7.3.32 | 32 正在处理特殊赔案查询页面 | milestone | 0d | 2017-12-19 | 2017-12-19 | 254 |  |  | 61d | 0d |
| 256 | 4.7.3.33 | 33 正在处理特殊赔案操作页面 | milestone | 0d | 2017-12-19 | 2017-12-19 | 255 |  |  | 61d | 0d |
| 257 | 4.7.3.34 | 34 特殊赔案查询页面 | milestone | 0d | 2017-12-19 | 2017-12-19 | 256 |  |  | 61d | 0d |
| 258 | 4.7.3.35 | 35 特殊赔案查询详情 | milestone | 0d | 2017-12-19 | 2017-12-19 | 257 |  |  | 61d | 0d |
| 259 | 4.7.3.36 | 36 核赔退回特殊赔案查询页面 | milestone | 0d | 2017-12-19 | 2017-12-19 | 258 |  |  | 61d | 0d |
| 260 | 4.7.3.37 | 37 核赔退回特殊赔案详情操作页面 | milestone | 0d | 2017-12-19 | 2017-12-19 | 259 |  |  | 61d | 0d |
| 261 | 4.7.3.38 | 38 未处理理算任务查询页面 | milestone | 0d | 2017-12-19 | 2017-12-19 | 260 |  |  | 61d | 0d |
| 262 | 4.7.3.39 | 39 未处理理算任务操作页面 | milestone | 0d | 2017-12-19 | 2017-12-19 | 261 |  |  | 61d | 0d |
| 263 | 4.7.3.40 | 40 未处理理算保存成功页面 | milestone | 0d | 2017-12-19 | 2017-12-19 | 262 |  |  | 61d | 0d |
| 264 | 4.7.3.41 | 41 正在处理理算任务查询页面 | milestone | 0d | 2017-12-19 | 2017-12-19 | 263 |  |  | 61d | 0d |
| 265 | 4.7.3.42 | 42 正在处理理算任务操作页面 | milestone | 0d | 2017-12-19 | 2017-12-19 | 264 |  |  | 61d | 0d |
| 266 | 4.7.3.43 | 43 申请注销/拒赔查询页面 | milestone | 0d | 2017-12-19 | 2017-12-19 | 265 |  |  | 61d | 0d |
| 267 | 4.7.3.44 | 44 申请注销/拒赔操作页面 | milestone | 0d | 2017-12-19 | 2017-12-19 | 266 |  |  | 61d | 0d |
| 268 | 4.7.3.45 | 45 理算查询页面 | milestone | 0d | 2017-12-19 | 2017-12-19 | 267 |  |  | 61d | 0d |
| 269 | 4.7.3.46 | 46 理算信息详情查询页面 | milestone | 0d | 2017-12-19 | 2017-12-19 | 268 |  |  | 61d | 0d |
| 270 | 4.7.3.47 | 47 未处理结案任务查询页面 | milestone | 0d | 2017-12-19 | 2017-12-19 | 269 |  |  | 61d | 0d |
| 271 | 4.7.3.48 | 48 未处理结案任务详情页面 | milestone | 0d | 2017-12-19 | 2017-12-19 | 270 |  |  | 61d | 0d |
| 272 | 4.7.3.49 | 49 查询结果页面 | milestone | 0d | 2017-12-19 | 2017-12-19 | 271 |  |  | 61d | 0d |
| 273 | 4.7.3.50 | 50 结案任务详情页面 | milestone | 0d | 2017-12-19 | 2017-12-19 | 272 |  |  | 61d | 0d |
| 274 | 4.7.3.51 | 51 打印类型选择页面 |  | 2d | 2017-12-20 | 2017-12-21 | 273 |  |  | 61d | 0d |
| 275 | 4.7.3.52 | 52 打印筛选页面 | milestone | 0d | 2017-12-21 | 2017-12-21 | 274 |  |  | 61d | 0d |
| 276 | 4.7.3.53 | 53 工作流查询页面 | milestone | 0d | 2017-12-21 | 2017-12-21 | 275 |  |  | 61d | 0d |
| 277 | 4.7.3.54 | 54 工作流详情查看页面 |  | 4d | 2017-12-22 | 2017-12-27 | 276 |  |  | 61d | 0d |
| 278 | 4.7.3.55 | 55 案件号互查查询页面 | milestone | 0d | 2017-12-27 | 2017-12-27 | 277 |  |  | 61d | 0d |
| 279 | 4.7.3.56 | 56 新增班表查询页面 | milestone | 0d | 2017-12-27 | 2017-12-27 | 278 |  |  | 61d | 0d |
| 280 | 4.7.3.57 | 57 新增班表页面 |  | 3d | 2017-12-28 | 2017-12-31 | 279 |  |  | 61d | 0d |
| 281 | 4.7.3.58 | 58 区域设置查询页面 | milestone | 0d | 2017-12-31 | 2017-12-31 | 280 |  |  | 61d | 0d |
| 282 | 4.7.3.59 | 59 区域设置页面 | milestone | 0d | 2017-12-31 | 2017-12-31 | 281 |  |  | 61d | 0d |
| 283 | 4.7.3.60 | 60 修改班表查询页面 | milestone | 0d | 2017-12-31 | 2017-12-31 | 282 |  |  | 61d | 0d |
| 284 | 4.7.3.61 | 61 修改班表页面 | milestone | 0d | 2017-12-31 | 2017-12-31 | 283 |  |  | 61d | 0d |
| 285 | 4.7.3.62 | 62 班表查询页面 | milestone | 0d | 2017-12-31 | 2017-12-31 | 284 |  |  | 61d | 0d |

| ID | WBS | Task | Type | Duration | Start | Finish | Predecessors | Remaining | Total slack | Free slack | Constraint | Work | Actual work |
| --- | --- | --- | --- | --- | --- | --- | --- | --- | --- | --- | --- | --- | --- |
| 286 | 4.7.3.63 | 63 班表查询结果详情页面 | milestone | 0d | 2017-12-31 | 2017-12-31 | 285 |  | 61d | 0d |  |  |  |
| 287 | 4.7.3.64 | 64 单笔支付查询页面 | milestone | 0d | 2017-12-31 | 2017-12-31 | 286 |  | 61d | 0d |  |  |  |
| 288 | 4.7.3.65 | 65 支付信息录入页面 | milestone | 0d | 2017-12-31 | 2017-12-31 | 287 |  | 61d | 0d |  |  |  |
| 289 | 4.7.3.66 | 66 支付清单管理查询页面 | milestone | 0d | 2017-12-31 | 2017-12-31 | 288 |  | 61d | 0d |  |  |  |
| 290 | 4.7.3.67 | 67 整单支付页面 | milestone | 0d | 2017-12-31 | 2017-12-31 | 289 |  | 61d | 0d |  |  |  |
| 291 | 4.7.3.68 | 68 清单支付页面 | milestone | 0d | 2017-12-31 | 2017-12-31 | 290 |  | 61d | 0d |  |  |  |
| 292 | 4.7.3.69 | 69 支付信息查询页面 | milestone | 0d | 2017-12-31 | 2017-12-31 | 291 |  | 61d | 0d |  |  |  |
| 293 | 4.7.3.70 | 70 支付信息详情查看页面 | milestone | 0d | 2017-12-31 | 2017-12-31 | 292 |  | 61d | 0d |  |  |  |
| 294 | 4.7.3.71 | 71 电子回执单下载页面 | milestone | 0d | 2017-12-31 | 2017-12-31 | 293 |  | 61d | 0d |  |  |  |
| 295 | 4.7.3.72 | 72 支付情况统计查询页面 | milestone | 0d | 2017-12-31 | 2017-12-31 | 294 |  | 61d | 0d |  |  |  |
| 296 | 4.7.3.73 | 73 支付情况统计详情页面 | milestone | 0d | 2017-12-31 | 2017-12-31 | 295 |  | 61d | 0d |  |  |  |
| 297 | 4.7.3.74 | 74 补传 | milestone | 0d | 2017-12-31 | 2017-12-31 | 296 |  | 61d |  |  |  |  |
| 298 | 4.7.4 | **2.2.3.6 工作流管理** |  | 4d | 2017-12-31 | 2018-01-04 | 223 |  | 61d |  |  |  |  |
| 299 | 4.7.4.1 | 1 工作流列表页面 | milestone | 0d | 2017-12-31 | 2017-12-31 |  |  | 61d | 0d |  |  |  |
| 300 | 4.7.4.2 | 2 模板维护页面 |  | 2d | 2018-01-01 | 2018-01-02 | 299 |  | 61d | 0d |  |  |  |
| 301 | 4.7.4.3 | 3 创建模板页面 | milestone | 0d | 2018-01-02 | 2018-01-02 | 300 |  | 61d | 0d |  |  |  |
| 302 | 4.7.4.4 | 4 模板批量分配页面 |  | 2d | 2018-01-03 | 2018-01-04 | 301 |  | 61d | 0d |  |  |  |
| 303 | 4.7.4.5 | 5 工作流列表 | milestone | 0d | 2018-01-04 | 2018-01-04 | 302 |  | 61d | 0d |  |  |  |
| 304 | 4.7.4.6 | 6 工作流模板路径列表 | milestone | 0d | 2018-01-04 | 2018-01-04 | 303 |  | 61d | 0d |  |  |  |
| 305 | 4.7.4.7 | 7 工作流模板路径条件 | milestone | 0d | 2018-01-04 | 2018-01-04 | 304 |  | 61d | 0d |  |  |  |
| 306 | 4.7.4.8 | 8 案件合并页面 | milestone | 0d | 2018-01-04 | 2018-01-04 | 305 |  | 61d | 0d |  |  |  |
| 307 | 4.7.4.9 | 9 合并修改页面 | milestone | 0d | 2018-01-04 | 2018-01-04 | 306 |  | 61d |  |  |  |  |
| 308 | 5 | **开发** |  | 136d? | 2017-09-26 A | 2018-03-30 |  | 135.96d? | 0d |  |  | 13184h | 6h |
| 309 | 5.1 | **开发(第一张保单生成并完成打印)** |  | 60d? | 2017-09-26 A | 2017-12-15 |  | 59.85d? | 76d |  |  | 1648h | 6h |
| 310 | 5.1.1 | **前端** |  | 38d | 2017-09-26 | 2017-11-15 |  |  | 98d |  |  |  |  |
| 311 | 5.1.1.1 | **2.1.3.1 登录系统** |  | 2d | 2017-10-20 | 2017-10-23 |  |  | 101d | 0d |  |  |  |
| 312 | 5.1.1.1.1 | 1 登录/登录失败页面/登录成功页面 |  | 1d | 2017-10-20 | 2017-10-20 |  |  | 101d | 0d | start no earlier than 2017-10-20 |  |  |
| 313 | 5.1.1.1.2 | 2 重新登录 |  | 1d | 2017-10-23 | 2017-10-23 | 312 |  | 101d |  |  |  |  |
| 314 | 5.1.1.1.3 | 3 欢迎页面 |  | 1d | 2017-10-20 | 2017-10-20 |  |  | 101d | 0d | start no earlier than 2017-10-20 |  |  |
| 315 | 5.1.1.1.4 | 4 修改密码/修改密码成功与错误页面 |  | 1d | 2017-10-23 | 2017-10-23 | 314 |  | 101d | 0d |  |  |  |

| ID | WBS | Task | Duration | Start | Finish | Predecessors | Total slack | Free slack | Constraint |
| --- | --- | --- | --- | --- | --- | --- | --- | --- | --- |
| 316 | 5.1.1.2 | **2.1.3.4 投保单管理** | 5d | 2017-10-24 | 2017-10-30 | 311, 315 | 101d | 0d |  |
| 317 | 5.1.1.2.1 | 1 出单引导 | 1d | 2017-10-24 | 2017-10-24 |  | 101d | 0d |  |
| 318 | 5.1.1.2.2 | 2 投保单录入页面（基本信息、合同信息、投保人被保险人信息、其他信息） | 3d | 2017-10-25 | 2017-10-27 | 317 | 101d | 0d |  |
| 319 | 5.1.1.2.3 | 3 联合出单录入页面 | 1d | 2017-10-30 | 2017-10-30 | 318 | 101d |  | start no earlier than 2017-10-24 |
| 320 | 5.1.1.2.4 | 4 投保单查询页面 | 1d | 2017-10-24 | 2017-10-24 |  | 101d | 0d |  |
| 321 | 5.1.1.2.5 | 5 查询结果列表页面 | 1d | 2017-10-25 | 2017-10-25 | 320 | 101d | 0d |  |
| 322 | 5.1.1.2.6 | 6 客户密码设置 | 1d | 2017-10-26 | 2017-10-26 | 321 | 101d | 0d |  |
| 323 | 5.1.1.2.7 | 7 客户风险等级设置查询页面 | 1d | 2017-10-27 | 2017-10-27 | 322 | 101d | 0d |  |
| 324 | 5.1.1.2.8 | 8 客户风险等级设置页面 | 1d | 2017-10-30 | 2017-10-30 | 323 | 101d |  |  |
| 325 | 5.1.1.3 | **2.1.3.5 条款版本管理** | 1d | 2017-10-31 | 2017-10-31 | 311, 316 | 101d | 0d |  |
| 326 | 5.1.1.3.1 | 1 创建条款页面 | 1d | 2017-10-31 | 2017-10-31 |  | 101d |  |  |
| 327 | 5.1.1.4 | **2.1.3.6 投保模板管理** | 3d | 2017-11-01 | 2017-11-03 | 325 | 101d | 0d |  |
| 328 | 5.1.1.4.1 | 1 投保模板录入页面 | 1d | 2017-11-01 | 2017-11-01 |  | 101d | 0d |  |
| 329 | 5.1.1.4.2 | 2 投保模板维护查询页面 | 1d | 2017-11-02 | 2017-11-02 | 328 | 101d | 0d |  |
| 330 | 5.1.1.4.3 | 3 投保模板维护页面 | 1d | 2017-11-03 | 2017-11-03 | 329 | 101d |  |  |
| 331 | 5.1.1.4.4 | 4 模板查询页面 | 1d | 2017-11-01 | 2017-11-01 |  | 102d | 0d | start no earlier than 2017-10-31 |
| 332 | 5.1.1.4.5 | 5 模板详细信息查看页面 | 1d | 2017-11-02 | 2017-11-02 | 331 | 102d |  |  |
| 333 | 5.1.1.5 | **2.1.3.7 保单管理** | 2d | 2017-11-06 | 2017-11-07 | 327 | 101d | 0d |  |
| 334 | 5.1.1.5.1 | 1 保单查询页面 | 1d | 2017-11-06 | 2017-11-06 |  | 101d | 0d |  |
| 335 | 5.1.1.5.2 | 2 保单详情查看页面 | 1d | 2017-11-07 | 2017-11-07 | 334 | 101d |  |  |
| 336 | 5.1.1.6 | **2.1.3.8 单证打印** | 2d | 2017-11-08 | 2017-11-09 | 333 | 100d | 0d |  |
| 337 | 5.1.1.6.1 | 1 投保单打印查询页面 | 1d | 2017-11-08 | 2017-11-08 |  | 101d |  |  |
| 338 | 5.1.1.6.2 | 2 保单打印查询页面 | 1d | 2017-11-08 | 2017-11-08 |  | 101d |  |  |
| 339 | 5.1.1.6.3 | 3 保单打印页面 | 1d | 2017-11-08 | 2017-11-08 |  | 101d |  |  |
| 340 | 5.1.1.6.4 | 4 凭证打印查询页面 | 1d | 2017-11-08 | 2017-11-08 |  | 101d |  | start no earlier than 2017-11-07 |
| 341 | 5.1.1.6.5 | 5 打印成功页面 | 1d | 2017-11-09 | 2017-11-09 |  | 100d |  | start no earlier than 2017-11-09 |
| 342 | 5.1.1.6.6 | 6 批单打印查询页面 | 1d | 2017-11-08 | 2017-11-08 |  | 101d |  |  |
| 343 | 5.1.1.6.7 | 7 批单打印处理页面 | 1d | 2017-11-08 | 2017-11-08 |  | 101d |  |  |

| ID | WBS | Task | Duration | Start | Finish | Predecessors | Total slack | Free slack | Constraint | Resources | Work |
| --- | --- | --- | --- | --- | --- | --- | --- | --- | --- | --- | --- |
| 344 | 5.1.1.7 | **2.1.3.9 凭证短信发送** | 2d | 2017-11-10 | 2017-11-13 | 336 | 99d | 0d |  |  |  |
| 345 | 5.1.1.7.1 | 1 创建短信模板 | 1d | 2017-11-10 | 2017-11-10 |  | 100d |  |  |  |  |
| 346 | 5.1.1.7.2 | 2 查询页面 | 1d | 2017-11-10 | 2017-11-10 |  | 100d |  |  |  |  |
| 347 | 5.1.1.7.3 | 3 发送详情 | 1d | 2017-11-13 | 2017-11-13 |  | 99d |  | start no earlier than 2017-11-11 |  |  |
| 348 | 5.1.1.7.4 | 4 汇总信息 | 1d | 2017-11-13 | 2017-11-13 |  | 99d |  | start no earlier than 2017-11-13 |  |  |
| 349 | 5.1.1.7.5 | 5 发送页面 | 1d | 2017-11-13 | 2017-11-13 |  | 99d |  | start no earlier than 2017-11-13 |  |  |
| 350 | 5.1.1.8 | **2.1.3.11 支付信息维护** | 2d | 2017-11-14 | 2017-11-15 | 344 | 98d |  |  |  |  |
| 351 | 5.1.1.8.1 | 1 支付信息录入查询页面 | 1d | 2017-11-14 | 2017-11-14 |  | 99d |  |  |  |  |
| 352 | 5.1.1.8.2 | 2 整单支付信息录入页面 | 1d | 2017-11-14 | 2017-11-14 |  | 99d |  |  |  |  |
| 353 | 5.1.1.8.3 | 3 清单支付页面 | 1d | 2017-11-14 | 2017-11-14 |  | 99d |  | start no earlier than 2017-11-13 |  |  |
| 354 | 5.1.1.8.4 | 4 支付信息查询页面 | 1d | 2017-11-15 | 2017-11-15 |  | 98d |  | start no earlier than 2017-11-15 |  |  |
| 355 | 5.1.1.8.5 | 5 支付信息详情查询页面 | 1d | 2017-11-15 | 2017-11-15 |  | 98d |  | start no earlier than 2017-11-15 |  |  |
| 356 | 5.1.1.9 | 2.1.3.12 业务清单查询 | 2d | 2017-09-26 | 2017-09-27 |  | 131d | 0d |  |  |  |
| 357 | 5.1.1.10 | 2.1.3.13 影像资料 | 3d | 2017-09-28 | 2017-09-30 | 356 | 131d |  |  |  |  |
| 358 | 5.1.2 | **后端** | 21d? | 2017-10-09 | 2017-11-06 |  | 105d |  |  |  | 1512h |
| 359 | 5.1.2.1 | 协议号(团单代码)后台逻辑实现 | 2d | 2017-10-09 | 2017-10-10 |  | 109d | 0d | start no earlier than 2017-10-09 | 何伟东 | 16h |
| 360 | 5.1.2.2 | 开发人员自测 | 1d | 2017-10-11 | 2017-10-11 | 359 | 109d | 0d |  | 何伟东 | 8h |
| 361 | 5.1.2.3 | 归属机构（查询）后台逻辑的实现 | 2d | 2017-10-12 | 2017-10-13 | 360 | 109d | 0d |  | 何伟东 | 16h |
| 362 | 5.1.2.4 | 开发人员自测 | 1d | 2017-10-16 | 2017-10-16 | 361 | 109d | 0d |  | 何伟东 | 8h |
| 363 | 5.1.2.5 | 业务员（查询）后台逻辑的实现 | 1d | 2017-10-17 | 2017-10-17 | 362 | 109d | 0d |  | 何伟东 | 8h |
| 364 | 5.1.2.6 | 开发人员自测 | 1d | 2017-10-18 | 2017-10-18 | 363 | 109d | 0d |  | 何伟东 | 8h |
| 365 | 5.1.2.7 | 基础代码表查询（prpdcode）后台逻辑的实现 | 2d | 2017-10-19 | 2017-10-20 | 364 | 109d | 0d |  | 何伟东 | 16h |
| 366 | 5.1.2.8 | 基础代码表转义逻辑的实现 | 1d | 2017-10-23 | 2017-10-23 | 365 | 109d | 0d |  | 何伟东 | 8h |
| 367 | 5.1.2.9 | 开发人员自测 | 1d | 2017-10-24 | 2017-10-24 | 366 | 109d | 0d |  | 何伟东 | 8h |
| 368 | 5.1.2.10 | 代理人/经纪人（查询）后台逻辑的实现 | 1d | 2017-10-25 | 2017-10-25 | 367 | 109d | 0d |  | 何伟东 | 8h |
| 369 | 5.1.2.11 | 开发人员自测 | 1d | 2017-10-26 | 2017-10-26 | 368 | 109d | 0d |  | 何伟东 | 8h |
| 370 | 5.1.2.12 | 保单查询（查询）列表信息逻辑的实现 | 1d | 2017-10-27 | 2017-10-27 | 369 | 109d | 0d |  | 何伟东 | 8h |
| 371 | 5.1.2.13 | 保单查询详情页面后端逻辑的实现 | 1d | 2017-10-30 | 2017-10-30 | 370 | 109d | 0d |  | 何伟东 | 8h |
| 372 | 5.1.2.14 | 开发人员自测 | 1d | 2017-10-31 | 2017-10-31 | 371 | 109d |  |  | 何伟东 | 8h |
| 373 | 5.1.2.15 | 代理协议号（查询）后台逻辑的实现 | 2d | 2017-10-09 | 2017-10-10 |  | 109d | 0d | start no earlier than 2017-10-09 | 钱浩 | 16h |
| 374 | 5.1.2.16 | 开发人员自测 | 1d | 2017-10-11 | 2017-10-11 | 373 | 109d | 0d |  | 钱浩 | 8h |
| 375 | 5.1.2.17 | 归属区域（查询）后台逻辑的实现 | 2d | 2017-10-12 | 2017-10-13 | 374 | 109d | 0d |  | 钱浩 | 16h |
| 376 | 5.1.2.18 | 开发人员自测 | 1d | 2017-10-16 | 2017-10-16 | 375 | 109d | 0d |  | 钱浩 | 8h |
| 377 | 5.1.2.19 | 承保清单归属区域（查询）后逻辑的实现 | 1d | 2017-10-17 | 2017-10-17 | 376 | 109d | 0d |  | 钱浩 | 8h |
| 378 | 5.1.2.20 | 开发人员自测 | 1d | 2017-10-12 | 2017-10-12 |  | 108d | 0d | start no earlier than 2017-10-12 | 钱浩 | 8h |
| 379 | 5.1.2.21 | 分户清单关联号（查询）后台逻辑的实现 | 2d | 2017-10-13 | 2017-10-16 | 378 | 108d | 0d |  | 钱浩 | 16h |
| 380 | 5.1.2.22 | 开发人员自测 | 1d | 2017-10-17 | 2017-10-17 | 379 | 108d | 0d |  | 钱浩 | 8h |
| 381 | 5.1.2.23 | 投保人、被保险人客户代码(查询)后台逻辑的实现 | 3d | 2017-10-18 | 2017-10-20 | 380 | 108d | 0d |  | 钱浩 | 24h |
| 382 | 5.1.2.24 | 开发人员自测 | 1d | 2017-10-23 | 2017-10-23 | 381 | 108d | 0d |  | 钱浩 | 8h |
| 383 | 5.1.2.25 | 地址信息（查询）后台逻辑的实现 | 1d | 2017-10-24 | 2017-10-24 | 382 | 108d | 0d |  | 钱浩 | 8h |
| 384 | 5.1.2.26 | 开发人员自测 | 1d | 2017-10-25 | 2017-10-25 | 383 | 108d | 0d |  | 钱浩 | 8h |
| 385 | 5.1.2.27 | 发票购货方信息(查询)后台逻辑的实现 | 1d | 2017-10-26 | 2017-10-26 | 384 | 108d | 0d |  | 钱浩 | 8h |
| 386 | 5.1.2.28 | 开发人员自测 | 1d | 2017-10-27 | 2017-10-27 | 385 | 108d | 0d |  | 钱浩 | 8h |
| 387 | 5.1.2.29 | 缴费计划打印 | 2d | 2017-10-30 | 2017-10-31 | 386 | 108d | 0d |  | 钱浩 | 16h |
| 388 | 5.1.2.30 | 开发人员自测 | 1d | 2017-11-01 | 2017-11-01 | 387 | 108d |  |  | 钱浩 | 8h |
| 389 | 5.1.2.31 | 主险、附加险种的险别信息（查询）后台逻辑的实现 | 2d | 2017-10-09 | 2017-10-10 |  | 109d | 0d | start no earlier than 2017-10-09 | 李东松 | 16h |
| 390 | 5.1.2.32 | 开发人员自测 | 1d | 2017-10-11 | 2017-10-11 | 389 | 109d | 0d |  | 李东松 | 8h |
| 391 | 5.1.2.33 | 主险、附加险种的标的类别（查询）后台逻辑的实现 | 2d | 2017-10-12 | 2017-10-13 | 390 | 109d | 0d |  | 李东松 | 16h |
| 392 | 5.1.2.34 | 开发人员自测 | 1d | 2017-10-16 | 2017-10-16 | 391 | 109d | 0d |  | 李东松 | 8h |
| 393 | 5.1.2.35 | 查看清单（查询）后台逻辑的实现 | 2d | 2017-10-17 | 2017-10-18 | 392 | 109d | 0d |  | 李东松 | 16h |
| 394 | 5.1.2.36 | 开发人员自测 | 1d | 2017-10-19 | 2017-10-19 | 393 | 109d | 0d |  | 李东松 | 8h |
| 395 | 5.1.2.37 | 大户信息查询（查询）后台逻辑的查询 | 2d | 2017-10-20 | 2017-10-23 | 394 | 109d | 0d |  | 李东松 | 16h |
| 396 | 5.1.2.38 | 开发人员自测 | 1d | 2017-10-24 | 2017-10-24 | 395 | 109d | 0d |  | 李东松 | 8h |
| 397 | 5.1.2.39 | 特约及附加信息（查询）后台逻辑的实现 | 1d | 2017-10-25 | 2017-10-25 | 396 | 109d | 0d |  | 李东松 | 8h |
| 398 | 5.1.2.40 | 开发人员自测 | 1d | 2017-10-26 | 2017-10-26 | 397 | 109d | 0d |  | 李东松 | 8h |
| 399 | 5.1.2.41 | 凭证打印页面查询逻辑编写 | 1d? | 2017-10-27 | 2017-10-27 | 398 | 109d | 0d |  | 李东松 | 8h |
| 400 | 5.1.2.42 | 短信发送查询逻辑编写 | 1d? | 2017-10-30 | 2017-10-30 | 399 | 109d | 0d |  | 李东松 | 8h |
| 401 | 5.1.2.43 | 开发自测 | 1d? | 2017-10-31 | 2017-10-31 | 400 | 109d |  |  | 李东松 | 8h |
| 402 | 5.1.2.44 | 投保单查询（查询）列表信息逻辑的实现 | 1d | 2017-10-09 | 2017-10-09 |  | 122d | 0d | start no earlier than 2017-10-09 | 陈道洋 | 8h |
| 403 | 5.1.2.45 | 投保单查询信息详情信息后端的逻辑实现 | 2d | 2017-10-10 | 2017-10-11 | 402 | 122d | 0d |  | 陈道洋 | 16h |
| 404 | 5.1.2.46 | 开发人员自测 | 1d | 2017-10-12 | 2017-10-12 | 403 | 122d |  |  | 陈道洋 | 8h |
| 405 | 5.1.2.47 | 保单打印查询信息后端逻辑的实现 | 2d | 2017-10-09 | 2017-10-10 |  | 123d | 0d | start no earlier than 2017-10-09 | 田健 | 16h |
| 406 | 5.1.2.48 | 开发人员自测 | 1d | 2017-10-11 | 2017-10-11 | 405 | 123d |  |  | 田健 | 8h |
| 407 | 5.1.2.49 | 正本打印、副本打印 | 2d | 2017-10-13 | 2017-10-16 |  | 111d | 0d | start no earlier than 2017-10-13 | 田健 | 16h |
| 408 | 5.1.2.50 | 开发人员自测 | 1d | 2017-10-17 | 2017-10-17 | 407 | 111d | 0d |  | 田健 | 8h |
| 409 | 5.1.2.51 | 缴费通知书 | 2d | 2017-10-18 | 2017-10-19 | 408 | 111d | 0d |  | 田健 | 16h |
| 410 | 5.1.2.52 | 开发人员自测 | 1d | 2017-10-20 | 2017-10-20 | 409 | 111d | 0d |  | 田健 | 8h |
| 411 | 5.1.2.53 | 下载B5条款 | 1d | 2017-10-23 | 2017-10-23 | 410 | 111d | 0d |  | 田健 | 8h |
| 412 | 5.1.2.54 | 开发人员自测 | 1d | 2017-10-24 | 2017-10-24 | 411 | 111d | 0d |  | 田健 | 8h |
| 413 | 5.1.2.55 | 缴费计划打印 | 2d | 2017-10-25 | 2017-10-26 | 412 | 111d | 0d |  | 田健 | 16h |

| ID | WBS | Task | Duration | Start | Finish | Predecessors | Total slack | Free slack | Constraint | Resources | Work |
| --- | --- | --- | --- | --- | --- | --- | --- | --- | --- | --- | --- |
| 414 | 5.1.2.56 | 开发人员自测 | 1d | 2017-10-27 | 2017-10-27 | 413 | 111d |  |  | 田健 | 8h |
| 415 | 5.1.2.57 | 特别约定打印 | 2d | 2017-10-09 | 2017-10-10 |  | 118d | 0d | start no earlier than 2017-10-09 | 宋振振 | 16h |
| 416 | 5.1.2.58 | 开发人员自测 | 1d | 2017-10-11 | 2017-10-11 | 415 | 118d | 0d |  | 宋振振 | 8h |
| 417 | 5.1.2.59 | 投保单打印查询信息后端逻辑的实现 | 2d | 2017-10-12 | 2017-10-13 | 416 | 118d | 0d |  | 宋振振 | 16h |
| 418 | 5.1.2.60 | 开发人员自测 | 1d? | 2017-10-16 | 2017-10-16 | 417 | 118d | 0d |  | 宋振振 | 8h |
| 419 | 5.1.2.61 | 标的地址打印 | 2d | 2017-10-17 | 2017-10-18 | 418 | 118d |  |  | 宋振振 | 16h |
| 420 | 5.1.2.62 | 开发人员自测 | 1d | 2017-10-18 | 2017-10-18 | 377 | 109d | 0d |  | 宋振振 | 8h |
| 421 | 5.1.2.63 | 附加险清单打印、主险清单打印 | 3d | 2017-10-19 | 2017-10-23 | 420 | 109d | 0d |  | 宋振振 | 24h |
| 422 | 5.1.2.64 | 开发人员自测 | 1d | 2017-10-24 | 2017-10-24 | 421 | 109d | 0d |  | 宋振振 | 8h |
| 423 | 5.1.2.65 | 承保卷宗封面打印 | 2d | 2017-10-25 | 2017-10-26 | 422 | 109d | 0d |  | 宋振振 | 16h |
| 424 | 5.1.2.66 | 开发人员自测 | 1d | 2017-10-27 | 2017-10-27 | 423 | 109d | 0d |  | 宋振振 | 8h |
| 425 | 5.1.2.67 | 客户密码设置（修改）后端逻辑的实现 | 1d | 2017-10-30 | 2017-10-30 | 424 | 109d | 0d |  | 宋振振 | 8h |
| 426 | 5.1.2.68 | 开发人员自测 | 1d | 2017-10-31 | 2017-10-31 | 425 | 109d |  |  | 宋振振 | 8h |
| 427 | 5.1.2.69 | 投保单号生成逻辑编写 | 2d | 2017-10-09 | 2017-10-10 |  | 116d | 0d | start no earlier than 2017-10-09 | 潘峰 | 16h |
| 428 | 5.1.2.70 | 基础业务表信息存储逻辑编写 | 4d | 2017-10-11 | 2017-10-16 | 427 | 116d | 0d |  | 潘峰 | 32h |
| 429 | 5.1.2.71 | 开发人员自测 | 2d | 2017-10-17 | 2017-10-18 | 428 | 116d | 0d |  | 潘峰 | 16h |
| 430 | 5.1.2.72 | 联合出单投保单号逻辑生成的编写 | 2d | 2017-10-19 | 2017-10-20 | 429 | 116d |  |  | 潘峰 | 16h |
| 431 | 5.1.2.73 | 联合出单业务表保存数据逻辑的编写 | 2d | 2017-10-23 | 2017-10-24 |  | 113d | 0d | finish no earlier than 2017-10-24 | 潘峰 | 16h |
| 432 | 5.1.2.74 | 开发人员自测 | 1d | 2017-10-25 | 2017-10-25 | 431 | 113d |  |  | 潘峰 | 8h |
| 433 | 5.1.2.75 | 投保模板管理_创建模板_合同信息后台逻辑的实现 | 3d | 2017-10-26 | 2017-10-30 |  | 109d | 0d | start no earlier than 2017-10-26 | 潘峰 | 24h |
| 434 | 5.1.2.76 | 开发人员自测 | 1d | 2017-10-31 | 2017-10-31 | 433 | 109d |  |  | 潘峰 | 8h |
| 435 | 5.1.2.77 | 投保模板管理_创建模板_基本信息后台逻辑的实现 | 3d | 2017-10-09 | 2017-10-11 |  | 111d | 0d | start no earlier than 2017-10-09 | 任斌 | 24h |
| 436 | 5.1.2.78 | 开发人员自测 | 1d | 2017-10-12 | 2017-10-12 | 435 | 111d | 0d |  | 任斌 | 8h |
| 437 | 5.1.2.79 | 投保模板管理_创建模板_其他信息后台逻辑的实现 | 3d | 2017-10-13 | 2017-10-17 | 436 | 111d | 0d |  | 任斌 | 24h |
| 438 | 5.1.2.80 | 开发人员自测 | 1d | 2017-10-18 | 2017-10-18 | 437 | 111d | 0d |  | 任斌 | 8h |
| 439 | 5.1.2.81 | 投保模板管理_创建模板_投保人_被保险人的实现 | 3d | 2017-10-19 | 2017-10-23 | 438 | 111d | 0d |  | 任斌 | 24h |
| 440 | 5.1.2.82 | 开发人员自测 | 1d | 2017-10-24 | 2017-10-24 | 439 | 111d | 0d |  | 任斌 | 8h |
| 441 | 5.1.2.83 | 汇总查询（查询）后台逻辑的实现 | 2d | 2017-10-25 | 2017-10-26 | 440 | 111d | 0d |  | 任斌 | 16h |
| 442 | 5.1.2.84 | 开发人员自测 | 1d | 2017-10-27 | 2017-10-27 | 441 | 111d |  |  | 任斌 | 8h |
| 443 | 5.1.2.85 | 投保模板管理基本信息页面 | 3d | 2017-10-09 | 2017-10-11 |  | 106d | 0d | start no earlier than 2017-10-09 | 董坤 | 24h |
| 444 | 5.1.2.86 | 开发人员自测 | 1d | 2017-10-12 | 2017-10-12 | 443 | 106d | 0d |  | 董坤 | 8h |
| 445 | 5.1.2.87 | 投保模板管理合同信息页面 | 3d | 2017-10-13 | 2017-10-17 | 444 | 106d | 0d |  | 董坤 | 24h |
| 446 | 5.1.2.88 | 开发人员自测 | 1d | 2017-10-18 | 2017-10-18 | 445 | 106d | 0d |  | 董坤 | 8h |
| 447 | 5.1.2.89 | 投保模板管理投保人和被保险人信息页面 | 3d | 2017-10-19 | 2017-10-23 | 446 | 106d | 0d |  | 董坤 | 24h |
| 448 | 5.1.2.90 | 开发人员自测 | 1d | 2017-10-24 | 2017-10-24 | 447 | 106d | 0d |  | 董坤 | 8h |
| 449 | 5.1.2.91 | 投保模板管理其他信息页面 | 3d | 2017-10-25 | 2017-10-27 | 448 | 106d | 0d |  | 董坤 | 24h |
| 450 | 5.1.2.92 | 开发人员自测 | 2d | 2017-10-30 | 2017-10-31 | 449 | 106d | 0d |  | 董坤 | 16h |
| 451 | 5.1.2.93 | 凭证打印页面查询逻辑的编写 | 1d? | 2017-11-01 | 2017-11-01 | 450 | 106d | 0d |  | 董坤 | 8h |
| 452 | 5.1.2.94 | 凭证打印短信查询逻辑编写 | 1d? | 2017-11-02 | 2017-11-02 | 451 | 106d | 0d |  | 董坤 | 8h |
| 453 | 5.1.2.95 | 开发自测 | 1d? | 2017-11-03 | 2017-11-03 | 452 | 106d |  |  | 董坤 | 8h |
| 454 | 5.1.2.96 | 投保模板管理其他信息页面 | 3d | 2017-10-09 | 2017-10-11 |  | 108d | 0d | start no earlier than 2017-10-09 | 王保良 | 24h |
| 455 | 5.1.2.97 | 开发人员自测 | 1d | 2017-10-12 | 2017-10-12 | 454 | 108d | 0d |  | 王保良 | 8h |
| 456 | 5.1.2.98 | 投保模板维护查询页面 | 3d | 2017-10-13 | 2017-10-17 | 455 | 108d | 0d |  | 王保良 | 24h |
| 457 | 5.1.2.99 | 开发人员自测 | 1d | 2017-10-18 | 2017-10-18 | 456 | 108d | 0d |  | 王保良 | 8h |
| 458 | 5.1.2.100 | 投保模板维护页面 | 3d | 2017-10-19 | 2017-10-23 | 457 | 108d | 0d |  | 王保良 | 24h |
| 459 | 5.1.2.101 | 开发人员自测 | 1d | 2017-10-24 | 2017-10-24 | 458 | 108d | 0d |  | 王保良 | 8h |
| 460 | 5.1.2.102 | 条款后端服务保存逻辑编写 | 2d | 2017-10-25 | 2017-10-26 | 459 | 108d | 0d |  | 王保良 | 16h |
| 461 | 5.1.2.103 | 开发人员自测 | 1d? | 2017-10-27 | 2017-10-27 | 460 | 108d | 0d |  | 王保良 | 8h |
| 462 | 5.1.2.104 | 条款查询后端逻辑编写 | 2d | 2017-10-30 | 2017-10-31 | 461 | 108d | 0d |  | 王保良 | 16h |
| 463 | 5.1.2.105 | 开发人员自测 | 1d? | 2017-11-01 | 2017-11-01 | 462 | 108d |  |  | 王保良 | 8h |
| 464 | 5.1.2.106 | 条款的修改与删除后端逻辑的开发 | 2d | 2017-11-02 | 2017-11-03 |  | 105d | 0d | start no earlier than 2017-11-02 | 王保良 | 16h |
| 465 | 5.1.2.107 | 开发自测 | 1d | 2017-11-06 | 2017-11-06 | 464 | 105d |  |  | 王保良 | 8h |
| 466 | 5.1.2.108 | 保费计算服务逻辑编写 | 5d | 2017-10-09 | 2017-10-13 |  | 121d |  | start no earlier than 2017-10-09 | 倪大章 | 40h |
| 467 | 5.1.2.109 | 开发人员自测 | 4d | 2017-10-16 | 2017-10-19 |  | 117d |  | start no earlier than 2017-10-16 | 倪大章 | 32h |
| 468 | 5.1.2.110 | 承保前后端测试 | 5d | 2017-10-31 | 2017-11-06 |  | 105d |  | start no earlier than 2017-10-31 | 李东松; 宋振振; 田健 | 120h |

| ID | WBS | Task | Duration | Start | Finish | Predecessors | Complete | Remaining | Total slack | Free slack | Constraint | Resources | Work | Actual work |
| --- | --- | --- | --- | --- | --- | --- | --- | --- | --- | --- | --- | --- | --- | --- |
| 469 | 5.1.3 | **前后端联调** | 45d? | 2017-10-16 A | 2017-12-15 |  | 1% | 44.44d? | 76d |  |  |  | 24h | 6h |
| 470 | 5.1.3.1 | **承保系统系统-第一张保单生成并完成打印** | 38d? | 2017-10-25 A | 2017-12-15 |  | 2% | 37.41d? | 76d |  |  |  | 24h | 6h |
| 471 | 5.1.3.1.1 | 前端框架搭建 | 3d | 2017-10-25 A | 2017-10-28 |  | 25% | 2.25d | 84d | 0d | finish no earlier than 2017-10-28 | 陈澎 | 24h | 6h |
| 472 | 5.1.3.1.2 | **2.1.3.1 登录系统** | 2d | 2017-10-30 | 2017-10-31 | 471 |  |  | 83d | 0d |  |  |  |  |
| 473 | 5.1.3.1.2.1 | 1 登录/登录失败页面/登录成功页面 | 1d | 2017-10-30 | 2017-10-30 |  |  |  | 84d |  | start no earlier than 2017-10-30 |  |  |  |
| 474 | 5.1.3.1.2.2 | 2 重新登录 | 1d | 2017-10-30 | 2017-10-30 |  |  |  | 84d |  | start no earlier than 2017-10-30 |  |  |  |
| 475 | 5.1.3.1.2.3 | 3 欢迎页面 | 1d | 2017-10-31 | 2017-10-31 |  |  |  | 83d |  | start no earlier than 2017-10-31 |  |  |  |
| 476 | 5.1.3.1.2.4 | 4 修改密码/修改密码成功与错误页面 | 1d | 2017-10-30 | 2017-10-30 |  |  |  | 84d |  | start no earlier than 2017-10-30 |  |  |  |
| 477 | 5.1.3.1.3 | **2.1.3.4 投保单管理** | 8d | 2017-11-01 | 2017-11-10 | 472 |  |  | 83d | 0d |  |  |  |  |
| 478 | 5.1.3.1.3.1 | 1 出单引导 | 1d | 2017-11-01 | 2017-11-01 |  |  |  | 83d | 0d |  |  |  |  |
| 479 | 5.1.3.1.3.2 | 2 投保单录入页面（基本信息、合同信息、投保人被保险人信息、其他信息） | 1d | 2017-11-02 | 2017-11-02 | 478 |  |  | 83d | 0d |  |  |  |  |
| 480 | 5.1.3.1.3.3 | 3 联合出单录入页面 | 1d | 2017-11-03 | 2017-11-03 | 479 |  |  | 83d | 0d |  |  |  |  |
| 481 | 5.1.3.1.3.4 | 4 投保单查询页面 | 1d | 2017-11-06 | 2017-11-06 | 480 |  |  | 83d | 0d |  |  |  |  |
| 482 | 5.1.3.1.3.5 | 5 查询结果列表页面 | 1d | 2017-11-07 | 2017-11-07 | 481 |  |  | 83d | 0d |  |  |  |  |
| 483 | 5.1.3.1.3.6 | 6 客户密码设置 | 1d | 2017-11-08 | 2017-11-08 | 482 |  |  | 83d | 0d |  |  |  |  |
| 484 | 5.1.3.1.3.7 | 7 客户风险等级设置查询页面 | 1d | 2017-11-09 | 2017-11-09 | 483 |  |  | 83d | 0d |  |  |  |  |
| 485 | 5.1.3.1.3.8 | 8 客户风险等级设置页面 | 1d | 2017-11-10 | 2017-11-10 | 484 |  |  | 83d |  |  |  |  |  |
| 486 | 5.1.3.1.4 | **2.1.3.5 条款版本管理** | 2d | 2017-11-13 | 2017-11-14 | 477 |  |  | 83d | 0d |  |  |  |  |
| 487 | 5.1.3.1.4.1 | 1 创建条款页面 | 2d | 2017-11-13 | 2017-11-14 |  |  |  | 83d |  |  |  |  |  |
| 488 | 5.1.3.1.5 | **2.1.3.6 投保模板管理** | 5d | 2017-11-15 | 2017-11-21 | 486 |  |  | 83d | 0d |  |  |  |  |
| 489 | 5.1.3.1.5.1 | 1 投保模板录入页面 | 1d | 2017-11-15 | 2017-11-15 |  |  |  | 83d | 0d |  |  |  |  |
| 490 | 5.1.3.1.5.2 | 2 投保模板维护查询页面 | 1d | 2017-11-16 | 2017-11-16 | 489 |  |  | 83d | 0d |  |  |  |  |
| 491 | 5.1.3.1.5.3 | 3 投保模板维护页面 | 1d | 2017-11-17 | 2017-11-17 | 490 |  |  | 83d | 0d |  |  |  |  |
| 492 | 5.1.3.1.5.4 | 4 模板查询页面 | 1d | 2017-11-20 | 2017-11-20 | 491 |  |  | 83d | 0d |  |  |  |  |
| 493 | 5.1.3.1.5.5 | 5 模板详细信息查看页面 | 1d | 2017-11-21 | 2017-11-21 | 492 |  |  | 83d |  |  |  |  |  |

| ID | WBS | Task | Duration | Start | Finish | Predecessors | Total slack | Free slack | Constraint |
| --- | --- | --- | --- | --- | --- | --- | --- | --- | --- |
| 494 | 5.1.3.1.6 | **2.1.3.7 保单管理** | 3d | 2017-11-22 | 2017-11-24 | 488 | 82d | 0d |  |
| 495 | 5.1.3.1.6.1 | 1 保单查询页面 | 1d | 2017-11-22 | 2017-11-22 |  | 84d |  |  |
| 496 | 5.1.3.1.6.2 | 2 保单详情查看页面 | 2d | 2017-11-23 | 2017-11-24 |  | 82d |  | start no earlier than 2017-11-23 |
| 497 | 5.1.3.1.7 | **2.1.3.8 单证打印** | 5d | 2017-11-27 | 2017-12-01 | 494 | 78d | 0d |  |
| 498 | 5.1.3.1.7.1 | 1 投保单打印查询页面 | 1d | 2017-11-27 | 2017-11-27 |  | 82d |  |  |
| 499 | 5.1.3.1.7.2 | 2 保单打印查询页面 | 1d | 2017-11-28 | 2017-11-28 |  | 81d |  | start no earlier than 2017-11-28 |
| 500 | 5.1.3.1.7.3 | 3 保单打印页面 | 1d | 2017-11-29 | 2017-11-29 |  | 80d |  | start no earlier than 2017-11-29 |
| 501 | 5.1.3.1.7.4 | 4 凭证打印查询页面 | 1d | 2017-11-29 | 2017-11-29 |  | 80d |  | start no earlier than 2017-11-29 |
| 502 | 5.1.3.1.7.5 | 5 打印成功页面 | 1d | 2017-11-30 | 2017-11-30 |  | 79d |  | start no earlier than 2017-11-30 |
| 503 | 5.1.3.1.7.6 | 6 批单打印查询页面 | 1d | 2017-11-30 | 2017-11-30 |  | 79d |  | start no earlier than 2017-11-30 |
| 504 | 5.1.3.1.7.7 | 7 批单打印处理页面 | 1d | 2017-12-01 | 2017-12-01 |  | 78d |  | start no earlier than 2017-12-01 |
| 505 | 5.1.3.1.8 | **2.1.3.9 凭证短信发送** | 3d | 2017-12-04 | 2017-12-06 | 497 | 76d | 0d |  |
| 506 | 5.1.3.1.8.1 | 1 创建短信模板 | 1d | 2017-12-04 | 2017-12-04 |  | 78d |  |  |
| 507 | 5.1.3.1.8.2 | 2 查询页面 | 1d | 2017-12-04 | 2017-12-04 |  | 78d |  |  |
| 508 | 5.1.3.1.8.3 | 3 发送详情 | 1d | 2017-12-05 | 2017-12-05 |  | 77d |  | start no earlier than 2017-12-05 |
| 509 | 5.1.3.1.8.4 | 4 汇总信息 | 1d | 2017-12-05 | 2017-12-05 |  | 77d |  | start no earlier than 2017-12-05 |
| 510 | 5.1.3.1.8.5 | 5 发送页面 | 1d | 2017-12-06 | 2017-12-06 |  | 76d |  | start no earlier than 2017-12-06 |
| 511 | 5.1.3.1.9 | **2.1.3.11 支付信息维护** | 1d? | 2017-12-07 | 2017-12-07 | 505 | 76d | 0d |  |
| 512 | 5.1.3.1.9.1 | 1 支付信息录入查询页面 | 1d? | 2017-12-07 | 2017-12-07 |  | 76d |  |  |
| 513 | 5.1.3.1.9.2 | 2 整单支付信息录入页面 | 1d? | 2017-12-07 | 2017-12-07 |  | 76d |  |  |
| 514 | 5.1.3.1.9.3 | 3 清单支付页面 | 1d? | 2017-12-07 | 2017-12-07 |  | 76d |  |  |
| 515 | 5.1.3.1.9.4 | 4 支付信息查询页面 | 1d? | 2017-12-07 | 2017-12-07 |  | 76d |  |  |
| 516 | 5.1.3.1.9.5 | 5 支付信息详情查询页面 | 1d? | 2017-12-07 | 2017-12-07 |  | 76d |  |  |
| 517 | 5.1.3.1.10 | 2.1.3.12 业务清单查询 | 3d | 2017-12-08 | 2017-12-12 | 511 | 76d | 0d |  |
| 518 | 5.1.3.1.11 | 2.1.3.13 影像资料 | 3d | 2017-12-13 | 2017-12-15 | 517 | 76d |  |  |
| 519 | 5.1.3.2 | 中科软核心系统自身改造及对接设计 | 5d? | 2017-10-23 | 2017-10-27 |  | 109d | 0d | finish no earlier than 2017-10-27 |
| 520 | 5.1.3.3 | 中科软核心系统自身改造及对接设计评审 | 2d? | 2017-10-30 | 2017-10-31 | 519 | 109d |  |  |
| 521 | 5.1.3.4 | 数据结构梳理及评审 | 5d? | 2017-10-16 | 2017-10-20 |  | 116d |  | start no earlier than 2017-10-16 |

| ID | WBS | Task | Type | Duration | Start | Finish | Predecessors | Total slack | Free slack | Constraint | Resources | Work |
| --- | --- | --- | --- | --- | --- | --- | --- | --- | --- | --- | --- | --- |
| 522 | 5.1.4 | **调用影像系统提供的服务** |  | 9d? | 2017-10-20 | 2017-11-01 |  | 108d |  |  |  | 72h |
| 523 | 5.1.4.1 | 保单打印时将电子保单自动上传影像系统 |  | 4d | 2017-10-20 | 2017-10-25 |  | 108d | 0d | start no earlier than 2017-10-20 | 倪大章 | 32h |
| 524 | 5.1.4.2 | 凭证打印后生成电子版上传影像系统 |  | 4d | 2017-10-26 | 2017-10-31 | 523 | 108d | 0d |  | 倪大章 | 32h |
| 525 | 5.1.4.3 | 开发自测 |  | 1d? | 2017-11-01 | 2017-11-01 | 524 | 108d |  |  | 倪大章 | 8h |
| 526 | 5.1.5 | **调用短信平台服务** |  | 5d | 2017-11-02 | 2017-11-08 |  | 103d |  |  |  | 40h |
| 527 | 5.1.5.1 | 投保单操作人员短信发送调用 |  | 4d | 2017-11-02 | 2017-11-07 |  | 103d | 0d | start no earlier than 2017-11-02 | 倪大章 | 32h |
| 528 | 5.1.5.2 | 凭证打印后农户短信发送调用 |  | 1d | 2017-11-08 | 2017-11-08 | 527 | 103d |  |  | 倪大章 | 8h |
| 529 | 5.2 | **核心系统批改** |  | 79d? | 2017-09-26 | 2018-01-10 |  | 57d |  |  |  | 1464h |
| 530 | 5.2.1 | **前端** |  | 55d | 2017-09-26 | 2017-12-08 |  | 81d |  |  |  |  |
| 531 | 5.2.1.1 | **承保系统设计-承保系统批改及周边系统对接** |  | 19d | 2017-11-14 | 2017-12-08 |  | 81d |  |  |  |  |
| 532 | 5.2.1.1.1 | 1 普通批改查询页面 |  | 1d | 2017-11-14 | 2017-11-14 |  | 99d |  | start no earlier than 2017-11-14 |  |  |
| 533 | 5.2.1.1.2 | 2 普通批改操作页面 |  | 1d | 2017-11-24 | 2017-11-24 |  | 90d | 0d | start no earlier than 2017-11-24 |  |  |
| 534 | 5.2.1.1.3 | 3 批文录入页面 |  | 1d | 2017-11-27 | 2017-11-27 | 533 | 90d |  |  |  |  |
| 535 | 5.2.1.1.4 | 4 批单保存成功页面 |  | 1d | 2017-11-27 | 2017-11-27 |  | 90d |  | start no earlier than 2017-11-27 |  |  |
| 536 | 5.2.1.1.5 | 5 批单查询页面 |  | 1d | 2017-11-27 | 2017-11-27 |  | 90d |  | start no earlier than 2017-11-27 |  |  |
| 537 | 5.2.1.1.6 | 6 查询结果列表页面 |  | 1d | 2017-11-28 | 2017-11-28 |  | 89d |  | start no earlier than 2017-11-28 |  |  |
| 538 | 5.2.1.1.7 | 7 变更保险期限批改页面 |  | 1d | 2017-11-28 | 2017-11-28 |  | 89d |  | start no earlier than 2017-11-28 |  |  |
| 539 | 5.2.1.1.8 | 8 全单退保批改页面 |  | 1d | 2017-11-28 | 2017-11-28 |  | 89d |  | start no earlier than 2017-11-28 |  |  |
| 540 | 5.2.1.1.9 | 9 保单注销批改页面 |  | 1d | 2017-11-29 | 2017-11-29 |  | 88d |  | start no earlier than 2017-11-29 |  |  |
| 541 | 5.2.1.1.10 | 10 见费出单保单注销页面 |  | 1d | 2017-11-29 | 2017-11-29 |  | 88d |  | start no earlier than 2017-11-29 |  |  |
| 542 | 5.2.1.1.11 | 11 业务来源批改页面 |  | 1d | 2017-11-29 | 2017-11-29 |  | 88d |  | start no earlier than 2017-11-29 |  |  |
| 543 | 5.2.1.1.12 | 12 业务员批改页面 |  | 1d | 2017-11-30 | 2017-11-30 |  | 87d |  | start no earlier than 2017-11-30 |  |  |
| 544 | 5.2.1.1.13 | 13 调整费率页面 |  | 1d | 2017-11-30 | 2017-11-30 |  | 87d |  | start no earlier than 2017-11-30 |  |  |
| 545 | 5.2.1.1.14 | 14 调整单位保额页面 |  | 1d | 2017-11-30 | 2017-11-30 |  | 87d |  | start no earlier than 2017-11-30 |  |  |
| 546 | 5.2.1.1.15 | 15 调整补贴比例 |  | 1d | 2017-12-01 | 2017-12-01 |  | 86d |  | start no earlier than 2017-12-01 |  |  |
| 547 | 5.2.1.1.16 | 16 批文录入页面 |  | 1d | 2017-12-01 | 2017-12-01 |  | 86d |  | start no earlier than 2017-12-01 |  |  |
| 548 | 5.2.1.1.17 | 17 批单保存成功页面 |  | 1d | 2017-12-01 | 2017-12-01 |  | 86d |  | start no earlier than 2017-12-01 |  |  |
| 549 | 5.2.1.1.18 | 18 批单管理首页面 |  | 1d | 2017-12-04 | 2017-12-04 |  | 85d |  | start no earlier than 2017-12-04 |  |  |
| 550 | 5.2.1.1.19 | 19 批单管理查询页面 |  | 1d | 2017-12-04 | 2017-12-04 |  | 85d |  | start no earlier than 2017-12-04 |  |  |
| 551 | 5.2.1.1.20 | 20 批文修改页面 |  | 1d | 2017-12-04 | 2017-12-04 |  | 85d |  | start no earlier than 2017-12-04 |  |  |
| 552 | 5.2.1.1.21 | 21 批单删除页面 |  | 1d | 2017-12-05 | 2017-12-05 |  | 84d |  | start no earlier than 2017-12-05 |  |  |
| 553 | 5.2.1.1.22 | 22 手工提交核批页面 |  | 1d | 2017-12-05 | 2017-12-05 |  | 84d |  | start no earlier than 2017-12-05 |  |  |
| 554 | 5.2.1.1.23 | 23 查询页面 |  | 1d | 2017-12-05 | 2017-12-05 |  | 84d |  | start no earlier than 2017-12-05 |  |  |
| 555 | 5.2.1.1.24 | 24 批单查询结果列表页面 |  | 1d | 2017-12-06 | 2017-12-06 |  | 83d |  | start no earlier than 2017-12-06 |  |  |
| 556 | 5.2.1.1.25 | 25 批单详情查看页面 |  | 1d | 2017-12-06 | 2017-12-06 |  | 83d |  | start no earlier than 2017-12-06 |  |  |
| 557 | 5.2.1.1.26 | 26 批改前清单信息页面 |  | 1d | 2017-12-07 | 2017-12-07 |  | 82d |  | start no earlier than 2017-12-07 |  |  |
| 558 | 5.2.1.1.27 | 27 批改后清单信息页面 |  | 1d | 2017-12-07 | 2017-12-07 |  | 82d |  | start no earlier than 2017-12-07 |  |  |
| 559 | 5.2.1.1.28 | 28 批改变化量信息页面 |  | 1d | 2017-12-08 | 2017-12-08 |  | 81d |  | start no earlier than 2017-12-08 |  |  |
| 560 | 5.2.1.2 | 承保系统设计-承保新险种开发完毕（20个产品） | milestone | 0d | 2017-09-26 | 2017-09-26 |  | 136d |  |  |  |  |

| ID | WBS | Task | Duration | Start | Finish | Predecessors | Total slack | Free slack | Constraint | Resources | Work |
| --- | --- | --- | --- | --- | --- | --- | --- | --- | --- | --- | --- |
| 561 | 5.2.2 | **后端** | 28d? | 2017-11-01 | 2017-12-08 |  | 81d |  |  |  | 1288h |
| 562 | 5.2.2.1 | 普通批单录入查询后端逻辑的实现 | 1d | 2017-11-01 | 2017-11-01 |  | 108d |  | start no earlier than 2017-11-01 | 何伟东 | 8h |
| 563 | 5.2.2.2 | 普通批单录入保存，后端逻辑的实现 | 5d | 2017-11-02 | 2017-11-08 |  | 103d |  | start no earlier than 2017-11-02 | 何伟东 | 40h |
| 564 | 5.2.2.3 | 批单号生成逻辑的实现 | 2d | 2017-11-07 | 2017-11-08 |  | 100d | 0d | start no earlier than 2017-11-07 | 何伟东 | 16h |
| 565 | 5.2.2.4 | 开发自测 | 2d | 2017-11-10 | 2017-11-13 |  | 92d | 0d | start no earlier than 2017-11-10 | 何伟东 | 16h |
| 566 | 5.2.2.5 | 全局批改-变更保险期限查询后端逻辑的实现 | 1d | 2017-11-14 | 2017-11-14 | 565 | 92d | 0d |  | 何伟东 | 8h |
| 567 | 5.2.2.6 | 全局批改-变更保险期限单个保单保存逻辑的实现 | 2d | 2017-11-15 | 2017-11-16 | 566 | 92d | 0d |  | 何伟东 | 16h |
| 568 | 5.2.2.7 | 全局批改-变更保险期限保存多个保单逻辑的实现 | 3d | 2017-11-17 | 2017-11-21 | 567 | 92d | 0d |  | 何伟东 | 24h |
| 569 | 5.2.2.8 | 开发自测 | 2d | 2017-11-22 | 2017-11-23 | 568 | 92d |  |  | 何伟东 | 16h |
| 570 | 5.2.2.9 | 全局批改-业务员批改页面查询后端逻辑的实现 | 1d | 2017-11-24 | 2017-11-24 |  | 86d | 0d | start no earlier than 2017-11-24 | 何伟东 | 8h |
| 571 | 5.2.2.10 | 全局批改-业务员批改单个保单后端保存逻辑的实现 | 2d | 2017-11-27 | 2017-11-28 | 570 | 86d | 0d |  | 何伟东 | 16h |
| 572 | 5.2.2.11 | 全局批改-业务员批改多个保单后端保存逻辑的实现 | 2d | 2017-11-29 | 2017-11-30 | 571 | 86d | 0d |  | 何伟东 | 16h |
| 573 | 5.2.2.12 | 开发自测 | 1d | 2017-12-01 | 2017-12-01 | 572 | 86d |  |  | 何伟东 | 8h |
| 574 | 5.2.2.13 | 全局批改-全单退保查询后端逻辑的实现 | 1d | 2017-11-06 | 2017-11-06 |  | 104d | 0d | start no earlier than 2017-11-06 | 陈道洋 | 8h |
| 575 | 5.2.2.14 | 全局批改-全单退保单个保单退保逻辑的实现 | 2d | 2017-11-07 | 2017-11-08 |  | 103d |  | start no earlier than 2017-11-07 | 陈道洋 | 16h |
| 576 | 5.2.2.15 | 全局批改-全单退保多个保单退保逻辑的实现 | 3d | 2017-11-09 | 2017-11-13 | 564 | 100d |  |  | 陈道洋 | 24h |
| 577 | 5.2.2.16 | 开发自测 | 2d | 2017-11-10 | 2017-11-13 |  | 86d | 0d | start no earlier than 2017-11-10 | 陈道洋 | 16h |
| 578 | 5.2.2.17 | 全局批改-保单注销后端查询逻辑的实现 | 1d | 2017-11-14 | 2017-11-14 | 577 | 86d | 0d |  | 陈道洋 | 8h |
| 579 | 5.2.2.18 | 全局批改-保单注销单个保单注销后端逻辑的实现 | 2d | 2017-11-15 | 2017-11-16 | 578 | 86d | 0d |  | 陈道洋 | 16h |
| 580 | 5.2.2.19 | 全局批改-保单注销多个保单注销后端逻辑的实现 | 3d | 2017-11-17 | 2017-11-21 | 579 | 86d | 0d |  | 陈道洋 | 24h |
| 581 | 5.2.2.20 | 开发自测 | 2d | 2017-11-22 | 2017-11-23 | 580 | 86d | 0d |  | 陈道洋 | 16h |
| 582 | 5.2.2.21 | 全局批改-业务来源批改页面查询后端逻辑的实现 | 1d | 2017-11-24 | 2017-11-24 | 581 | 86d | 0d |  | 陈道洋 | 8h |
| 583 | 5.2.2.22 | 全局批改-业务来源批改单个保单批改后端保存逻辑的实现 | 2d | 2017-11-27 | 2017-11-28 | 582 | 86d | 0d |  | 陈道洋 | 16h |
| 584 | 5.2.2.23 | 全局批改-业务来源批改多个保单批改后端保存逻辑的实现 | 2d | 2017-11-29 | 2017-11-30 | 583 | 86d | 0d |  | 陈道洋 | 16h |
| 585 | 5.2.2.24 | 开发自测 | 1d | 2017-12-01 | 2017-12-01 | 584 | 86d |  |  | 陈道洋 | 8h |
| 586 | 5.2.2.25 | 全局批改-批文批改后端查询逻辑的实现 | 1d | 2017-11-07 | 2017-11-07 | 574 | 104d |  |  | 李东松 | 8h |
| 587 | 5.2.2.26 | 全局批改-批文批改单个保单保存逻辑的实现 | 2d | 2017-11-08 | 2017-11-09 |  | 83d | 0d | start no earlier than 2017-11-08 | 李东松 | 16h |
| 588 | 5.2.2.27 | 全局批改-批文批改多个保单保存逻辑的实现 | 3d | 2017-11-10 | 2017-11-14 | 587 | 83d | 0d |  | 李东松 | 24h |
| 589 | 5.2.2.28 | 开发自测 | 2d | 2017-11-15 | 2017-11-16 | 588 | 83d | 0d |  | 李东松 | 16h |
| 590 | 5.2.2.29 | 全局批改-批单删除后端查询逻辑的实现 | 1d | 2017-11-17 | 2017-11-17 | 589 | 83d | 0d |  | 李东松 | 8h |
| 591 | 5.2.2.30 | 全局批改-批单删除单个保单后端逻辑的实现 | 2d | 2017-11-20 | 2017-11-21 | 590 | 83d | 0d |  | 李东松 | 16h |
| 592 | 5.2.2.31 | 全局批改-批单删除多个保单后端逻辑的实现 | 3d | 2017-11-22 | 2017-11-24 | 591 | 83d | 0d |  | 李东松 | 24h |
| 593 | 5.2.2.32 | 开发自测 | 2d | 2017-11-27 | 2017-11-28 | 592 | 83d | 0d |  | 李东松 | 16h |
| 594 | 5.2.2.33 | 全局批改-调整费率页面后端查询逻辑的实现 | 1d | 2017-11-29 | 2017-11-29 | 593 | 83d | 0d |  | 李东松 | 8h |
| 595 | 5.2.2.34 | 全局批改-调整费率单个保单保存逻辑的实现 | 2d | 2017-11-30 | 2017-12-01 | 594 | 83d | 0d |  | 李东松 | 16h |
| 596 | 5.2.2.35 | 全局批改-调整费率多个保单保存逻辑的实现 | 2d | 2017-12-04 | 2017-12-05 | 595 | 83d | 0d |  | 李东松 | 16h |
| 597 | 5.2.2.36 | 开发自测 | 1d | 2017-12-06 | 2017-12-06 | 596 | 83d |  |  | 李东松 | 8h |
| 598 | 5.2.2.37 | 全局批改-手工核批后端查询逻辑的实现 | 1d | 2017-11-07 | 2017-11-07 |  | 90d | 0d | start no earlier than 2017-11-07 | 田健 | 8h |
| 599 | 5.2.2.38 | 全局批改-手工核批单个保单提交双核逻辑的实现 | 1d | 2017-11-08 | 2017-11-08 | 598 | 90d | 0d |  | 田健 | 8h |
| 600 | 5.2.2.39 | 全局批改-手工核批多个保单提交双核逻辑的实现 | 2d | 2017-11-09 | 2017-11-10 | 599 | 90d | 0d |  | 田健 | 16h |
| 601 | 5.2.2.40 | 开发自测 | 1d | 2017-11-13 | 2017-11-13 | 600 | 90d | 0d |  | 田健 | 8h |
| 602 | 5.2.2.41 | 批单列表查询后端逻辑的实现 | 1d | 2017-11-14 | 2017-11-14 | 601 | 90d | 0d |  | 田健 | 8h |
| 603 | 5.2.2.42 | 批单详情页面信息后端逻辑的实现 | 2d | 2017-11-15 | 2017-11-16 | 602 | 90d | 0d |  | 田健 | 16h |
| 604 | 5.2.2.43 | 开发自测 | 1d | 2017-11-17 | 2017-11-17 | 603 | 90d | 0d |  | 田健 | 8h |
| 605 | 5.2.2.44 | 批单正本打印逻辑的实现 | 2d | 2017-11-20 | 2017-11-21 | 604 | 90d | 0d |  | 田健 | 16h |
| 606 | 5.2.2.45 | 开发自测 | 1d | 2017-11-22 | 2017-11-22 | 605 | 90d | 0d |  | 田健 | 8h |
| 607 | 5.2.2.46 | 批单抄本打印后端逻辑的实现 | 2d | 2017-11-23 | 2017-11-24 | 606 | 90d | 0d |  | 田健 | 16h |
| 608 | 5.2.2.47 | 开发自测 | 1d | 2017-11-27 | 2017-11-27 | 607 | 90d |  |  | 田健 | 8h |
| 609 | 5.2.2.48 | 全局批改_批改查询逻辑的实现 | 1d | 2017-11-01 | 2017-11-01 |  | 99d | 0d | start no earlier than 2017-11-01 | 董坤 | 8h |
| 610 | 5.2.2.49 | 全局批改_批改查询查详情页面获取信息后端逻辑的实现 | 2d | 2017-11-02 | 2017-11-03 | 609 | 99d | 0d |  | 董坤 | 16h |
| 611 | 5.2.2.50 | 开发自测 | 1d | 2017-11-06 | 2017-11-06 | 610 | 99d | 0d |  | 董坤 | 8h |
| 612 | 5.2.2.51 | 全局批改-调整补贴页面查询后端逻辑的实现 | 1d | 2017-11-07 | 2017-11-07 | 611 | 99d | 0d |  | 董坤 | 8h |
| 613 | 5.2.2.52 | 全局批改-调整补贴单个保单保存后端逻辑的实现 | 3d | 2017-11-08 | 2017-11-10 | 612 | 99d | 0d |  | 董坤 | 24h |
| 614 | 5.2.2.53 | 全局批改-调整补贴多个保单保存后端逻辑的实现 | 2d | 2017-11-13 | 2017-11-14 | 613 | 99d |  |  | 董坤 | 16h |
| 615 | 5.2.2.54 | 开发自测 | 1d | 2017-11-15 | 2017-11-15 |  | 89d | 0d | start no earlier than 2017-11-15 | 董坤 | 8h |
| 616 | 5.2.2.55 | 全局批改时，保费计算服务的编写 | 5d | 2017-11-16 | 2017-11-22 | 615 | 89d | 0d |  | 董坤 | 40h |
| 617 | 5.2.2.56 | 保费计算服务接口文档的编写 | 1d? | 2017-11-23 | 2017-11-23 | 616 | 89d | 0d |  | 董坤 | 8h |
| 618 | 5.2.2.57 | 开发自测 | 3d | 2017-11-24 | 2017-11-28 | 617 | 89d |  |  | 董坤 | 24h |
| 619 | 5.2.2.58 | 全局批改-分户清单替换批改后端查询逻辑的实现 | 1d | 2017-11-01 | 2017-11-01 |  | 106d | 0d | start no earlier than 2017-11-01 | 潘峰 | 8h |
| 620 | 5.2.2.59 | 全局批改-分户清单替换批改单个保单批改保存逻辑的实现 | 2d | 2017-11-02 | 2017-11-03 | 619 | 106d |  |  | 潘峰 | 16h |
| 621 | 5.2.2.60 | 全局批改-分户清单替换批改多个保单批改保存逻辑的实现 | 3d | 2017-11-06 | 2017-11-08 |  | 89d | 0d | start no earlier than 2017-11-06 | 潘峰 | 24h |
| 622 | 5.2.2.61 | 开发自测 | 2d | 2017-11-09 | 2017-11-10 | 621 | 89d | 0d |  | 潘峰 | 16h |
| 623 | 5.2.2.62 | 影像资料上传页面获取后端信息的逻辑实现 | 2d | 2017-11-13 | 2017-11-14 | 622 | 89d | 0d |  | 潘峰 | 16h |
| 624 | 5.2.2.63 | 影像资料上传后端逻辑的实现 | 3d | 2017-11-15 | 2017-11-17 | 623 | 89d | 0d |  | 潘峰 | 24h |
| 625 | 5.2.2.64 | 开发自测 | 1d | 2017-11-20 | 2017-11-20 | 624 | 89d | 0d |  | 潘峰 | 8h |
| 626 | 5.2.2.65 | 全局批改-调整单位保额页面查询后端逻辑的实现 | 1d | 2017-11-21 | 2017-11-21 | 625 | 89d | 0d |  | 潘峰 | 8h |
| 627 | 5.2.2.66 | 全局批改-调整单位保额单个保单保存后端逻辑的实现 | 2d | 2017-11-22 | 2017-11-23 | 626 | 89d | 0d |  | 潘峰 | 16h |
| 628 | 5.2.2.67 | 全局批改-调整单位保额多个保单保存后端逻辑的实现 | 2d | 2017-11-24 | 2017-11-27 | 627 | 89d | 0d |  | 潘峰 | 16h |
| 629 | 5.2.2.68 | 开发自测 | 1d | 2017-11-28 | 2017-11-28 | 628 | 89d |  |  | 潘峰 | 8h |
| 630 | 5.2.2.69 | 新增支付页面获取后端信息逻辑的实现 | 1d | 2017-11-29 | 2017-11-29 |  | 85d | 0d | start no earlier than 2017-11-29 | 潘峰 | 8h |

| ID | WBS | Task | Duration | Start | Finish | Predecessors | Total slack | Free slack | Constraint | Resources | Work |
| --- | --- | --- | --- | --- | --- | --- | --- | --- | --- | --- | --- |
| 631 | 5.2.2.70 | 新增支付页面后端保存逻辑的实现 | 3d | 2017-11-30 | 2017-12-04 | 630 | 85d |  |  | 潘峰 | 24h |
| 632 | 5.2.2.71 | 开发自测 | 1d | 2017-11-07 | 2017-11-07 |  | 81d | 0d | start no earlier than 2017-11-07 | 王保良 | 8h |
| 633 | 5.2.2.72 | 支付暂存页面获取信息后端逻辑的实现 | 2d | 2017-11-08 | 2017-11-09 | 632 | 81d | 0d |  | 王保良 | 16h |
| 634 | 5.2.2.73 | 支付暂存页面后端保存逻辑的实现 | 3d | 2017-11-10 | 2017-11-14 | 633 | 81d | 0d |  | 王保良 | 24h |
| 635 | 5.2.2.74 | 开发自测 | 1d | 2017-11-15 | 2017-11-15 | 634 | 81d | 0d |  | 王保良 | 8h |
| 636 | 5.2.2.75 | 支付退回页面信息获取后端逻辑的实现 | 2d | 2017-11-16 | 2017-11-17 | 635 | 81d | 0d |  | 王保良 | 16h |
| 637 | 5.2.2.76 | 支付退回后端逻辑的实现 | 3d | 2017-11-20 | 2017-11-22 | 636 | 81d | 0d |  | 王保良 | 24h |
| 638 | 5.2.2.77 | 开发自测 | 1d | 2017-11-23 | 2017-11-23 | 637 | 81d | 0d |  | 王保良 | 8h |
| 639 | 5.2.2.78 | 全局批改-见费出单注销查询逻辑的实现 | 1d | 2017-11-24 | 2017-11-24 | 638 | 81d | 0d |  | 王保良 | 8h |
| 640 | 5.2.2.79 | 全局批改-见费出单单个保单注销逻辑的实现 | 2d | 2017-11-27 | 2017-11-28 | 639 | 81d | 0d | start no earlier than 2017-11-24 | 王保良 | 16h |
| 641 | 5.2.2.80 | 全局批改-见费出单多个保单注销逻辑的实现 | 2d | 2017-11-29 | 2017-11-30 | 640 | 81d | 0d | start no earlier than 2017-11-28 | 王保良 | 16h |
| 642 | 5.2.2.81 | 开发自测 | 1d | 2017-12-01 | 2017-12-01 | 641 | 81d | 0d | start no earlier than 2017-12-01 | 王保良 | 8h |
| 643 | 5.2.2.82 | 前后端联调测试 | 5d | 2017-12-04 | 2017-12-08 | 642 | 81d |  |  | 董坤; 田健; 王保良 | 120h |
| 644 | 5.2.3 | **前后端联调** | 79d | 2017-09-26 | 2018-01-10 |  | 57d |  |  |  |  |
| 645 | 5.2.3.1 | **承保系统设计-承保系统批改及周边系统对接** | 79d | 2017-09-26 | 2018-01-10 |  | 57d |  |  |  |  |
| 646 | 5.2.3.1.1 | 1 普通批改查询页面 | 1d | 2017-09-26 | 2017-09-26 |  | 135d |  |  |  |  |
| 647 | 5.2.3.1.2 | 2 普通批改操作页面 | 1d | 2017-09-26 | 2017-09-26 |  | 135d |  |  |  |  |
| 648 | 5.2.3.1.3 | 3 批文录入页面 | 1d | 2017-12-19 | 2017-12-19 |  | 74d |  | start no earlier than 2017-12-19 |  |  |
| 649 | 5.2.3.1.4 | 4 批单保存成功页面 | 1d | 2017-12-19 | 2017-12-19 |  | 74d |  | start no earlier than 2017-12-19 |  |  |
| 650 | 5.2.3.1.5 | 5 批单查询页面 | 1d | 2017-12-20 | 2017-12-20 |  | 73d |  | start no earlier than 2017-12-20 |  |  |
| 651 | 5.2.3.1.6 | 6 查询结果列表页面 | 1d | 2017-12-20 | 2017-12-20 |  | 73d |  | start no earlier than 2017-12-20 |  |  |
| 652 | 5.2.3.1.7 | 7 变更保险期限批改页面 | 1d | 2017-12-21 | 2017-12-21 |  | 72d |  | start no earlier than 2017-12-21 |  |  |
| 653 | 5.2.3.1.8 | 8 全单退保批改页面 | 1d | 2017-12-21 | 2017-12-21 |  | 72d |  | start no earlier than 2017-12-21 |  |  |
| 654 | 5.2.3.1.9 | 9 保单注销批改页面 | 1d | 2017-12-22 | 2017-12-22 |  | 71d |  | start no earlier than 2017-12-22 |  |  |
| 655 | 5.2.3.1.10 | 10 见费出单保单注销页面 | 1d | 2017-12-22 | 2017-12-22 |  | 71d |  | start no earlier than 2017-12-22 |  |  |
| 656 | 5.2.3.1.11 | 11 业务来源批改页面 | 1d | 2017-12-25 | 2017-12-25 |  | 70d |  | start no earlier than 2017-12-25 |  |  |
| 657 | 5.2.3.1.12 | 12 业务员批改页面 | 1d | 2017-12-26 | 2017-12-26 |  | 69d |  | start no earlier than 2017-12-26 |  |  |
| 658 | 5.2.3.1.13 | 13 调整费率页面 | 1d | 2017-12-26 | 2017-12-26 |  | 69d |  | start no earlier than 2017-12-26 |  |  |
| 659 | 5.2.3.1.14 | 14 调整单位保额页面 | 1d | 2017-12-27 | 2017-12-27 |  | 68d |  | start no earlier than 2017-12-27 |  |  |
| 660 | 5.2.3.1.15 | 15 调整补贴比例 | 1d | 2017-12-27 | 2017-12-27 |  | 68d |  | start no earlier than 2017-12-27 |  |  |
| 661 | 5.2.3.1.16 | 16 批文录入页面 | 1d | 2017-12-28 | 2017-12-28 |  | 67d |  | start no earlier than 2017-12-28 |  |  |
| 662 | 5.2.3.1.17 | 17 批单保存成功页面 | 1d | 2017-12-28 | 2017-12-28 |  | 67d |  | start no earlier than 2017-12-28 |  |  |
| 663 | 5.2.3.1.18 | 18 批单管理首页面 | 1d | 2017-12-29 | 2017-12-29 |  | 66d |  | start no earlier than 2017-12-29 |  |  |
| 664 | 5.2.3.1.19 | 19 批单管理查询页面 | 1d | 2018-01-02 | 2018-01-02 |  | 63d |  | start no earlier than 2018-01-02 |  |  |
| 665 | 5.2.3.1.20 | 20 批文修改页面 | 1d | 2018-01-03 | 2018-01-03 |  | 62d |  | start no earlier than 2018-01-03 |  |  |
| 666 | 5.2.3.1.21 | 21 批单删除页面 | 1d | 2018-01-03 | 2018-01-03 |  | 62d |  | start no earlier than 2018-01-03 |  |  |
| 667 | 5.2.3.1.22 | 22 手工提交核批页面 | 1d | 2018-01-04 | 2018-01-04 |  | 61d |  | start no earlier than 2018-01-04 |  |  |
| 668 | 5.2.3.1.23 | 23 查询页面 | 1d | 2018-01-05 | 2018-01-05 |  | 60d |  | start no earlier than 2018-01-05 |  |  |
| 669 | 5.2.3.1.24 | 24 批单查询结果列表页面 | 1d | 2018-01-08 | 2018-01-08 |  | 59d |  | start no earlier than 2018-01-08 |  |  |
| 670 | 5.2.3.1.25 | 25 批单详情查看页面 | 1d | 2018-01-08 | 2018-01-08 |  | 59d |  | start no earlier than 2018-01-08 |  |  |
| 671 | 5.2.3.1.26 | 26 批改前清单信息页面 | 1d | 2018-01-09 | 2018-01-09 |  | 58d |  | start no earlier than 2018-01-09 |  |  |
| 672 | 5.2.3.1.27 | 27 批改后清单信息页面 | 1d | 2018-01-09 | 2018-01-09 |  | 58d |  | start no earlier than 2018-01-09 |  |  |
| 673 | 5.2.3.1.28 | 28 批改变化量信息页面 | 1d | 2018-01-10 | 2018-01-10 |  | 57d |  | start no earlier than 2018-01-10 |  |  |
| 674 | 5.2.3.2 | 承保系统设计-承保新险种开发完毕（20个产品） | 1d | 2018-01-03 | 2018-01-03 |  | 62d |  | start no earlier than 2018-01-03 |  |  |

| ID | WBS | Task | Duration | Start | Finish | Predecessors | Total slack | Free slack | Constraint | Resources | Work |
| --- | --- | --- | --- | --- | --- | --- | --- | --- | --- | --- | --- |
| 675 | 5.2.4 | **调用影像系统提供的服务** | 8d | 2017-11-10 | 2017-11-21 |  | 94d |  |  |  | 64h |
| 676 | 5.2.4.1 | 电子批单自动上传影像系统 | 4d | 2017-11-10 | 2017-11-15 |  | 94d | 0d | start no earlier than 2017-11-10 | 董坤 | 32h |
| 677 | 5.2.4.2 | 电子批单自动上传影像系统 | 4d | 2017-11-16 | 2017-11-21 | 676 | 94d |  |  | 董坤 | 32h |
| 678 | 5.2.5 | **与精准扶贫相关功能（承保系统功能）** | 8d | 2017-11-22 | 2017-12-01 |  | 86d |  |  |  | 64h |
| 679 | 5.2.5.1 | 扶贫清单导入 | 4d | 2017-11-22 | 2017-11-27 |  | 86d | 0d | start no earlier than 2017-11-22 | 董坤 | 32h |
| 680 | 5.2.5.2 | 贫困户信息查询 | 4d | 2017-11-28 | 2017-12-01 | 679 | 86d |  |  | 董坤 | 32h |
| 681 | 5.2.6 | **调用短信平台服务** | 6d? | 2017-11-23 | 2017-11-30 |  | 87d |  |  |  | 48h |
| 682 | 5.2.6.1 | 批改操作人员短信发送（普通+全局）调用 | 5d | 2017-11-23 | 2017-11-29 |  | 88d |  | start no earlier than 2017-11-23 | 董坤 | 40h |
| 683 | 5.2.6.2 | 开发自测 | 1d? | 2017-11-30 | 2017-11-30 |  | 87d |  | start no earlier than 2017-11-30 | 董坤 | 8h |
| 684 | 5.3 | **交易清单系统（承保）** | 55d? | 2017-09-26 | 2017-12-08 |  | 81d |  |  |  | 528h |
| 685 | 5.3.1 | **前端** | 3d | 2017-09-26 | 2017-09-28 |  | 133d |  |  |  |  |
| 686 | 5.3.1.1 | 交易清单系统 | 3d | 2017-09-26 | 2017-09-28 |  | 133d |  |  |  |  |
| 687 | 5.3.2 | **后端** | 42d? | 2017-10-12 | 2017-12-08 |  | 81d |  |  |  | 528h |
| 688 | 5.3.2.1 | **清单同步服务接口** | 8d? | 2017-10-12 | 2017-10-23 |  | 115d |  |  |  | 64h |
| 689 | 5.3.2.1.1 | 开发接口 | 4d | 2017-10-12 | 2017-10-17 |  | 115d | 0d | start no earlier than 2017-10-12 | 陈道洋 | 32h |
| 690 | 5.3.2.1.2 | 接口文档整理 | 1d? | 2017-10-18 | 2017-10-18 | 689 | 115d | 0d |  | 陈道洋 | 8h |
| 691 | 5.3.2.1.3 | 开发自测 | 3d | 2017-10-19 | 2017-10-23 | 690 | 115d |  |  | 陈道洋 | 24h |
| 692 | 5.3.2.2 | **投保单回写接口** | 9d? | 2017-10-24 | 2017-11-03 |  | 106d |  |  |  | 72h |
| 693 | 5.3.2.2.1 | 投保单生成接口的开发 | 5d | 2017-10-24 | 2017-10-30 |  | 106d | 0d | start no earlier than 2017-10-24 | 陈道洋 | 40h |
| 694 | 5.3.2.2.2 | 接口文档整理 | 1d? | 2017-10-31 | 2017-10-31 | 693 | 106d | 0d |  | 陈道洋 | 8h |
| 695 | 5.3.2.2.3 | 开发自测 | 3d | 2017-11-01 | 2017-11-03 | 694 | 106d |  |  | 陈道洋 | 24h |
| 696 | 5.3.2.3 | **清单查询接口** | 8d? | 2017-10-30 | 2017-11-08 |  | 103d |  |  |  | 64h |
| 697 | 5.3.2.3.1 | 清单查询接口的开发 | 4d | 2017-10-30 | 2017-11-02 |  | 107d |  | start no earlier than 2017-10-30 | 钱浩 | 32h |
| 698 | 5.3.2.3.2 | 接口文档整理 | 1d? | 2017-11-03 | 2017-11-03 |  | 106d |  | start no earlier than 2017-11-03 | 钱浩 | 8h |
| 699 | 5.3.2.3.3 | 开发自测 | 3d | 2017-11-06 | 2017-11-08 |  | 103d |  | start no earlier than 2017-11-06 | 钱浩 | 24h |

| ID | WBS | Task | Duration | Start | Finish | Predecessors | Total slack | Free slack | Constraint | Resources | Work |
| --- | --- | --- | --- | --- | --- | --- | --- | --- | --- | --- | --- |
| 700 | 5.3.2.4 | **保单相关信息回写接口** | 9d | 2017-10-12 | 2017-10-24 |  | 114d |  |  |  | 72h |
| 701 | 5.3.2.4.1 | 关于保单相关的信息接口的开发 | 5d | 2017-10-12 | 2017-10-18 |  | 114d | 0d | start no earlier than 2017-10-12 | 梁耀泽 | 40h |
| 702 | 5.3.2.4.2 | 接口文档整理 | 1d | 2017-10-19 | 2017-10-19 | 701 | 114d | 0d |  | 梁耀泽 | 8h |
| 703 | 5.3.2.4.3 | 开发自测 | 3d | 2017-10-20 | 2017-10-24 | 702 | 114d |  |  | 梁耀泽 | 24h |
| 704 | 5.3.2.5 | **险别清单回写接口** | 33d? | 2017-10-25 | 2017-12-08 |  | 81d |  |  |  | 256h |
| 705 | 5.3.2.5.1 | 关于险别清单的接口开发 | 4d | 2017-10-25 | 2017-10-30 |  | 106d | 0d | start no earlier than 2017-10-25 | 马俊玲 | 32h |
| 706 | 5.3.2.5.2 | 接口文档整理 | 1d | 2017-10-31 | 2017-10-31 | 705 | 106d | 0d |  | 马俊玲 | 8h |
| 707 | 5.3.2.5.3 | 开发自测 | 3d | 2017-11-01 | 2017-11-03 | 706 | 106d |  |  | 马俊玲 | 24h |
| 708 | 5.3.2.5.4 | **批改前清单信息回写接口** | 8d? | 2017-11-07 | 2017-11-16 |  | 97d |  |  |  | 64h |
| 709 | 5.3.2.5.4.1 | 批改前，交易清单系统接口的开发 | 4d | 2017-11-07 | 2017-11-10 |  | 97d | 0d | start no earlier than 2017-11-07 | 宋振振 | 32h |
| 710 | 5.3.2.5.4.2 | 接口文档整理 | 1d? | 2017-11-13 | 2017-11-13 | 709 | 97d | 0d |  | 宋振振 | 8h |
| 711 | 5.3.2.5.4.3 | 开发自测 | 3d | 2017-11-14 | 2017-11-16 | 710 | 97d |  |  | 宋振振 | 24h |
| 712 | 5.3.2.5.5 | **批改后清单信息回写接口** | 8d? | 2017-11-17 | 2017-11-28 |  | 89d |  |  |  | 64h |
| 713 | 5.3.2.5.5.1 | 批发后，清单交易系统接口的开发 | 4d | 2017-11-17 | 2017-11-22 |  | 89d | 0d | start no earlier than 2017-11-17 | 宋振振 | 32h |
| 714 | 5.3.2.5.5.2 | 接口文档整理 | 1d? | 2017-11-23 | 2017-11-23 | 713 | 89d | 0d |  | 宋振振 | 8h |
| 715 | 5.3.2.5.5.3 | 开发自测 | 3d | 2017-11-24 | 2017-11-28 | 714 | 89d |  |  | 宋振振 | 24h |
| 716 | 5.3.2.5.6 | **批改变化量清单信息回写** | 8d? | 2017-11-29 | 2017-12-08 |  | 81d |  |  |  | 64h |
| 717 | 5.3.2.5.6.1 | 关于批改后变化量交易清单接口的开发 | 4d | 2017-11-29 | 2017-12-04 |  | 81d | 0d | start no earlier than 2017-11-29 | 宋振振 | 32h |
| 718 | 5.3.2.5.6.2 | 接口文档整理 | 1d? | 2017-12-05 | 2017-12-05 | 717 | 81d | 0d |  | 宋振振 | 8h |
| 719 | 5.3.2.5.6.3 | 开发自测 | 3d | 2017-12-06 | 2017-12-08 | 718 | 81d |  |  | 宋振振 | 24h |
| 720 | 5.4 | **周边系统（与承保相关）** | 76d? | 2017-10-16 | 2018-01-26 |  | 45d |  |  |  | 1848h |
| 721 | 5.4.1 | **原核心系统** | 76d? | 2017-10-16 | 2018-01-26 |  | 45d |  |  |  | 1848h |
| 722 | 5.4.1.1 | **双核系统** | 7d? | 2017-10-16 | 2017-10-24 |  | 114d |  |  |  | 56h |
| 723 | 5.4.1.1.1 | 提供投保单提交双核服务接口 | 4d | 2017-10-16 | 2017-10-19 |  | 114d | 0d | start no earlier than 2017-10-16 | 童兴辉 | 32h |
| 724 | 5.4.1.1.2 | 接口文档整理 | 1d? | 2017-10-20 | 2017-10-20 | 723 | 114d | 0d |  | 童兴辉 | 8h |
| 725 | 5.4.1.1.3 | 开发自测 | 2d | 2017-10-23 | 2017-10-24 | 724 | 114d |  |  | 童兴辉 | 16h |

| ID | WBS | Task | Duration | Start | Finish | Predecessors | Total slack | Free slack | Constraint | Resources | Work |
| --- | --- | --- | --- | --- | --- | --- | --- | --- | --- | --- | --- |
| 726 | 5.4.1.2 | **再保系统** | 6d? | 2017-11-20 | 2017-11-27 |  | 90d |  |  |  | 48h |
| 727 | 5.4.1.2.1 | 再保提供投保单危险单位生成服务 | 4d | 2017-11-20 | 2017-11-23 |  | 90d | 0d | start no earlier than 2017-11-20 | 钱浩 | 32h |
| 728 | 5.4.1.2.2 | 接口文档整理 | 1d? | 2017-11-24 | 2017-11-24 | 727 | 90d | 0d |  | 钱浩 | 8h |
| 729 | 5.4.1.2.3 | 开发自测 | 1d? | 2017-11-27 | 2017-11-27 | 728 | 90d |  |  | 钱浩 | 8h |
| 730 | 5.4.1.3 | **客户自助查询** | 16d? | 2017-11-28 | 2017-12-19 |  | 74d |  |  |  | 192h |
| 731 | 5.4.1.3.1 | 电子保单查询 | 5d | 2017-12-01 | 2017-12-07 |  | 79d | 0d | start no earlier than 2017-12-01 | 任斌 | 40h |
| 732 | 5.4.1.3.2 | 接口文档整理 | 1d? | 2017-12-08 | 2017-12-08 | 731 | 79d | 0d |  | 任斌 | 8h |
| 733 | 5.4.1.3.3 | 开发自测 | 2d | 2017-12-11 | 2017-12-12 | 732 | 79d |  |  | 任斌 | 16h |
| 734 | 5.4.1.3.4 | 保险凭证验证查询功能 | 5d | 2017-11-28 | 2017-12-04 |  | 74d | 0d | start no earlier than 2017-11-28 | 钱浩 | 40h |
| 735 | 5.4.1.3.5 | 接口文档整理 | 1d? | 2017-12-05 | 2017-12-05 | 734 | 74d | 0d |  | 钱浩 | 8h |
| 736 | 5.4.1.3.6 | 开发自测 | 2d | 2017-12-06 | 2017-12-07 | 735 | 74d | 0d |  | 钱浩 | 16h |
| 737 | 5.4.1.3.7 | 电子批单验证查询功能 | 5d | 2017-12-08 | 2017-12-14 | 736 | 74d | 0d |  | 钱浩 | 40h |
| 738 | 5.4.1.3.8 | 接口文档整理 | 1d? | 2017-12-15 | 2017-12-15 | 737 | 74d | 0d |  | 钱浩 | 8h |
| 739 | 5.4.1.3.9 | 开发自测 | 2d | 2017-12-18 | 2017-12-19 | 738 | 74d |  |  | 钱浩 | 16h |
| 740 | 5.4.1.4 | **客户管理系统和GIS服务对接** | 13d? | 2017-11-29 | 2017-12-15 |  | 76d |  |  |  | 192h |
| 741 | 5.4.1.4.1 | 在投保单录入调用关联清单数据 | 3d | 2017-12-04 | 2017-12-06 |  | 81d | 0d | start no earlier than 2017-12-04 | 陈道洋 | 24h |
| 742 | 5.4.1.4.2 | 接口文档整理 | 1d? | 2017-12-07 | 2017-12-07 | 741 | 81d | 0d |  | 陈道洋 | 8h |
| 743 | 5.4.1.4.3 | 开发自测 | 1d | 2017-12-08 | 2017-12-08 | 742 | 81d |  |  | 陈道洋 | 8h |
| 744 | 5.4.1.4.4 | 在投保单录入-投保人/被保险人信息调用 | 3d | 2017-12-04 | 2017-12-06 |  | 81d | 0d | start no earlier than 2017-12-04 | 何伟东 | 24h |
| 745 | 5.4.1.4.5 | 接口文档整理 | 1d? | 2017-12-07 | 2017-12-07 |  | 82d |  | start no earlier than 2017-12-07 | 何伟东 | 8h |
| 746 | 5.4.1.4.6 | 开发自测 | 1d? | 2017-12-08 | 2017-12-08 |  | 81d |  | start no earlier than 2017-12-08 | 何伟东 | 8h |
| 747 | 5.4.1.4.7 | 在种植险理算-获取银行支付信息调用 | 4d | 2017-12-07 | 2017-12-12 |  | 76d | 0d | start no earlier than 2017-12-07 | 李东松 | 32h |
| 748 | 5.4.1.4.8 | 接口文档整理 | 1d? | 2017-12-13 | 2017-12-13 | 747 | 76d | 0d |  | 李东松 | 8h |
| 749 | 5.4.1.4.9 | 开发自测 | 2d | 2017-12-14 | 2017-12-15 | 748 | 76d |  |  | 李东松 | 16h |
| 750 | 5.4.1.4.10 | 在种植险提交核赔-更新客户银行基础数据调用 | 4d | 2017-11-29 | 2017-12-04 |  | 84d | 0d | start no earlier than 2017-11-29 | 潘峰 | 32h |
| 751 | 5.4.1.4.11 | 接口文档整理 | 1d? | 2017-12-05 | 2017-12-05 | 750 | 84d |  |  | 潘峰 | 8h |
| 752 | 5.4.1.4.12 | 开发自测 | 2d | 2017-12-07 | 2017-12-08 | 744 | 81d |  |  | 潘峰 | 16h |

| ID | WBS | Task | Duration | Start | Finish | Predecessors | Total slack | Free slack | Constraint | Resources | Work |
| --- | --- | --- | --- | --- | --- | --- | --- | --- | --- | --- | --- |
| 753 | 5.4.1.5 | **邮箱发送** | 42d? | 2017-12-01 | 2018-01-26 |  | 45d |  |  |  | 1360h |
| 754 | 5.4.1.5.1 | 将电子保单发送至相关人员 | 3d | 2017-12-11 | 2017-12-13 |  | 71d | 0d | start no earlier than 2017-12-11 | 潘峰 | 24h |
| 755 | 5.4.1.5.2 | 接口文档整理 | 1d? | 2017-12-14 | 2017-12-14 | 754 | 71d | 0d |  | 潘峰 | 8h |
| 756 | 5.4.1.5.3 | 开发自测 | 1d? | 2017-12-15 | 2017-12-15 | 755 | 71d | 0d |  | 潘峰 | 8h |
| 757 | 5.4.1.5.4 | 将电子批单发送至相关人员 | 3d | 2017-12-18 | 2017-12-20 | 756 | 71d | 0d |  | 潘峰 | 24h |
| 758 | 5.4.1.5.5 | 接口文档整理 | 1d? | 2017-12-21 | 2017-12-21 | 757 | 71d | 0d |  | 潘峰 | 8h |
| 759 | 5.4.1.5.6 | 开发自测 | 1d? | 2017-12-22 | 2017-12-22 | 758 | 71d |  |  | 潘峰 | 8h |
| 760 | 5.4.1.5.7 | **新险种开发** | 42d | 2017-12-01 | 2018-01-26 |  | 45d |  |  |  | 1280h |
| 761 | 5.4.1.5.7.1 | 承保-险种1 | 3d | 2017-12-11 | 2017-12-13 |  | 61d | 0d | start no earlier than 2017-12-11 | 宋振振 | 24h |
| 762 | 5.4.1.5.7.2 | 开发自测 | 1d | 2017-12-14 | 2017-12-14 | 761 | 61d | 0d |  | 宋振振 | 8h |
| 763 | 5.4.1.5.7.3 | 承保-险种2 | 3d | 2017-12-15 | 2017-12-19 | 762 | 61d | 0d |  | 宋振振 | 24h |
| 764 | 5.4.1.5.7.4 | 开发自测 | 1d | 2017-12-20 | 2017-12-20 | 763 | 61d | 0d |  | 宋振振 | 8h |
| 765 | 5.4.1.5.7.5 | 承保-险种3 | 3d | 2017-12-21 | 2017-12-25 | 764 | 61d | 0d |  | 宋振振 | 24h |
| 766 | 5.4.1.5.7.6 | 开发自测 | 1d | 2017-12-26 | 2017-12-26 | 765 | 61d | 0d |  | 宋振振 | 8h |
| 767 | 5.4.1.5.7.7 | 承保-险种4 | 3d | 2017-12-27 | 2017-12-29 | 766 | 61d | 0d |  | 宋振振 | 24h |
| 768 | 5.4.1.5.7.8 | 开发自测 | 1d | 2017-12-31 | 2017-12-31 | 767 | 61d | 0d |  | 宋振振 | 8h |
| 769 | 5.4.1.5.7.9 | 承保-险种5 | 3d | 2018-01-01 | 2018-01-03 | 768 | 61d | 0d |  | 宋振振 | 24h |
| 770 | 5.4.1.5.7.10 | 开发自测 | 1d | 2018-01-04 | 2018-01-04 | 769 | 61d |  |  | 宋振振 | 8h |
| 771 | 5.4.1.5.7.11 | 承保-险种6 | 3d | 2017-12-13 | 2017-12-15 |  | 67d | 0d | start no earlier than 2017-12-13 | 何伟东 | 24h |
| 772 | 5.4.1.5.7.12 | 开发自测 | 1d | 2017-12-18 | 2017-12-18 | 771 | 67d | 0d |  | 何伟东 | 8h |
| 773 | 5.4.1.5.7.13 | 承保-险种7 | 3d | 2017-12-19 | 2017-12-21 | 772 | 67d | 0d |  | 何伟东 | 24h |
| 774 | 5.4.1.5.7.14 | 开发自测 | 1d | 2017-12-22 | 2017-12-22 | 773 | 67d | 0d |  | 何伟东 | 8h |
| 775 | 5.4.1.5.7.15 | 承保-险种8 | 3d | 2017-12-25 | 2017-12-27 | 774 | 67d | 0d |  | 何伟东 | 24h |
| 776 | 5.4.1.5.7.16 | 开发自测 | 1d | 2017-12-28 | 2017-12-28 | 775 | 67d |  |  | 何伟东 | 8h |
| 777 | 5.4.1.5.7.17 | 承保-险种9 | 3d | 2017-12-07 | 2017-12-11 |  | 63d | 0d | start no earlier than 2017-12-07 | 李东松 | 24h |
| 778 | 5.4.1.5.7.18 | 开发自测 | 1d | 2017-12-12 | 2017-12-12 | 777 | 63d | 0d |  | 李东松 | 8h |
| 779 | 5.4.1.5.7.19 | 承保-险种10 | 3d | 2017-12-13 | 2017-12-15 | 778 | 63d | 0d |  | 李东松 | 24h |
| 780 | 5.4.1.5.7.20 | 开发自测 | 1d | 2017-12-18 | 2017-12-18 | 779 | 63d | 0d |  | 李东松 | 8h |
| 781 | 5.4.1.5.7.21 | 承保-险种11 | 3d | 2017-12-19 | 2017-12-21 | 780 | 63d | 0d |  | 李东松 | 24h |
| 782 | 5.4.1.5.7.22 | 开发自测 | 1d | 2017-12-22 | 2017-12-22 | 781 | 63d | 0d |  | 李东松 | 8h |
| 783 | 5.4.1.5.7.23 | 承保-险种12 | 3d | 2017-12-25 | 2017-12-27 | 782 | 63d | 0d |  | 李东松 | 24h |
| 784 | 5.4.1.5.7.24 | 开发自测 | 1d | 2017-12-28 | 2017-12-28 | 783 | 63d | 0d |  | 李东松 | 8h |
| 785 | 5.4.1.5.7.25 | 承保-险种13 | 3d | 2017-12-29 | 2018-01-01 | 784 | 63d | 0d |  | 李东松 | 24h |
| 786 | 5.4.1.5.7.26 | 开发自测 | 1d | 2018-01-02 | 2018-01-02 | 785 | 63d |  |  | 李东松 | 8h |
| 787 | 5.4.1.5.7.27 | 承保-险种14 | 3d | 2017-12-11 | 2017-12-13 |  | 61d | 0d | start no earlier than 2017-12-11 | 田健 | 24h |
| 788 | 5.4.1.5.7.28 | 开发自测 | 1d | 2017-12-14 | 2017-12-14 | 787 | 61d | 0d |  | 田健 | 8h |
| 789 | 5.4.1.5.7.29 | 承保-险种15 | 3d | 2017-12-15 | 2017-12-19 | 788 | 61d | 0d |  | 田健 | 24h |
| 790 | 5.4.1.5.7.30 | 开发自测 | 1d | 2017-12-20 | 2017-12-20 | 789 | 61d | 0d |  | 田健 | 8h |
| 791 | 5.4.1.5.7.31 | 承保-险种16 | 2d | 2017-12-21 | 2017-12-22 | 790 | 61d | 0d |  | 田健 | 16h |
| 792 | 5.4.1.5.7.32 | 开发自测 | 1d | 2017-12-25 | 2017-12-25 | 791 | 61d | 0d |  | 田健 | 8h |
| 793 | 5.4.1.5.7.33 | 承保-险种17 | 2d | 2017-12-26 | 2017-12-27 | 792 | 61d | 0d |  | 田健 | 16h |
| 794 | 5.4.1.5.7.34 | 开发自测 | 1d | 2017-12-28 | 2017-12-28 | 793 | 61d | 0d |  | 田健 | 8h |
| 795 | 5.4.1.5.7.35 | 承保-险种18 | 2d | 2017-12-29 | 2017-12-31 | 794 | 61d | 0d |  | 田健 | 16h |
| 796 | 5.4.1.5.7.36 | 开发自测 | 1d | 2018-01-01 | 2018-01-01 | 795 | 61d | 0d |  | 田健 | 8h |
| 797 | 5.4.1.5.7.37 | 承保-险种19 | 2d | 2018-01-02 | 2018-01-03 | 796 | 61d | 0d |  | 田健 | 16h |
| 798 | 5.4.1.5.7.38 | 开发自测 | 1d | 2018-01-04 | 2018-01-04 | 797 | 61d |  |  | 田健 | 8h |
| 799 | 5.4.1.5.7.39 | 批改-险种1 | 3d | 2017-12-11 | 2017-12-13 |  | 70d | 0d | start no earlier than 2017-12-11 | 陈道洋 | 24h |
| 800 | 5.4.1.5.7.40 | 开发自测 | 1d | 2017-12-14 | 2017-12-14 | 799 | 70d | 0d |  | 陈道洋 | 8h |
| 801 | 5.4.1.5.7.41 | 批改-险种2 | 3d | 2017-12-15 | 2017-12-19 | 800 | 70d | 0d |  | 陈道洋 | 24h |
| 802 | 5.4.1.5.7.42 | 开发自测 | 1d | 2017-12-20 | 2017-12-20 | 801 | 70d | 0d |  | 陈道洋 | 8h |
| 803 | 5.4.1.5.7.43 | 批改-险种3 | 3d | 2017-12-21 | 2017-12-25 | 802 | 70d |  |  | 陈道洋 | 24h |
| 804 | 5.4.1.5.7.44 | 开发自测 | 1d | 2018-01-26 | 2018-01-26 |  | 45d |  | start no earlier than 2018-01-26 | 陈道洋 | 8h |
| 805 | 5.4.1.5.7.45 | 批改-险种4 | 3d | 2017-12-27 | 2017-12-29 |  | 58d | 0d | start no earlier than 2017-12-27 | 陈道洋 | 24h |
| 806 | 5.4.1.5.7.46 | 开发自测 | 1d | 2017-12-31 | 2017-12-31 | 805 | 58d | 0d |  | 陈道洋 | 8h |
| 807 | 5.4.1.5.7.47 | 批改-险种5 | 3d | 2018-01-01 | 2018-01-03 | 806 | 58d | 0d |  | 陈道洋 | 24h |
| 808 | 5.4.1.5.7.48 | 开发自测 | 1d | 2018-01-04 | 2018-01-04 | 807 | 58d | 0d |  | 陈道洋 | 8h |
| 809 | 5.4.1.5.7.49 | 批改-险种6 | 3d | 2017-12-20 | 2017-12-22 |  | 62d | 0d | start no earlier than 2017-12-20 | 钱浩 | 24h |
| 810 | 5.4.1.5.7.50 | 开发自测 | 1d | 2017-12-25 | 2017-12-25 | 809 | 62d | 0d |  | 钱浩 | 8h |
| 811 | 5.4.1.5.7.51 | 批改-险种7 | 3d | 2017-12-26 | 2017-12-28 | 810 | 62d | 0d |  | 钱浩 | 24h |
| 812 | 5.4.1.5.7.52 | 开发自测 | 1d | 2017-12-29 | 2017-12-29 | 811 | 62d | 0d |  | 钱浩 | 8h |
| 813 | 5.4.1.5.7.53 | 批改-险种8 | 3d | 2017-12-31 | 2018-01-02 | 812 | 62d | 0d |  | 钱浩 | 24h |
| 814 | 5.4.1.5.7.54 | 开发自测 | 1d | 2018-01-03 | 2018-01-03 | 813 | 62d |  |  | 钱浩 | 8h |
| 815 | 5.4.1.5.7.55 | 批改-险种9 | 3d | 2017-12-01 | 2017-12-05 |  | 63d | 0d | start no earlier than 2017-12-01 | 倪大章 | 24h |
| 816 | 5.4.1.5.7.56 | 开发自测 | 1d | 2017-12-06 | 2017-12-06 | 815 | 63d | 0d |  | 倪大章 | 8h |
| 817 | 5.4.1.5.7.57 | 批改-险种10 | 3d | 2017-12-07 | 2017-12-11 | 816 | 63d | 0d |  | 倪大章 | 24h |
| 818 | 5.4.1.5.7.58 | 开发自测 | 1d | 2017-12-12 | 2017-12-12 | 817 | 63d | 0d |  | 倪大章 | 8h |
| 819 | 5.4.1.5.7.59 | 批改-险种11 | 3d | 2017-12-13 | 2017-12-15 | 818 | 63d | 0d |  | 倪大章 | 24h |
| 820 | 5.4.1.5.7.60 | 开发自测 | 1d | 2017-12-18 | 2017-12-18 | 819 | 63d | 0d |  | 倪大章 | 8h |
| 821 | 5.4.1.5.7.61 | 批改-险种12 | 3d | 2017-12-19 | 2017-12-21 | 820 | 63d | 0d |  | 倪大章 | 24h |
| 822 | 5.4.1.5.7.62 | 开发自测 | 1d | 2017-12-22 | 2017-12-22 | 821 | 63d | 0d |  | 倪大章 | 8h |

| ID | WBS | Task | Duration | Start | Finish | Predecessors | Total slack | Free slack | Constraint | Resources | Work |
| --- | --- | --- | --- | --- | --- | --- | --- | --- | --- | --- | --- |
| 823 | 5.4.1.5.7.63 | 批改-险种13 | 3d | 2017-12-25 | 2017-12-27 | 822 | 63d | 0d |  | 倪大章 | 24h |
| 824 | 5.4.1.5.7.64 | 开发自测 | 1d | 2017-12-28 | 2017-12-28 | 823 | 63d | 0d |  | 倪大章 | 8h |
| 825 | 5.4.1.5.7.65 | 批改-险种14 | 3d | 2017-12-29 | 2018-01-01 | 824 | 63d | 0d |  | 倪大章 | 24h |
| 826 | 5.4.1.5.7.66 | 开发自测 | 1d | 2018-01-02 | 2018-01-02 | 825 | 63d |  |  | 倪大章 | 8h |
| 827 | 5.4.1.5.7.67 | 批改-险种15 | 3d | 2017-12-08 | 2017-12-12 |  | 62d | 0d | start no earlier than 2017-12-08 | 王保良 | 24h |
| 828 | 5.4.1.5.7.68 | 开发自测 | 1d | 2017-12-13 | 2017-12-13 | 827 | 62d | 0d |  | 王保良 | 8h |
| 829 | 5.4.1.5.7.69 | 批改-险种16 | 3d | 2017-12-14 | 2017-12-18 | 828 | 62d | 0d |  | 王保良 | 24h |
| 830 | 5.4.1.5.7.70 | 开发自测 | 1d | 2017-12-19 | 2017-12-19 | 829 | 62d | 0d |  | 王保良 | 8h |
| 831 | 5.4.1.5.7.71 | 批改-险种17 | 3d | 2017-12-20 | 2017-12-22 | 830 | 62d | 0d |  | 王保良 | 24h |
| 832 | 5.4.1.5.7.72 | 开发自测 | 1d | 2017-12-25 | 2017-12-25 | 831 | 62d | 0d |  | 王保良 | 8h |
| 833 | 5.4.1.5.7.73 | 批改-险种18 | 3d | 2017-12-26 | 2017-12-28 | 832 | 62d | 0d |  | 王保良 | 24h |
| 834 | 5.4.1.5.7.74 | 开发自测 | 1d | 2017-12-29 | 2017-12-29 | 833 | 62d | 0d |  | 王保良 | 8h |
| 835 | 5.4.1.5.7.75 | 批改-险种19 | 3d | 2017-12-31 | 2018-01-02 | 834 | 62d | 0d |  | 王保良 | 24h |
| 836 | 5.4.1.5.7.76 | 开发自测 | 1d | 2018-01-03 | 2018-01-03 | 835 | 62d |  |  | 王保良 | 8h |
| 837 | 5.4.1.5.7.77 | 新险种的前后端整合 | 3d | 2018-01-05 | 2018-01-09 | 808 | 58d |  |  | 田健; 何伟东; 王保良; 钱浩 | 96h |
| 838 | 5.5 | **理赔系统** | 125d? | 2017-09-26 | 2018-03-15 |  | 11d |  |  |  | 7696h |
| 839 | 5.5.1 | **前端** | 87d | 2017-09-26 | 2018-01-22 |  | 49d |  |  |  |  |
| 840 | 5.5.1.1 | **2.2.3.1 登录系统** | 1d | 2017-09-26 | 2017-09-26 |  | 129d | 0d |  |  |  |
| 841 | 5.5.1.1.1 | 1 登录 | 1d | 2017-09-26 | 2017-09-26 |  | 129d |  |  |  |  |
| 842 | 5.5.1.1.2 | 2 重新登录 | 1d | 2017-09-26 | 2017-09-26 |  | 129d |  |  |  |  |
| 843 | 5.5.1.1.3 | 3 修改密码 | 1d | 2017-09-26 | 2017-09-26 |  | 129d |  |  |  |  |
| 844 | 5.5.1.2 | **2.2.3.4 我的任务** | 1d | 2017-09-27 | 2017-09-27 | 840 | 129d | 0d |  |  |  |
| 845 | 5.5.1.2.1 | 1 我的任务 | 1d | 2017-09-27 | 2017-09-27 |  | 129d |  |  |  |  |
| 846 | 5.5.1.3 | **2.2.3.5 理赔管理** | 85d | 2017-09-28 | 2018-01-22 | 844 | 49d |  |  |  |  |
| 847 | 5.5.1.3.1 | 1 报案登记查询页面 | 1d | 2017-09-28 | 2017-09-28 |  | 129d | 0d |  |  |  |
| 848 | 5.5.1.3.2 | 2 报案登记页面 | 1d | 2017-09-29 | 2017-09-29 | 847 | 129d | 0d |  |  |  |
| 849 | 5.5.1.3.3 | 3 正在处理报案任务查询页面 | 1d | 2017-09-30 | 2017-09-30 | 848 | 129d | 0d |  |  |  |
| 850 | 5.5.1.3.4 | 4 正在处理报案任务操作页面 | 1d | 2017-10-02 | 2017-10-02 | 849 | 129d | 0d |  |  |  |
| 851 | 5.5.1.3.5 | 5 报案任务查询页面 | 1d | 2017-10-03 | 2017-10-03 | 850 | 129d |  |  |  |  |
| 852 | 5.5.1.3.6 | 6 报案任务详情查看页面 | 1d | 2017-12-19 | 2017-12-19 |  | 74d |  | start no earlier than 2017-12-19 |  |  |
| 853 | 5.5.1.3.7 | 7 待处理调度任务查询页面 | 1d | 2017-12-19 | 2017-12-19 |  | 74d |  | start no earlier than 2017-12-19 |  |  |
| 854 | 5.5.1.3.8 | 8 待处理调度任务操作页面 | 1d | 2017-12-20 | 2017-12-20 |  | 73d |  | start no earlier than 2017-12-20 |  |  |
| 855 | 5.5.1.3.9 | 9 正在处理调度任务查询页面 | 1d | 2017-12-20 | 2017-12-20 |  | 73d |  | start no earlier than 2017-12-20 |  |  |
| 856 | 5.5.1.3.10 | 10 正在处理调度任务页面 | 1d | 2017-12-20 | 2017-12-20 |  | 73d |  | start no earlier than 2017-12-20 |  |  |
| 857 | 5.5.1.3.11 | 11 调度改派查询页面 | 1d | 2017-12-21 | 2017-12-21 |  | 72d |  | start no earlier than 2017-12-21 |  |  |
| 858 | 5.5.1.3.12 | 12 调度改派页面 | 1d | 2017-12-21 | 2017-12-21 |  | 72d |  | start no earlier than 2017-12-21 |  |  |
| 859 | 5.5.1.3.13 | 13 调度任务查询页面 | 1d | 2017-12-21 | 2017-12-21 |  | 72d |  | start no earlier than 2017-12-21 |  |  |
| 860 | 5.5.1.3.14 | 14 调度任务详情查看页面 | 1d | 2017-12-22 | 2017-12-22 |  | 71d |  | start no earlier than 2017-12-22 |  |  |
| 861 | 5.5.1.3.15 | 15 班表查询页面 | 1d | 2017-12-22 | 2017-12-22 |  | 71d |  | start no earlier than 2017-12-22 |  |  |
| 862 | 5.5.1.3.16 | 16 未处理查勘定损查询页面 | 1d | 2017-12-22 | 2017-12-22 |  | 71d |  | start no earlier than 2017-12-22 |  |  |
| 863 | 5.5.1.3.17 | 17 未处理查勘定损任务操作页面 | 1d | 2017-12-25 | 2017-12-25 |  | 70d |  | start no earlier than 2017-12-25 |  |  |
| 864 | 5.5.1.3.18 | 18 正在处理查勘定损任务查询页面 | 1d | 2017-12-26 | 2017-12-26 |  | 69d |  | start no earlier than 2017-12-26 |  |  |
| 865 | 5.5.1.3.19 | 19 正在处理查勘定损任务操作页面 | 1d | 2017-12-27 | 2017-12-27 |  | 68d |  | start no earlier than 2017-12-27 |  |  |
| 866 | 5.5.1.3.20 | 20 查勘定损任务查询页面 | 1d | 2017-12-27 | 2017-12-27 |  | 68d |  | start no earlier than 2017-12-27 |  |  |
| 867 | 5.5.1.3.21 | 21 查勘定损任务详情查看页面 | 1d | 2017-12-28 | 2017-12-28 |  | 67d |  | start no earlier than 2017-12-28 |  |  |
| 868 | 5.5.1.3.22 | 22 未处理立案任务查询页面 | 1d | 2017-12-28 | 2017-12-28 |  | 67d |  | start no earlier than 2017-12-28 |  |  |
| 869 | 5.5.1.3.23 | 23 未处理立案任务操作页面 | 1d | 2017-12-28 | 2017-12-28 |  | 67d |  | start no earlier than 2017-12-28 |  |  |
| 870 | 5.5.1.3.24 | 24 正在处理立案任务查询页面 | 1d | 2017-12-29 | 2017-12-29 |  | 66d |  | start no earlier than 2017-12-29 |  |  |
| 871 | 5.5.1.3.25 | 25 正在处理立案任务操作页面 | 1d | 2017-12-29 | 2017-12-29 |  | 66d |  | start no earlier than 2017-12-29 |  |  |
| 872 | 5.5.1.3.26 | 26 申请注销/拒赔查询页面 | 1d | 2017-12-29 | 2017-12-29 |  | 66d |  | start no earlier than 2017-12-29 |  |  |
| 873 | 5.5.1.3.27 | 27 申请注销/拒赔操作页面 | 1d | 2018-01-02 | 2018-01-02 |  | 63d |  | start no earlier than 2018-01-02 |  |  |
| 874 | 5.5.1.3.28 | 28 立案任务查询页面 | 1d | 2018-01-02 | 2018-01-02 |  | 63d |  | start no earlier than 2018-01-02 |  |  |
| 875 | 5.5.1.3.29 | 29 立案任务详情查询页面 | 1d | 2018-01-02 | 2018-01-02 |  | 63d |  | start no earlier than 2018-01-02 |  |  |
| 876 | 5.5.1.3.30 | 30 未处理特殊赔案查询页面 | 1d | 2018-01-03 | 2018-01-03 |  | 62d |  | start no earlier than 2018-01-03 |  |  |
| 877 | 5.5.1.3.31 | 31 未处理特殊赔案操作页面 | 1d | 2018-01-03 | 2018-01-03 |  | 62d |  | start no earlier than 2018-01-03 |  |  |
| 878 | 5.5.1.3.32 | 32 正在处理特殊赔案查询页面 | 1d | 2018-01-03 | 2018-01-03 |  | 62d |  | start no earlier than 2018-01-03 |  |  |
| 879 | 5.5.1.3.33 | 33 正在处理特殊赔案操作页面 | 1d | 2018-01-04 | 2018-01-04 |  | 61d |  | start no earlier than 2018-01-04 |  |  |
| 880 | 5.5.1.3.34 | 34 特殊赔案查询页面 | 1d | 2018-01-04 | 2018-01-04 |  | 61d |  | start no earlier than 2018-01-04 |  |  |
| 881 | 5.5.1.3.35 | 35 特殊赔案查询详情 | 1d | 2018-01-04 | 2018-01-04 |  | 61d |  | start no earlier than 2018-01-04 |  |  |
| 882 | 5.5.1.3.36 | 36 核赔退回特殊赔案查询页面 | 1d | 2018-01-05 | 2018-01-05 |  | 60d |  | start no earlier than 2018-01-05 |  |  |
| 883 | 5.5.1.3.37 | 37 核赔退回特殊赔案详情操作页面 | 1d | 2018-01-05 | 2018-01-05 |  | 60d |  | start no earlier than 2018-01-05 |  |  |
| 884 | 5.5.1.3.38 | 38 未处理理算任务查询页面 | 1d | 2018-01-05 | 2018-01-05 |  | 60d |  | start no earlier than 2018-01-05 |  |  |
| 885 | 5.5.1.3.39 | 39 未处理理算任务操作页面 | 1d | 2018-01-08 | 2018-01-08 |  | 59d |  | start no earlier than 2018-01-08 |  |  |
| 886 | 5.5.1.3.40 | 40 未处理理算保存成功页面 | 1d | 2018-01-08 | 2018-01-08 |  | 59d |  | start no earlier than 2018-01-08 |  |  |
| 887 | 5.5.1.3.41 | 41 正在处理理算任务查询页面 | 1d | 2018-01-08 | 2018-01-08 |  | 59d |  | start no earlier than 2018-01-08 |  |  |
| 888 | 5.5.1.3.42 | 42 正在处理理算任务操作页面 | 1d | 2018-01-09 | 2018-01-09 |  | 58d |  | start no earlier than 2018-01-09 |  |  |
| 889 | 5.5.1.3.43 | 43 申请注销/拒赔查询页面 | 1d | 2018-01-09 | 2018-01-09 |  | 58d |  | start no earlier than 2018-01-09 |  |  |
| 890 | 5.5.1.3.44 | 44 申请注销/拒赔操作页面 | 1d | 2018-01-09 | 2018-01-09 |  | 58d |  | start no earlier than 2018-01-09 |  |  |
| 891 | 5.5.1.3.45 | 45 理算查询页面 | 1d | 2018-01-10 | 2018-01-10 |  | 57d |  | start no earlier than 2018-01-10 |  |  |
| 892 | 5.5.1.3.46 | 46 理算信息详情查询页面 | 1d | 2018-01-10 | 2018-01-10 |  | 57d |  | start no earlier than 2018-01-10 |  |  |

| ID | WBS | Task | Duration | Start | Finish | Predecessors | Total slack | Free slack | Constraint |
| --- | --- | --- | --- | --- | --- | --- | --- | --- | --- |
| 893 | 5.5.1.3.47 | 47 未处理结案任务查询页面 | 1d | 2018-01-10 | 2018-01-10 |  | 57d |  | start no earlier than 2018-01-10 |
| 894 | 5.5.1.3.48 | 48 未处理结案任务详情页面 | 1d | 2018-01-11 | 2018-01-11 |  | 56d |  | start no earlier than 2018-01-11 |
| 895 | 5.5.1.3.49 | 49 查询结果页面 | 1d | 2018-01-11 | 2018-01-11 |  | 56d |  | start no earlier than 2018-01-11 |
| 896 | 5.5.1.3.50 | 50 结案任务详情页面 | 1d | 2018-01-11 | 2018-01-11 |  | 56d |  | start no earlier than 2018-01-11 |
| 897 | 5.5.1.3.51 | 51 打印类型选择页面 | 1d | 2018-01-12 | 2018-01-12 |  | 55d |  | start no earlier than 2018-01-12 |
| 898 | 5.5.1.3.52 | 52 打印筛选页面 | 1d | 2018-01-12 | 2018-01-12 |  | 55d |  | start no earlier than 2018-01-12 |
| 899 | 5.5.1.3.53 | 53 工作流查询页面 | 1d | 2018-01-12 | 2018-01-12 |  | 55d |  | start no earlier than 2018-01-12 |
| 900 | 5.5.1.3.54 | 54 工作流详情查看页面 | 1d | 2018-01-15 | 2018-01-15 |  | 54d |  | start no earlier than 2018-01-15 |
| 901 | 5.5.1.3.55 | 55 案件号互查查询页面 | 1d | 2018-01-15 | 2018-01-15 |  | 54d |  | start no earlier than 2018-01-15 |
| 902 | 5.5.1.3.56 | 56 新增班表查询页面 | 1d | 2018-01-15 | 2018-01-15 |  | 54d |  | start no earlier than 2018-01-15 |
| 903 | 5.5.1.3.57 | 57 新增班表页面 | 1d | 2018-01-16 | 2018-01-16 |  | 53d |  | start no earlier than 2018-01-16 |
| 904 | 5.5.1.3.58 | 58 区域设置查询页面 | 1d | 2018-01-16 | 2018-01-16 |  | 53d |  | start no earlier than 2018-01-16 |
| 905 | 5.5.1.3.59 | 59 区域设置页面 | 1d | 2018-01-16 | 2018-01-16 |  | 53d |  | start no earlier than 2018-01-16 |
| 906 | 5.5.1.3.60 | 60 修改班表查询页面 | 1d | 2018-01-17 | 2018-01-17 |  | 52d |  | start no earlier than 2018-01-17 |
| 907 | 5.5.1.3.61 | 61 修改班表页面 | 1d | 2018-01-17 | 2018-01-17 |  | 52d |  | start no earlier than 2018-01-17 |
| 908 | 5.5.1.3.62 | 62 班表查询页面 | 1d | 2018-01-17 | 2018-01-17 |  | 52d |  | start no earlier than 2018-01-17 |
| 909 | 5.5.1.3.63 | 63 班表查询结果详情页面 | 1d | 2018-01-18 | 2018-01-18 |  | 51d |  | start no earlier than 2018-01-18 |
| 910 | 5.5.1.3.64 | 64 单笔支付查询页面 | 1d | 2018-01-18 | 2018-01-18 |  | 51d |  | start no earlier than 2018-01-18 |
| 911 | 5.5.1.3.65 | 65 支付信息录入页面 | 1d | 2018-01-18 | 2018-01-18 |  | 51d |  | start no earlier than 2018-01-18 |
| 912 | 5.5.1.3.66 | 66 支付清单管理查询页面 | 1d | 2018-01-19 | 2018-01-19 |  | 50d |  | start no earlier than 2018-01-19 |
| 913 | 5.5.1.3.67 | 67 整单支付页面 | 1d | 2018-01-19 | 2018-01-19 |  | 50d |  | start no earlier than 2018-01-19 |
| 914 | 5.5.1.3.68 | 68 清单支付页面 | 1d | 2018-01-19 | 2018-01-19 |  | 50d |  | start no earlier than 2018-01-19 |
| 915 | 5.5.1.3.69 | 69 支付信息查询页面 | 1d | 2018-01-22 | 2018-01-22 |  | 49d |  | start no earlier than 2018-01-22 |
| 916 | 5.5.1.3.70 | 70 支付信息详情查看页面 | 1d | 2018-01-22 | 2018-01-22 |  | 49d |  | start no earlier than 2018-01-22 |
| 917 | 5.5.1.3.71 | 71 电子回执单下载页面 | 1d | 2018-01-22 | 2018-01-22 |  | 49d |  | start no earlier than 2018-01-22 |
| 918 | 5.5.1.3.72 | 72 支付情况统计查询页面 | 1d | 2018-01-10 | 2018-01-10 |  | 54d | 0d | start no earlier than 2018-01-10 |
| 919 | 5.5.1.3.73 | 73 支付情况统计详情页面 | 1d | 2018-01-11 | 2018-01-11 | 918 | 54d | 0d | start no earlier than 2018-01-10 |
| 920 | 5.5.1.3.74 | 74 补传 | 1d | 2018-01-12 | 2018-01-12 | 919 | 54d | 0d | start no earlier than 2018-01-10 |

| ID | WBS | Task | Duration | Start | Finish | Predecessors | Total slack | Constraint | Resources | Work |
| --- | --- | --- | --- | --- | --- | --- | --- | --- | --- | --- |
| 921 | 5.5.1.4 | **2.2.3.6 工作流管理** | 4d | 2018-01-15 | 2018-01-18 | 920 | 51d |  |  |  |
| 922 | 5.5.1.4.1 | 1 工作流列表页面 | 1d | 2018-01-15 | 2018-01-15 |  | 54d | start no earlier than 2018-01-10 |  |  |
| 923 | 5.5.1.4.2 | 2 模板维护页面 | 1d | 2018-01-15 | 2018-01-15 |  | 54d | start no earlier than 2018-01-10 |  |  |
| 924 | 5.5.1.4.3 | 3 创建模板页面 | 1d | 2018-01-16 | 2018-01-16 |  | 53d | start no earlier than 2018-01-16 |  |  |
| 925 | 5.5.1.4.4 | 4 模板批量分配页面 | 1d | 2018-01-16 | 2018-01-16 |  | 53d | start no earlier than 2018-01-16 |  |  |
| 926 | 5.5.1.4.5 | 5 工作流列表 | 1d | 2018-01-17 | 2018-01-17 |  | 52d | start no earlier than 2018-01-17 |  |  |
| 927 | 5.5.1.4.6 | 6 工作流模板路径列表 | 1d | 2018-01-17 | 2018-01-17 |  | 52d | start no earlier than 2018-01-17 |  |  |
| 928 | 5.5.1.4.7 | 7 工作流模板路径条件 | 1d | 2018-01-18 | 2018-01-18 |  | 51d | start no earlier than 2018-01-18 |  |  |
| 929 | 5.5.1.4.8 | 8 案件合并页面 | 1d | 2018-01-18 | 2018-01-18 |  | 51d | start no earlier than 2018-01-18 |  |  |
| 930 | 5.5.1.4.9 | 9 合并修改页面 | 1d | 2018-01-18 | 2018-01-18 |  | 51d | start no earlier than 2018-01-18 |  |  |
| 931 | 5.5.2 | **后端** | 82d? | 2017-10-11 | 2018-01-31 |  | 42d |  |  | 6960h |
| 932 | 5.5.2.1 | 用户登录 | 1d | 2017-10-12 | 2017-10-12 |  | 122d | start no earlier than 2017-10-12 | 马俊玲 | 8h |
| 933 | 5.5.2.2 | 开发自测 | 1d | 2017-10-13 | 2017-10-13 |  | 121d | start no earlier than 2017-10-13 | 马俊玲 | 8h |
| 934 | 5.5.2.3 | 密码修改 | 1d | 2017-10-16 | 2017-10-16 |  | 120d | start no earlier than 2017-10-16 | 马俊玲 | 8h |
| 935 | 5.5.2.4 | 开发自测 | 1d | 2017-10-17 | 2017-10-17 |  | 119d | start no earlier than 2017-10-17 | 马俊玲 | 8h |
| 936 | 5.5.2.5 | 重新登录 | 1d | 2017-10-17 | 2017-10-17 |  | 119d | start no earlier than 2017-10-17 | 马俊玲 | 8h |
| 937 | 5.5.2.6 | 开发自测 | 1d | 2017-10-18 | 2017-10-18 |  | 118d | start no earlier than 2017-10-18 | 马俊玲 | 8h |
| 938 | 5.5.2.7 | 我的任务-调度任务(查询) | 2d | 2017-10-12 | 2017-10-13 |  | 121d | start no earlier than 2017-10-12 | 尹凯锋 | 16h |
| 939 | 5.5.2.8 | 开发自测 | 1d | 2017-10-16 | 2017-10-16 |  | 120d | finish no earlier than 2017-10-16 | 尹凯锋 | 8h |
| 940 | 5.5.2.9 | 我的任务-查勘定损任务(查询) | 2d | 2017-10-17 | 2017-10-18 |  | 118d | start no earlier than 2017-10-17 | 尹凯锋 | 16h |
| 941 | 5.5.2.10 | 开发自测 | 1d | 2017-10-19 | 2017-10-19 |  | 117d | start no earlier than 2017-10-19 | 尹凯锋 | 8h |
| 942 | 5.5.2.11 | 我的任务-立案任务(查询) | 2d | 2017-10-20 | 2017-10-23 |  | 115d | start no earlier than 2017-10-20 | 尹凯锋 | 16h |
| 943 | 5.5.2.12 | 开发自测 | 1d | 2017-10-24 | 2017-10-24 |  | 114d | start no earlier than 2017-10-24 | 尹凯锋 | 8h |
| 944 | 5.5.2.13 | 我的任务-理算、结案任务(查询) | 2d | 2017-10-25 | 2017-10-26 |  | 112d | start no earlier than 2017-10-25 | 尹凯锋 | 16h |
| 945 | 5.5.2.14 | 开发自测 | 1d | 2017-10-27 | 2017-10-27 |  | 111d | start no earlier than 2017-10-27 | 尹凯锋 | 8h |
| 946 | 5.5.2.15 | 预报案（插入、修改） | 5d | 2017-10-11 | 2017-10-17 |  | 119d | start no earlier than 2017-10-11 | 沈士威 | 40h |
| 947 | 5.5.2.16 | 开发自测 | 1d | 2017-10-18 | 2017-10-18 |  | 118d | finish no earlier than 2017-10-18 | 沈士威 | 8h |
| 948 | 5.5.2.17 | 推送数据至客户管理系统做预报案 | 4d | 2017-10-12 | 2017-10-17 |  | 119d | start no earlier than 2017-10-12 | 梁耀泽 | 32h |
| 949 | 5.5.2.18 | 开发自测 | 1d | 2017-10-18 | 2017-10-18 |  | 118d | start no earlier than 2017-10-18 | 梁耀泽 | 8h |
| 950 | 5.5.2.19 | 联合报案保单查询 | 3d | 2017-10-11 | 2017-10-13 |  | 121d | start no earlier than 2017-10-11 | 李斌 | 24h |
| 951 | 5.5.2.20 | 开发自测 | 1d | 2017-10-17 | 2017-10-17 |  | 119d | finish no earlier than 2017-10-17 | 李斌 | 8h |
| 952 | 5.5.2.21 | 查询保单信息（查询） | 5d | 2017-10-12 | 2017-10-18 |  | 118d | start no earlier than 2017-10-12 | 杨成程 | 40h |
| 953 | 5.5.2.22 | 开发自测 | 1d | 2017-10-19 | 2017-10-19 |  | 117d | start no earlier than 2017-10-19 | 杨成程 | 8h |
| 954 | 5.5.2.23 | 出险时保单信息-投保人、被保险人信息（查询） | 2d | 2017-10-12 | 2017-10-13 |  | 121d | start no earlier than 2017-10-12 | 杨成程 | 16h |
| 955 | 5.5.2.24 | 开发自测 | 1d | 2017-10-16 | 2017-10-16 |  | 120d | start no earlier than 2017-10-16 | 祁小龙 | 8h |
| 956 | 5.5.2.25 | 出险时保单信息保单主信息、特别约定、保费等其他信息（查询） | 4d | 2017-10-17 | 2017-10-20 |  | 116d | start no earlier than 2017-10-17 | 祁小龙 | 32h |
| 957 | 5.5.2.26 | 开发自测 | 1d | 2017-10-23 | 2017-10-23 |  | 115d | finish no earlier than 2017-10-23 | 祁小龙 | 8h |
| 958 | 5.5.2.27 | 出险信息（查询） | 3d | 2017-10-18 | 2017-10-20 |  | 116d | start no earlier than 2017-10-18 | 李斌 | 24h |
| 959 | 5.5.2.28 | 开发自测 | 1d | 2017-10-23 | 2017-10-23 |  | 115d | start no earlier than 2017-10-23 | 李斌 | 8h |
| 960 | 5.5.2.29 | 关联保单（查询） | 4d | 2017-10-12 | 2017-10-17 |  | 119d | start no earlier than 2017-10-12 | 杨航 | 32h |
| 961 | 5.5.2.30 | 开发自测 | 1d | 2017-10-18 | 2017-10-18 |  | 118d | start no earlier than 2017-10-18 | 杨航 | 8h |
| 962 | 5.5.2.31 | 历次批单(查询) | 4d | 2017-10-12 | 2017-10-17 |  | 119d | start no earlier than 2017-10-12 | 汪钊 | 32h |
| 963 | 5.5.2.32 | 开发自测 | 1d | 2017-10-18 | 2017-10-18 |  | 118d | finish no earlier than 2017-10-18 | 汪钊 | 8h |
| 964 | 5.5.2.33 | 耳标号清单(查询) | 4d | 2017-10-19 | 2017-10-24 |  | 114d | start no earlier than 2017-10-19 | 杨航 | 32h |
| 965 | 5.5.2.34 | 开发自测 | 1d | 2017-10-25 | 2017-10-25 |  | 113d | start no earlier than 2017-10-25 | 杨航 | 8h |
| 966 | 5.5.2.35 | 历次赔案（查询） | 5d | 2017-10-19 | 2017-10-25 |  | 113d | start no earlier than 2017-10-19 | 汪钊 | 40h |
| 967 | 5.5.2.36 | 开发自测 | 1d | 2017-10-26 | 2017-10-26 |  | 112d | start no earlier than 2017-10-26 | 汪钊 | 8h |
| 968 | 5.5.2.37 | 理赔沟通（查询、插入） | 5d | 2017-10-20 | 2017-10-26 |  | 112d | start no earlier than 2017-10-20 | 杨成程 | 40h |
| 969 | 5.5.2.38 | 开发自测 | 1d | 2017-10-27 | 2017-10-27 |  | 111d | start no earlier than 2017-10-27 | 杨成程 | 8h |
| 970 | 5.5.2.39 | 报案登记页面初始化（查询） | 4d | 2017-10-24 | 2017-10-27 |  | 111d | start no earlier than 2017-10-24 | 李斌 | 32h |
| 971 | 5.5.2.40 | 开发自测 | 1d | 2017-10-30 | 2017-10-30 |  | 110d | start no earlier than 2017-10-30 | 李斌 | 8h |
| 972 | 5.5.2.41 | 抄单打印（查询） | 5d | 2017-10-30 | 2017-11-03 |  | 106d | start no earlier than 2017-10-30 | 尹凯锋 | 40h |
| 973 | 5.5.2.42 | 开发自测 | 1d | 2017-11-06 | 2017-11-06 |  | 105d | start no earlier than 2017-11-06 | 尹凯锋 | 8h |
| 974 | 5.5.2.43 | 报案登记调度（插入、修改） | 5d | 2017-10-19 | 2017-10-25 |  | 113d | start no earlier than 2017-10-19 | 沈士威 | 40h |
| 975 | 5.5.2.44 | 开发自测 | 1d | 2017-10-26 | 2017-10-26 |  | 112d | start no earlier than 2017-10-26 | 沈士威 | 8h |
| 976 | 5.5.2.45 | 事故者信息保益信息 | 4d | 2017-10-27 | 2017-11-01 |  | 108d | start no earlier than 2017-10-27 | 沈士威 | 32h |
| 977 | 5.5.2.46 | 开发自测 | 1d | 2017-11-02 | 2017-11-02 |  | 107d | start no earlier than 2017-11-02 | 沈士威 | 8h |
| 978 | 5.5.2.47 | 报案登记提交（插入、修改） | 5d | 2017-10-23 | 2017-10-27 |  | 111d | start no earlier than 2017-10-23 | 王心洋 | 40h |
| 979 | 5.5.2.48 | 开发自测 | 1d | 2017-10-30 | 2017-10-30 |  | 110d | start no earlier than 2017-10-30 | 王心洋 | 8h |
| 980 | 5.5.2.49 | 案件信息推送驻点员App接口 | 4d | 2017-10-19 | 2017-10-24 |  | 114d | start no earlier than 2017-10-19 | 梁耀泽 | 32h |
| 981 | 5.5.2.50 | 开发自测 | 1d | 2017-10-25 | 2017-10-25 |  | 113d | finish no earlier than 2017-10-25 | 梁耀泽 | 8h |
| 982 | 5.5.2.51 | 报案暂存查询 | 3d | 2017-10-19 | 2017-10-23 |  | 115d | start no earlier than 2017-10-19 | 马俊玲 | 24h |
| 983 | 5.5.2.52 | 开发自测 | 1d | 2017-10-25 | 2017-10-25 |  | 113d | finish no earlier than 2017-10-25 | 马俊玲 | 8h |
| 984 | 5.5.2.53 | 报案暂存单提交、调度（修改） | 5d | 2017-10-30 | 2017-11-03 |  | 106d | start no earlier than 2017-10-30 | 杨成程 | 40h |
| 985 | 5.5.2.54 | 开发自测 | 1d | 2017-11-06 | 2017-11-06 |  | 105d | start no earlier than 2017-11-06 | 杨成程 | 8h |
| 986 | 5.5.2.55 | 报案登记暂存（插入、修改） | 5d | 2017-10-27 | 2017-11-02 |  | 107d | start no earlier than 2017-10-27 | 汪钊 | 40h |
| 987 | 5.5.2.56 | 开发自测 | 1d | 2017-11-03 | 2017-11-03 |  | 106d | start no earlier than 2017-11-03 | 汪钊 | 8h |
| 988 | 5.5.2.57 | 报案任务查询（查询） | 2d | 2017-10-24 | 2017-10-25 |  | 113d | start no earlier than 2017-10-24 | 祁小龙 | 16h |
| 989 | 5.5.2.58 | 开发自测 | 1d | 2017-10-26 | 2017-10-26 |  | 112d | start no earlier than 2017-10-26 | 祁小龙 | 8h |
| 990 | 5.5.2.59 | 具体案件详情（查询） | 4d | 2017-10-27 | 2017-11-01 |  | 108d | start no earlier than 2017-10-27 | 祁小龙 | 32h |

| ID | WBS | Task | Duration | Start | Finish | Total slack | Constraint | Resources | Work |
| --- | --- | --- | --- | --- | --- | --- | --- | --- | --- |
| 991 | 5.5.2.60 | 开发自测 | 2d | 2017-11-02 | 2017-11-03 | 106d | start no earlier than 2017-11-02 | 祁小龙 | 16h |
| 992 | 5.5.2.61 | 报案任务查询（查询） | 3d | 2017-10-31 | 2017-11-02 | 107d | start no earlier than 2017-10-31 | 李斌 | 24h |
| 993 | 5.5.2.62 | 开发自测 | 1d | 2017-11-03 | 2017-11-03 | 106d | start no earlier than 2017-11-03 | 李斌 | 8h |
| 994 | 5.5.2.63 | 第三方支付信息查询（查询） | 3d | 2017-11-03 | 2017-11-07 | 104d | start no earlier than 2017-11-03 | 沈士威 | 24h |
| 995 | 5.5.2.64 | 开发自测 | 2d | 2017-11-08 | 2017-11-09 | 102d | start no earlier than 2017-11-08 | 沈士威 | 16h |
| 996 | 5.5.2.65 | 依据支付号提供支付信息详情查询 | 4d | 2017-10-31 | 2017-11-03 | 106d | start no earlier than 2017-10-31 | 王心洋 | 32h |
| 997 | 5.5.2.66 | 开发自测 | 1d | 2017-11-06 | 2017-11-06 | 105d | start no earlier than 2017-11-06 | 王心洋 | 8h |
| 998 | 5.5.2.67 | 待处理调度任务（查询） | 3d | 2017-10-26 | 2017-10-30 | 110d | start no earlier than 2017-10-26 | 马俊玲 | 24h |
| 999 | 5.5.2.68 | 开发自测 | 1d | 2017-10-31 | 2017-10-31 | 109d | start no earlier than 2017-10-31 | 马俊玲 | 8h |
| 1000 | 5.5.2.69 | 待处理调度任务操作（查询） | 3d | 2017-11-01 | 2017-11-03 | 106d | start no earlier than 2017-11-01 | 马俊玲 | 24h |
| 1001 | 5.5.2.70 | 开发自测 | 1d | 2017-11-06 | 2017-11-06 | 105d | start no earlier than 2017-11-06 | 马俊玲 | 8h |
| 1002 | 5.5.2.71 | 正在处理调度任务（查询） | 3d | 2017-10-26 | 2017-10-30 | 110d | start no earlier than 2017-10-26 | 杨航 | 24h |
| 1003 | 5.5.2.72 | 开发自测 | 1d | 2017-10-31 | 2017-10-31 | 109d | start no earlier than 2017-10-31 | 杨航 | 8h |
| 1004 | 5.5.2.73 | 系统内调度（插入、修改） | 5d | 2017-10-26 | 2017-11-01 | 108d | finish no earlier than 2017-11-01 | 梁耀泽 | 40h |
| 1005 | 5.5.2.74 | 开发自测 | 1d | 2017-11-02 | 2017-11-02 | 107d | start no earlier than 2017-11-02 | 梁耀泽 | 8h |
| 1006 | 5.5.2.75 | 正在处理调度任务（查询） | 3d | 2017-11-03 | 2017-11-07 | 104d | start no earlier than 2017-11-03 | 梁耀泽 | 24h |
| 1007 | 5.5.2.76 | 开发自测 | 1d | 2017-11-08 | 2017-11-08 | 103d | start no earlier than 2017-11-08 | 梁耀泽 | 8h |
| 1008 | 5.5.2.77 | 调度（插入） | 5d | 2017-11-08 | 2017-11-14 | 99d | start no earlier than 2017-11-08 | 王心洋 | 40h |
| 1009 | 5.5.2.78 | 开发自测 | 1d | 2017-11-15 | 2017-11-15 | 98d | start no earlier than 2017-11-15 | 王心洋 | 8h |
| 1010 | 5.5.2.79 | 调度改派查询 | 2d | 2017-11-06 | 2017-11-07 | 104d | start no earlier than 2017-11-06 | 李斌 | 16h |
| 1011 | 5.5.2.80 | 开发自测 | 1d | 2017-11-08 | 2017-11-08 | 103d | start no earlier than 2017-11-08 | 李斌 | 8h |
| 1012 | 5.5.2.81 | 调度改派初始化页面 | 5d | 2017-11-01 | 2017-11-07 | 104d | start no earlier than 2017-11-01 | 杨航 | 40h |
| 1013 | 5.5.2.82 | 开发自测 | 1d | 2017-11-08 | 2017-11-08 | 103d | finish no earlier than 2017-11-08 | 杨航 | 8h |
| 1014 | 5.5.2.83 | 调度任务查询 | 3d | 2017-11-06 | 2017-11-08 | 103d | start no earlier than 2017-11-06 | 祁小龙 | 24h |
| 1015 | 5.5.2.84 | 开发自测 | 1d | 2017-11-09 | 2017-11-09 | 102d | start no earlier than 2017-11-09 | 祁小龙 | 8h |
| 1016 | 5.5.2.85 | 调度任务详情查询 | 4d | 2017-11-10 | 2017-11-15 | 98d | start no earlier than 2017-11-10 | 祁小龙 | 32h |
| 1017 | 5.5.2.86 | 开发自测 | 1d | 2017-11-16 | 2017-11-16 | 97d | start no earlier than 2017-11-16 | 祁小龙 | 8h |
| 1018 | 5.5.2.87 | 未处理查勘定损查询 | 3d | 2017-11-10 | 2017-11-14 | 99d | start no earlier than 2017-11-10 | 沈士威 | 24h |
| 1019 | 5.5.2.88 | 开发自测 | 1d | 2017-11-15 | 2017-11-15 | 98d | start no earlier than 2017-11-15 | 沈士威 | 8h |
| 1020 | 5.5.2.89 | 未处理查勘定损任务操作(查询) | 4d | 2017-11-16 | 2017-11-21 | 94d | start no earlier than 2017-11-16 | 沈士威 | 32h |
| 1021 | 5.5.2.90 | 开发自测 | 1d | 2017-11-22 | 2017-11-22 | 93d | start no earlier than 2017-11-22 | 沈士威 | 8h |
| 1022 | 5.5.2.91 | 系统外调度（插入、修改） | 5d | 2017-11-07 | 2017-11-13 | 100d | start no earlier than 2017-11-07 | 尹凯锋 | 40h |
| 1023 | 5.5.2.92 | 开发自测 | 1d | 2017-11-14 | 2017-11-14 | 99d | start no earlier than 2017-11-14 | 尹凯锋 | 8h |
| 1024 | 5.5.2.93 | 电子单证（查询） | 3d | 2017-11-06 | 2017-11-08 | 103d | start no earlier than 2017-11-06 | 汪钊 | 24h |
| 1025 | 5.5.2.94 | 开发自测 | 1d | 2017-11-09 | 2017-11-09 | 102d | start no earlier than 2017-11-09 | 汪钊 | 8h |
| 1026 | 5.5.2.95 | 索赔须知（查询） | 3d | 2017-11-07 | 2017-11-09 | 102d | start no earlier than 2017-11-07 | 杨成程 | 24h |
| 1027 | 5.5.2.96 | 开发自测 | 1d | 2017-11-15 | 2017-11-15 | 98d | start no earlier than 2017-11-15 | 杨成程 | 8h |
| 1028 | 5.5.2.97 | 索赔清单（查询） | 3d | 2017-11-10 | 2017-11-14 | 99d | start no earlier than 2017-11-10 | 汪钊 | 24h |
| 1029 | 5.5.2.98 | 开发自测 | 1d | 2017-11-15 | 2017-11-15 | 98d | start no earlier than 2017-11-15 | 汪钊 | 8h |
| 1030 | 5.5.2.99 | 耳标号校验（查询） | 4d | 2017-11-07 | 2017-11-10 | 101d | start no earlier than 2017-11-07 | 马俊玲 | 32h |
| 1031 | 5.5.2.100 | 开发自测 | 1d | 2017-11-13 | 2017-11-13 | 100d | finish no earlier than 2017-11-13 | 马俊玲 | 8h |
| 1032 | 5.5.2.101 | 未处理查勘定损任务提交(修改) | 4d | 2017-11-09 | 2017-11-14 | 99d | start no earlier than 2017-11-09 | 梁耀泽 | 32h |
| 1033 | 5.5.2.102 | 开发自测 | 1d | 2017-11-15 | 2017-11-15 | 98d | start no earlier than 2017-11-15 | 梁耀泽 | 8h |
| 1034 | 5.5.2.103 | 打印报案记录待抄单（查询） | 3d | 2017-11-16 | 2017-11-20 | 95d | start no earlier than 2017-11-16 | 王心洋 | 24h |
| 1035 | 5.5.2.104 | 开发自测 | 1d | 2017-11-21 | 2017-11-21 | 94d | start no earlier than 2017-11-21 | 王心洋 | 8h |
| 1036 | 5.5.2.105 | 系统内改派、系统外改派（修改） | 5d | 2017-11-09 | 2017-11-15 | 98d | start no earlier than 2017-11-09 | 李斌 | 40h |
| 1037 | 5.5.2.106 | 开发自测 | 2d | 2017-11-16 | 2017-11-17 | 96d | start no earlier than 2017-11-16 | 李斌 | 16h |
| 1038 | 5.5.2.107 | 未处理查勘任务转交（修改） | 5d | 2017-11-09 | 2017-11-15 | 98d | start no earlier than 2017-11-09 | 杨航 | 40h |
| 1039 | 5.5.2.108 | 开发自测 | 1d | 2017-11-16 | 2017-11-16 | 97d | start no earlier than 2017-11-16 | 杨航 | 8h |
| 1040 | 5.5.2.109 | 未处理查勘任务提交（插入、修改） | 5d | 2017-11-15 | 2017-11-21 | 94d | start no earlier than 2017-11-15 | 尹凯锋 | 40h |
| 1041 | 5.5.2.110 | 开发自测 | 1d | 2017-11-22 | 2017-11-22 | 93d | start no earlier than 2017-11-22 | 尹凯锋 | 8h |
| 1042 | 5.5.2.111 | 查勘定损任务正在处理查勘任务（查询） | 3d | 2017-11-16 | 2017-11-20 | 95d | start no earlier than 2017-11-16 | 杨成程 | 24h |
| 1043 | 5.5.2.112 | 开发自测 | 1d | 2017-11-21 | 2017-11-21 | 94d | start no earlier than 2017-11-21 | 杨成程 | 8h |
| 1044 | 5.5.2.113 | 正在处理查勘定损信息页面（查询） | 3d | 2017-11-16 | 2017-11-20 | 95d | start no earlier than 2017-11-16 | 汪钊 | 24h |
| 1045 | 5.5.2.114 | 开发自测 | 1d | 2017-11-21 | 2017-11-21 | 94d | start no earlier than 2017-11-21 | 汪钊 | 8h |
| 1046 | 5.5.2.115 | 查勘定损任务正在处理查勘任务-保单抄件详情（查询） | 4d | 2017-11-16 | 2017-11-21 | 94d | start no earlier than 2017-11-16 | 马俊玲 | 32h |
| 1047 | 5.5.2.116 | 开发自测 | 1d | 2017-11-22 | 2017-11-22 | 93d | start no earlier than 2017-11-22 | 马俊玲 | 8h |
| 1048 | 5.5.2.117 | 查勘定损任务正在处理查勘任务提交（插入、修改） | 5d | 2017-11-16 | 2017-11-22 | 93d | start no earlier than 2017-11-16 | 梁耀泽 | 40h |
| 1049 | 5.5.2.118 | 开发自测 | 1d | 2017-11-23 | 2017-11-23 | 92d | start no earlier than 2017-11-23 | 梁耀泽 | 8h |
| 1050 | 5.5.2.119 | 查勘定损任务查勘定损任务查询（查询） | 3d | 2017-11-24 | 2017-11-28 | 89d | start no earlier than 2017-11-24 | 梁耀泽 | 24h |
| 1051 | 5.5.2.120 | 开发自测 | 1d | 2017-11-29 | 2017-11-29 | 88d | start no earlier than 2017-11-29 | 梁耀泽 | 8h |
| 1052 | 5.5.2.121 | 查勘定损任务查勘定损任务详情查看页面（查询） | 3d | 2017-11-22 | 2017-11-24 | 91d | start no earlier than 2017-11-22 | 王心洋 | 24h |
| 1053 | 5.5.2.122 | 开发自测 | 1d | 2017-11-27 | 2017-11-27 | 90d | start no earlier than 2017-11-27 | 王心洋 | 8h |
| 1054 | 5.5.2.123 | 查勘定损任务>查勘定损任务详情查看页面-单证上传（插入、修改） | 5d | 2017-11-20 | 2017-11-24 | 91d | start no earlier than 2017-11-20 | 李斌 | 40h |
| 1055 | 5.5.2.124 | 开发自测 | 2d | 2017-11-27 | 2017-11-28 | 89d | start no earlier than 2017-11-27 | 李斌 | 16h |
| 1056 | 5.5.2.125 | 未处理查勘任务暂存、放弃任务（插入、修改） | 5d | 2017-11-17 | 2017-11-23 | 92d | start no earlier than 2017-11-17 | 杨航 | 40h |
| 1057 | 5.5.2.126 | 开发自测 | 2d | 2017-11-24 | 2017-11-27 | 90d | start no earlier than 2017-11-24 | 杨航 | 16h |
| 1058 | 5.5.2.127 | 报案撤销任务处理未处理查勘任务（查询） | 3d | 2017-11-23 | 2017-11-27 | 90d | start no earlier than 2017-11-23 | 沈士威 | 24h |
| 1059 | 5.5.2.128 | 开发自测 | 1d | 2017-11-28 | 2017-11-28 | 89d | start no earlier than 2017-11-28 | 沈士威 | 8h |
| 1060 | 5.5.2.129 | 报案撤销任务处理报案撤销处理提交（插入、修改） | 5d | 2017-11-29 | 2017-12-05 | 84d | start no earlier than 2017-11-29 | 沈士威 | 40h |

| ID | WBS | Task | Duration | Start | Finish | Total slack | Constraint | Resources | Work |
| --- | --- | --- | --- | --- | --- | --- | --- | --- | --- |
| 1061 | 5.5.2.130 | 开发自测 | 1d | 2017-12-06 | 2017-12-06 | 83d | start no earlier than 2017-12-06 | 沈士威 | 8h |
| 1062 | 5.5.2.131 | 未处理立案任务查询（查询） | 3d | 2017-11-27 | 2017-11-29 | 88d | start no earlier than 2017-11-27 | 杨成程 | 24h |
| 1063 | 5.5.2.132 | 开发自测 | 1d | 2017-11-30 | 2017-11-30 | 87d | start no earlier than 2017-11-30 | 杨成程 | 8h |
| 1064 | 5.5.2.133 | 未处理立案任务操作页面（查询） | 3d | 2017-12-01 | 2017-12-05 | 84d | start no earlier than 2017-12-01 | 杨成程 | 24h |
| 1065 | 5.5.2.134 | 开发自测 | 1d | 2017-12-06 | 2017-12-06 | 83d | finish no earlier than 2017-12-06 | 杨成程 | 8h |
| 1066 | 5.5.2.135 | 未处理立案任务查询提交（插入、修改） | 5d | 2017-11-22 | 2017-11-28 | 89d | start no earlier than 2017-11-22 | 汪钊 | 40h |
| 1067 | 5.5.2.136 | 开发自测 | 1d | 2017-11-29 | 2017-11-29 | 88d | start no earlier than 2017-11-29 | 汪钊 | 8h |
| 1068 | 5.5.2.137 | 自动立案处理 | 3d | 2017-11-30 | 2017-12-04 | 85d | start no earlier than 2017-11-30 | 汪钊 | 24h |
| 1069 | 5.5.2.138 | 开发自测 | 1d | 2017-12-05 | 2017-12-05 | 84d | start no earlier than 2017-12-05 | 汪钊 | 8h |
| 1070 | 5.5.2.139 | 正在处理立案任务（查询） | 3d | 2017-11-28 | 2017-11-30 | 87d | start no earlier than 2017-11-28 | 王心洋 | 24h |
| 1071 | 5.5.2.140 | 开发自测 | 1d | 2017-12-01 | 2017-12-01 | 86d | start no earlier than 2017-12-01 | 王心洋 | 8h |
| 1072 | 5.5.2.141 | 正在处理立案任务操作页面（查询） | 3d | 2017-12-04 | 2017-12-06 | 83d | start no earlier than 2017-12-04 | 王心洋 | 24h |
| 1073 | 5.5.2.142 | 开发自测 | 1d | 2017-12-07 | 2017-12-07 | 82d | start no earlier than 2017-12-07 | 王心洋 | 8h |
| 1074 | 5.5.2.143 | 未处理查勘任务暂存、放弃任务（插入、修改） | 4d | 2017-11-17 | 2017-11-22 | 93d | start no earlier than 2017-11-17 | 祁小龙 | 32h |
| 1075 | 5.5.2.144 | 开发自测 | 1d | 2017-11-23 | 2017-11-23 | 92d | start no earlier than 2017-11-22 | 祁小龙 | 8h |
| 1076 | 5.5.2.145 | 正在处理立案任务提交（插入、修改） | 5d | 2017-11-23 | 2017-11-29 | 88d | start no earlier than 2017-11-23 | 尹凯锋 | 40h |
| 1077 | 5.5.2.146 | 开发自测 | 1d | 2017-11-30 | 2017-11-30 | 87d | start no earlier than 2017-11-30 | 尹凯锋 | 8h |
| 1078 | 5.5.2.147 | 立案任务处理-申请注销/拒赔（查询） | 3d | 2017-12-01 | 2017-12-05 | 84d | start no earlier than 2017-12-01 | 尹凯锋 | 24h |
| 1079 | 5.5.2.148 | 开发自测 | 1d | 2017-12-06 | 2017-12-06 | 83d | start no earlier than 2017-12-06 | 尹凯锋 | 8h |
| 1080 | 5.5.2.149 | 立案任务处理-申请注销/拒赔操作页面（查询） | 3d | 2017-11-23 | 2017-11-27 | 90d | start no earlier than 2017-11-23 | 马俊玲 | 24h |
| 1081 | 5.5.2.150 | 开发自测 | 1d | 2017-11-28 | 2017-11-28 | 89d | finish no earlier than 2017-11-28 | 马俊玲 | 8h |
| 1082 | 5.5.2.151 | 立案任务处理-申请注销/拒赔提交（插入、修改） | 5d | 2017-11-29 | 2017-12-05 | 84d | start no earlier than 2017-11-29 | 马俊玲 | 40h |
| 1083 | 5.5.2.152 | 开发自测 | 1d | 2017-12-06 | 2017-12-06 | 83d | start no earlier than 2017-12-06 | 马俊玲 | 8h |
| 1084 | 5.5.2.153 | 立案任务处理-立案任务查询（查询） | 3d | 2017-11-30 | 2017-12-04 | 85d | start no earlier than 2017-11-30 | 梁耀泽 | 24h |
| 1085 | 5.5.2.154 | 开发自测 | 1d | 2017-12-05 | 2017-12-05 | 84d | start no earlier than 2017-12-05 | 梁耀泽 | 8h |
| 1086 | 5.5.2.155 | 立案任务处理-立案任务详情查询页面（查询） | 3d | 2017-11-29 | 2017-12-01 | 86d | start no earlier than 2017-11-29 | 李斌 | 24h |
| 1087 | 5.5.2.156 | 开发自测 | 1d | 2017-12-04 | 2017-12-04 | 85d | start no earlier than 2017-12-04 | 李斌 | 8h |
| 1088 | 5.5.2.157 | 未处理特殊赔案任务（查询） | 3d | 2017-11-27 | 2017-11-29 | 88d | start no earlier than 2017-11-27 | 杨航 | 24h |
| 1089 | 5.5.2.158 | 开发自测 | 1d | 2017-11-30 | 2017-11-30 | 87d | start no earlier than 2017-11-30 | 杨航 | 8h |
| 1090 | 5.5.2.159 | 未处理特殊赔案操作页面（查询） | 3d | 2017-12-01 | 2017-12-05 | 84d | start no earlier than 2017-12-01 | 杨航 | 24h |
| 1091 | 5.5.2.160 | 开发自测 | 1d | 2017-12-06 | 2017-12-06 | 83d | start no earlier than 2017-12-06 | 杨航 | 8h |
| 1092 | 5.5.2.161 | 立案任务-放弃任务处理（插入、修改） | 4d | 2017-12-07 | 2017-12-12 | 79d | start no earlier than 2017-12-07 | 沈士威 | 32h |
| 1093 | 5.5.2.162 | 开发自测 | 1d | 2017-12-13 | 2017-12-13 | 78d | start no earlier than 2017-12-13 | 沈士威 | 8h |
| 1094 | 5.5.2.163 | 处理特殊赔案-关联预赔清单（查询、修改） | 4d | 2017-12-07 | 2017-12-12 | 79d | start no earlier than 2017-12-07 | 杨成程 | 32h |
| 1095 | 5.5.2.164 | 开发自测 | 1d | 2017-12-13 | 2017-12-13 | 78d | start no earlier than 2017-12-13 | 杨成程 | 8h |
| 1096 | 5.5.2.165 | 处理特殊赔案-下载预赔模板（查询） | 3d | 2017-12-06 | 2017-12-08 | 81d | start no earlier than 2017-12-06 | 汪钊 | 24h |
| 1097 | 5.5.2.166 | 开发自测 | 1d | 2017-12-07 | 2017-12-07 | 82d | start no earlier than 2017-12-07 | 汪钊 | 8h |
| 1098 | 5.5.2.167 | 处理特殊赔案-讨论留言（修改） | 4d | 2017-12-08 | 2017-12-13 | 78d | start no earlier than 2017-12-08 | 王心洋 | 32h |
| 1099 | 5.5.2.168 | 开发自测 | 1d | 2017-12-14 | 2017-12-14 | 77d | start no earlier than 2017-12-14 | 王心洋 | 8h |
| 1100 | 5.5.2.169 | 处理特殊赔案-查看留言（查询） | 3d | 2017-11-24 | 2017-11-28 | 89d | start no earlier than 2017-11-23 | 祁小龙 | 24h |
| 1101 | 5.5.2.170 | 开发自测 | 1d | 2017-11-29 | 2017-11-29 | 88d | start no earlier than 2017-11-28 | 祁小龙 | 8h |
| 1102 | 5.5.2.171 | 处理特殊赔案-预付赔款登记（修改） | 4d | 2017-12-07 | 2017-12-12 | 79d | start no earlier than 2017-12-07 | 尹凯锋 | 32h |
| 1103 | 5.5.2.172 | 开发自测 | 2d | 2017-12-13 | 2017-12-14 | 77d | start no earlier than 2017-12-13 | 尹凯锋 | 16h |
| 1104 | 5.5.2.173 | 处理特殊赔案查询页面-导入预赔清单（插入、修改） | 4d | 2017-12-07 | 2017-12-12 | 79d | start no earlier than 2017-12-07 | 马俊玲 | 32h |
| 1105 | 5.5.2.174 | 开发自测 | 2d | 2017-12-13 | 2017-12-14 | 77d | start no earlier than 2017-12-13 | 马俊玲 | 16h |
| 1106 | 5.5.2.175 | 处理特殊赔案查询页面-提交（插入、修改） | 5d | 2017-12-06 | 2017-12-12 | 79d | start no earlier than 2017-12-06 | 梁耀泽 | 40h |
| 1107 | 5.5.2.176 | 开发自测 | 1d | 2017-12-13 | 2017-12-13 | 78d | start no earlier than 2017-12-13 | 梁耀泽 | 8h |
| 1108 | 5.5.2.177 | 暂存特殊赔案任务查询（查询） | 3d | 2017-12-05 | 2017-12-07 | 82d | start no earlier than 2017-12-05 | 李斌 | 24h |
| 1109 | 5.5.2.178 | 开发自测 | 1d | 2017-12-08 | 2017-12-08 | 81d | start no earlier than 2017-12-08 | 李斌 | 8h |
| 1110 | 5.5.2.179 | 批量申请注销/拒赔（插入、修改） | 5d | 2017-12-07 | 2017-12-13 | 78d | start no earlier than 2017-12-07 | 杨航 | 40h |
| 1111 | 5.5.2.180 | 开发自测 | 2d | 2017-12-14 | 2017-12-15 | 76d | start no earlier than 2017-12-14 | 杨航 | 16h |
| 1112 | 5.5.2.181 | 暂存处理特殊赔案操作页面（查询） | 3d | 2017-12-14 | 2017-12-18 | 75d | start no earlier than 2017-12-14 | 沈士威 | 24h |
| 1113 | 5.5.2.182 | 开发自测 | 1d | 2017-12-19 | 2017-12-19 | 74d | start no earlier than 2017-12-19 | 沈士威 | 8h |
| 1114 | 5.5.2.183 | 暂存处理特殊赔案操作页面-提交（插入、修改） | 5d | 2017-12-20 | 2017-12-26 | 69d | start no earlier than 2017-12-20 | 沈士威 | 40h |
| 1115 | 5.5.2.184 | 开发自测 | 1d | 2017-12-27 | 2017-12-27 | 68d | start no earlier than 2017-12-27 | 沈士威 | 8h |
| 1116 | 5.5.2.185 | 特殊赔案任务处理-特殊赔案查询（查询） | 3d | 2017-12-14 | 2017-12-18 | 75d | start no earlier than 2017-12-14 | 杨成程 | 24h |
| 1117 | 5.5.2.186 | 开发自测 | 1d | 2017-12-19 | 2017-12-19 | 74d | start no earlier than 2017-12-19 | 杨成程 | 8h |
| 1118 | 5.5.2.187 | 特殊赔案任务处理-特殊赔案查询详情（查询） | 4d | 2017-12-20 | 2017-12-25 | 70d | start no earlier than 2017-12-20 | 杨成程 | 32h |
| 1119 | 5.5.2.188 | 开发自测 | 1d | 2017-12-26 | 2017-12-26 | 69d | start no earlier than 2017-12-26 | 杨成程 | 8h |
| 1120 | 5.5.2.189 | 特殊赔案任务处理-核赔退回的特殊赔案（查询） | 3d | 2017-12-08 | 2017-12-12 | 79d | start no earlier than 2017-12-08 | 汪钊 | 24h |
| 1121 | 5.5.2.190 | 开发自测 | 1d | 2017-12-13 | 2017-12-13 | 78d | start no earlier than 2017-12-13 | 汪钊 | 8h |
| 1122 | 5.5.2.191 | 特殊赔案任务处理-核赔退回特殊赔案详情（查询） | 3d | 2017-12-14 | 2017-12-18 | 75d | start no earlier than 2017-12-14 | 汪钊 | 24h |
| 1123 | 5.5.2.192 | 开发自测 | 1d | 2017-12-19 | 2017-12-19 | 74d | start no earlier than 2017-12-19 | 汪钊 | 8h |
| 1124 | 5.5.2.193 | 特殊赔案任务处理-核赔退回特殊赔案详情页面-提交（插入、修改） | 5d | 2017-12-15 | 2017-12-21 | 72d | start no earlier than 2017-12-15 | 王心洋 | 40h |
| 1125 | 5.5.2.194 | 开发自测 | 1d | 2017-12-22 | 2017-12-22 | 71d | start no earlier than 2017-12-22 | 王心洋 | 8h |
| 1126 | 5.5.2.195 | 未处理理算任务（查询） | 3d | 2017-11-30 | 2017-12-04 | 85d | start no earlier than 2017-11-29 | 祁小龙 | 24h |
| 1127 | 5.5.2.196 | 开发自测 | 1d | 2017-12-05 | 2017-12-05 | 84d | start no earlier than 2017-12-04 | 祁小龙 | 8h |
| 1128 | 5.5.2.197 | 暂存处理特殊赔案操作页面-暂存、放弃任务（插入、修改） | 4d | 2017-12-06 | 2017-12-11 | 80d | start no earlier than 2017-12-05 | 祁小龙 | 32h |
| 1129 | 5.5.2.198 | 开发自测 | 1d | 2017-12-12 | 2017-12-12 | 79d | start no earlier than 2017-12-11 | 祁小龙 | 8h |
| 1130 | 5.5.2.199 | 未处理理算任务详情（查询） | 3d | 2017-12-15 | 2017-12-19 | 74d | start no earlier than 2017-12-15 | 尹凯锋 | 24h |

| ID | WBS | Task | Duration | Start | Finish | Predecessors | Total slack | Free slack | Constraint | Resources | Work |
| --- | --- | --- | --- | --- | --- | --- | --- | --- | --- | --- | --- |
| 1131 | 5.5.2.200 | 开发自测 | 1d | 2017-12-20 | 2017-12-20 |  | 73d |  | start no earlier than 2017-12-20 | 尹凯锋 | 8h |
| 1132 | 5.5.2.201 | 未处理理算任务操作-生成赔付标的信息（插入） | 5d | 2017-12-15 | 2017-12-21 |  | 72d |  | start no earlier than 2017-12-15 | 马俊玲 | 40h |
| 1133 | 5.5.2.202 | 开发自测 | 1d | 2017-12-22 | 2017-12-22 |  | 71d |  | start no earlier than 2017-12-22 | 马俊玲 | 8h |
| 1134 | 5.5.2.203 | 未处理理算任务操作-膳制赔款清单（查询） | 3d | 2017-12-14 | 2017-12-18 |  | 75d |  | start no earlier than 2017-12-14 | 梁耀泽 | 24h |
| 1135 | 5.5.2.204 | 开发自测 | 1d | 2017-12-15 | 2017-12-15 |  | 76d |  | start no earlier than 2017-12-15 | 梁耀泽 | 8h |
| 1136 | 5.5.2.205 | 未处理理算任务操作-下载模板（查询） | 3d | 2017-12-11 | 2017-12-13 |  | 78d |  | start no earlier than 2017-12-11 | 李斌 | 24h |
| 1137 | 5.5.2.206 | 开发自测 | 1d | 2017-12-14 | 2017-12-14 |  | 77d |  | start no earlier than 2017-12-14 | 李斌 | 8h |
| 1138 | 5.5.2.207 | 未处理理算任务操作-导入银行支付信息（插入） | 5d | 2017-12-15 | 2017-12-21 |  | 72d |  | start no earlier than 2017-12-15 | 李斌 | 40h |
| 1139 | 5.5.2.208 | 开发自测 | 1d | 2017-12-20 | 2017-12-20 |  | 73d |  | start no earlier than 2017-12-20 | 李斌 | 8h |
| 1140 | 5.5.2.209 | 未处理理算任务操作-关联银行支付信息（修改） | 5d | 2017-12-18 | 2017-12-22 |  | 71d |  | start no earlier than 2017-12-18 | 杨航 | 40h |
| 1141 | 5.5.2.210 | 开发自测 | 1d | 2017-12-25 | 2017-12-25 |  | 70d |  | start no earlier than 2017-12-25 | 杨航 | 8h |
| 1142 | 5.5.2.211 | 正在处理理算任务（查询） | 3d | 2017-12-20 | 2017-12-22 |  | 71d |  | start no earlier than 2017-12-20 | 汪钊 | 24h |
| 1143 | 5.5.2.212 | 开发自测 | 1d | 2017-12-25 | 2017-12-25 |  | 70d |  | start no earlier than 2017-12-25 | 汪钊 | 8h |
| 1144 | 5.5.2.213 | 正在处理理算任务（查询） | 3d | 2017-12-25 | 2017-12-27 |  | 68d |  | start no earlier than 2017-12-25 | 王心洋 | 24h |
| 1145 | 5.5.2.214 | 开发自测 | 1d | 2017-12-28 | 2017-12-28 |  | 67d |  | start no earlier than 2017-12-28 | 王心洋 | 8h |
| 1146 | 5.5.2.215 | 处理特殊赔案-暂存（插入、修改） | 4d | 2017-12-13 | 2017-12-18 |  | 75d |  | start no earlier than 2017-12-12 | 祁小龙 | 32h |
| 1147 | 5.5.2.216 | 开发自测 | 1d | 2017-12-19 | 2017-12-19 |  | 74d |  | start no earlier than 2017-12-18 | 祁小龙 | 8h |
| 1148 | 5.5.2.217 | 正在处理理算任务操作-提交（插入、修改） | 5d | 2017-12-21 | 2017-12-27 |  | 68d |  | start no earlier than 2017-12-21 | 尹凯锋 | 40h |
| 1149 | 5.5.2.218 | 开发自测 | 1d | 2017-12-28 | 2017-12-28 |  | 67d |  | start no earlier than 2017-12-28 | 尹凯锋 | 8h |
| 1150 | 5.5.2.219 | 理算任务处理-申请注销（查询） | 3d | 2017-12-25 | 2017-12-27 |  | 68d |  | start no earlier than 2017-12-25 | 马俊玲 | 24h |
| 1151 | 5.5.2.220 | 开发自测 | 1d | 2017-12-28 | 2017-12-28 |  | 67d |  | start no earlier than 2017-12-28 | 马俊玲 | 8h |
| 1152 | 5.5.2.221 | 理算任务处理-申请拒赔（查询） | 3d | 2017-12-18 | 2017-12-20 |  | 73d |  | start no earlier than 2017-12-18 | 梁耀泽 | 24h |
| 1153 | 5.5.2.222 | 开发自测 | 1d | 2017-12-21 | 2017-12-21 |  | 72d |  | start no earlier than 2017-12-21 | 梁耀泽 | 8h |
| 1154 | 5.5.2.223 | 理算任务处理-申请注销/拒赔查询 | 3d | 2017-12-22 | 2017-12-26 |  | 69d |  | start no earlier than 2017-12-22 | 梁耀泽 | 24h |
| 1155 | 5.5.2.224 | 开发自测 | 2d | 2017-12-27 | 2017-12-28 |  | 67d |  | start no earlier than 2017-12-27 | 梁耀泽 | 16h |
| 1156 | 5.5.2.225 | 理算任务处理-申请注销/拒赔-提交（插入、修改） | 5d | 2017-12-21 | 2017-12-27 |  | 68d |  | start no earlier than 2017-12-21 | 李斌 | 40h |
| 1157 | 5.5.2.226 | 开发自测 | 1d | 2017-12-28 | 2017-12-28 |  | 67d |  | start no earlier than 2017-12-28 | 李斌 | 8h |
| 1158 | 5.5.2.227 | 理算任务处理-理算查询（查询） | 3d | 2017-12-28 | 2017-12-31 |  | 65d |  | start no earlier than 2017-12-28 | 沈士威 | 24h |
| 1159 | 5.5.2.228 | 开发自测 | 1d | 2018-01-02 | 2018-01-02 |  | 63d |  | start no earlier than 2018-01-02 | 沈士威 | 8h |
| 1160 | 5.5.2.229 | 理算任务处理-理算查询结果（删除） | 3d | 2017-12-27 | 2017-12-29 |  | 66d |  | start no earlier than 2017-12-27 | 杨成程 | 24h |
| 1161 | 5.5.2.230 | 开发自测 | 1d | 2018-01-01 | 2018-01-01 |  | 64d |  | start no earlier than 2018-01-01 | 杨成程 | 8h |
| 1162 | 5.5.2.231 | 理算任务处理-核赔退回理算任务（查询） | 3d | 2017-12-26 | 2017-12-28 |  | 67d |  | start no earlier than 2017-12-26 | 杨航 | 24h |
| 1163 | 5.5.2.232 | 开发自测 | 1d | 2017-12-29 | 2017-12-29 |  | 66d |  | start no earlier than 2017-12-29 | 杨航 | 8h |
| 1164 | 5.5.2.233 | 大牲畜耳标号数据保存 | 3d | 2017-12-26 | 2017-12-28 |  | 67d |  | start no earlier than 2017-12-26 | 汪钊 | 24h |
| 1165 | 5.5.2.234 | 开发自测 | 1d | 2017-12-29 | 2017-12-29 |  | 66d |  | finish no earlier than 2017-12-29 | 汪钊 | 8h |
| 1166 | 5.5.2.235 | 理算任务处理-核赔退回理算任务详细信息（查询） | 3d | 2018-01-01 | 2018-01-03 |  | 62d |  | start no earlier than 2018-01-01 | 汪钊 | 24h |
| 1167 | 5.5.2.236 | 开发自测 | 1d | 2018-01-04 | 2018-01-04 |  | 61d |  | start no earlier than 2018-01-04 | 汪钊 | 8h |
| 1168 | 5.5.2.237 | 创建模板(插入) | 4d | 2017-12-25 | 2017-12-28 |  | 67d |  | start no earlier than 2017-12-25 | 王心洋 | 32h |
| 1169 | 5.5.2.238 | 开发自测 | 1d | 2017-12-29 | 2017-12-29 |  | 66d |  | start no earlier than 2017-12-29 | 王心洋 | 8h |
| 1170 | 5.5.2.239 | 理算任务处理-核赔退回理算任务详细信息页面-提交（修改） | 5d | 2017-12-20 | 2017-12-26 |  | 69d |  | start no earlier than 2017-12-19 | 祁小龙 | 40h |
| 1171 | 5.5.2.240 | 开发自测 | 1d | 2017-12-27 | 2017-12-27 |  | 65d | 0d | finish no earlier than 2017-12-27 | 祁小龙 | 8h |
| 1172 | 5.5.2.241 | 结案任务处理-未处理结案任务查询 | 3d | 2017-12-29 | 2018-01-01 |  | 64d |  | start no earlier than 2017-12-29 | 尹凯锋 | 24h |
| 1173 | 5.5.2.242 | 开发自测 | 1d | 2018-01-03 | 2018-01-03 |  | 62d |  | start no earlier than 2018-01-03 | 尹凯锋 | 8h |
| 1174 | 5.5.2.243 | 结案任务处理-未处理结案任务详情(查询) | 3d | 2017-12-29 | 2018-01-01 |  | 64d |  | start no earlier than 2017-12-29 | 马俊玲 | 24h |
| 1175 | 5.5.2.244 | 开发自测 | 1d | 2018-01-03 | 2018-01-03 |  | 62d |  | start no earlier than 2018-01-03 | 马俊玲 | 8h |
| 1176 | 5.5.2.245 | 结案任务处理-结案任务查询 | 3d | 2017-12-29 | 2018-01-01 |  | 64d |  | start no earlier than 2017-12-29 | 梁耀泽 | 24h |
| 1177 | 5.5.2.246 | 开发自测 | 1d | 2018-01-03 | 2018-01-03 |  | 62d |  | start no earlier than 2018-01-03 | 梁耀泽 | 8h |
| 1178 | 5.5.2.247 | 结案任务处理-结案任务详情 | 3d | 2017-12-29 | 2018-01-01 |  | 64d |  | start no earlier than 2017-12-29 | 李斌 | 24h |
| 1179 | 5.5.2.248 | 开发自测 | 1d | 2018-01-03 | 2018-01-03 |  | 62d |  | start no earlier than 2018-01-03 | 李斌 | 8h |
| 1180 | 5.5.2.249 | 结案任务处理-结案任务处理(修改、插入) | 5d | 2018-01-01 | 2018-01-05 |  | 60d |  | start no earlier than 2018-01-01 | 杨航 | 40h |
| 1181 | 5.5.2.250 | 开发自测 | 1d | 2018-01-08 | 2018-01-08 |  | 59d |  | start no earlier than 2018-01-08 | 杨航 | 8h |
| 1182 | 5.5.2.251 | 理赔打印-案卷目录 | 3d | 2018-01-03 | 2018-01-05 |  | 60d |  | start no earlier than 2018-01-03 | 沈士威 | 24h |
| 1183 | 5.5.2.252 | 开发自测 | 1d | 2018-01-08 | 2018-01-08 |  | 59d |  | start no earlier than 2018-01-08 | 沈士威 | 8h |
| 1184 | 5.5.2.253 | 理赔打印-拒赔（注销）通知书 | 3d | 2018-01-02 | 2018-01-04 |  | 61d |  | start no earlier than 2018-01-02 | 杨成程 | 24h |
| 1185 | 5.5.2.254 | 开发自测 | 1d | 2018-01-05 | 2018-01-05 |  | 60d |  | start no earlier than 2018-01-05 | 杨成程 | 8h |
| 1186 | 5.5.2.255 | 理赔打印-农险赔案卷宗封面 | 3d | 2017-12-28 | 2017-12-31 | 1171 | 65d |  | start no earlier than 2017-12-28 | 王心洋 | 24h |
| 1187 | 5.5.2.256 | 开发自测 | 1d | 2018-01-01 | 2018-01-01 |  | 64d |  | start no earlier than 2018-01-01 | 王心洋 | 8h |
| 1188 | 5.5.2.257 | 理赔打印-农险赔案卷宗 | 3d | 2018-01-05 | 2018-01-09 |  | 58d |  | start no earlier than 2018-01-05 | 汪钊 | 24h |
| 1189 | 5.5.2.258 | 开发自测 | 1d | 2018-01-10 | 2018-01-10 |  | 57d |  | start no earlier than 2018-01-10 | 汪钊 | 8h |
| 1190 | 5.5.2.259 | 理赔打印-案卷流转单 | 3d | 2017-12-28 | 2017-12-31 |  | 65d |  | start no earlier than 2017-12-27 | 祁小龙 | 24h |
| 1191 | 5.5.2.260 | 开发自测 | 1d | 2018-01-01 | 2018-01-01 |  | 64d |  | start no earlier than 2017-12-31 | 祁小龙 | 8h |
| 1192 | 5.5.2.261 | 理赔打印-超权限赔案审批表 | 3d | 2018-01-04 | 2018-01-08 |  | 59d |  | start no earlier than 2018-01-04 | 尹凯锋 | 24h |
| 1193 | 5.5.2.262 | 开发自测 | 1d | 2018-01-09 | 2018-01-09 |  | 58d |  | start no earlier than 2018-01-09 | 尹凯锋 | 8h |
| 1194 | 5.5.2.263 | 理赔打印-重大案件报告表 | 3d | 2018-01-04 | 2018-01-08 |  | 59d |  | start no earlier than 2018-01-04 | 马俊玲 | 24h |
| 1195 | 5.5.2.264 | 开发自测 | 1d | 2018-01-09 | 2018-01-09 |  | 58d |  | start no earlier than 2018-01-09 | 马俊玲 | 8h |
| 1196 | 5.5.2.265 | 理赔打印-代查勘委托书 | 3d | 2018-01-04 | 2018-01-08 |  | 59d |  | start no earlier than 2018-01-04 | 梁耀泽 | 24h |
| 1197 | 5.5.2.266 | 开发自测 | 1d | 2018-01-09 | 2018-01-09 |  | 58d |  | start no earlier than 2018-01-09 | 梁耀泽 | 8h |
| 1198 | 5.5.2.267 | 理赔打印-现场查勘报告打印 | 3d | 2018-01-04 | 2018-01-08 |  | 59d |  | start no earlier than 2018-01-04 | 李斌 | 24h |
| 1199 | 5.5.2.268 | 开发自测 | 1d | 2018-01-09 | 2018-01-09 |  | 58d |  | start no earlier than 2018-01-09 | 李斌 | 8h |
| 1200 | 5.5.2.269 | 理赔打印-定损报告打印 | 3d | 2018-01-09 | 2018-01-11 |  | 56d |  | start no earlier than 2018-01-09 | 杨航 | 24h |

| ID | WBS | Task | Type | Duration | Start | Finish | Total slack | Constraint | Resources | Work |
| --- | --- | --- | --- | --- | --- | --- | --- | --- | --- | --- |
| 1201 | 5.5.2.270 | 开发自测 |  | 1d | 2018-01-11 | 2018-01-11 | 56d | start no earlier than 2018-01-11 | 杨航 | 8h |
| 1202 | 5.5.2.271 | 并案处理-未处理立案任务(查询) |  | 2d | 2018-01-09 | 2018-01-10 | 57d | start no earlier than 2018-01-09 | 沈士威 | 16h |
| 1203 | 5.5.2.272 | 开发自测 |  | 1d | 2018-01-11 | 2018-01-11 | 56d | finish no earlier than 2018-01-11 | 沈士威 | 8h |
| 1204 | 5.5.2.273 | 理赔打印-赔款计算书打印 |  | 3d | 2018-01-08 | 2018-01-10 | 57d | start no earlier than 2018-01-08 | 杨成程 | 24h |
| 1205 | 5.5.2.274 | 开发自测 |  | 1d | 2018-01-11 | 2018-01-11 | 56d | start no earlier than 2018-01-11 | 杨成程 | 8h |
| 1206 | 5.5.2.275 | 理赔打印-预付赔款报告书 |  | 3d | 2018-01-02 | 2018-01-04 | 61d | start no earlier than 2018-01-02 | 王心洋 | 24h |
| 1207 | 5.5.2.276 | 开发自测 |  | 1d | 2018-01-05 | 2018-01-05 | 60d | start no earlier than 2018-01-05 | 王心洋 | 8h |
| 1208 | 5.5.2.277 | 理赔打印-拒赔（注销）案件 |  | 3d | 2018-01-11 | 2018-01-15 | 54d | start no earlier than 2018-01-11 | 汪钊 | 24h |
| 1209 | 5.5.2.278 | 开发自测 |  | 1d | 2018-01-16 | 2018-01-16 | 53d | start no earlier than 2018-01-16 | 汪钊 | 8h |
| 1210 | 5.5.2.279 | 理赔打印-核算报告 |  | 3d | 2018-01-08 | 2018-01-10 | 57d | start no earlier than 2018-01-08 | 王心洋 | 24h |
| 1211 | 5.5.2.280 | 开发自测 |  | 1d | 2018-01-11 | 2018-01-11 | 56d | start no earlier than 2018-01-11 | 王心洋 | 8h |
| 1212 | 5.5.2.281 | 理赔打印-结案报告 |  | 3d | 2018-01-02 | 2018-01-04 | 61d | start no earlier than 2018-01-01 | 祁小龙 | 24h |
| 1213 | 5.5.2.282 | 开发自测 | milestone | 0d | 2018-01-04 | 2018-01-04 | 61d | start no earlier than 2018-01-04 | 祁小龙 |  |
| 1214 | 5.5.2.283 | 理赔打印-养殖险查询报告 |  | 3d | 2018-01-10 | 2018-01-12 | 55d | start no earlier than 2018-01-10 | 尹凯锋 | 24h |
| 1215 | 5.5.2.284 | 开发自测 |  | 1d | 2018-01-15 | 2018-01-15 | 54d | start no earlier than 2018-01-15 | 尹凯锋 | 8h |
| 1216 | 5.5.2.285 | 理赔打印-种植险调查报告 |  | 3d | 2018-01-10 | 2018-01-12 | 55d | start no earlier than 2018-01-10 | 马俊玲 | 24h |
| 1217 | 5.5.2.286 | 开发自测 |  | 1d | 2018-01-15 | 2018-01-15 | 54d | start no earlier than 2018-01-15 | 马俊玲 | 8h |
| 1218 | 5.5.2.287 | 理赔打印-照片粘贴页 |  | 3d | 2018-01-10 | 2018-01-12 | 55d | start no earlier than 2018-01-10 | 梁耀泽 | 24h |
| 1219 | 5.5.2.288 | 开发自测 |  | 1d | 2018-01-15 | 2018-01-15 | 54d | start no earlier than 2018-01-15 | 梁耀泽 | 8h |
| 1220 | 5.5.2.289 | 并案处理-未处理查勘定损任务(查询) |  | 3d | 2018-01-10 | 2018-01-12 | 55d | start no earlier than 2018-01-10 | 李斌 | 24h |
| 1221 | 5.5.2.290 | 开发自测 |  | 1d | 2018-01-15 | 2018-01-15 | 54d | finish no earlier than 2018-01-15 | 李斌 | 8h |
| 1222 | 5.5.2.291 | 理赔打印-单证粘贴页 |  | 3d | 2018-01-12 | 2018-01-16 | 53d | start no earlier than 2018-01-12 | 杨航 | 24h |
| 1223 | 5.5.2.292 | 开发自测 |  | 1d | 2018-01-17 | 2018-01-17 | 52d | start no earlier than 2018-01-17 | 杨航 | 8h |
| 1224 | 5.5.2.293 | 理赔打印-赔款收据 |  | 3d | 2018-01-12 | 2018-01-16 | 53d | start no earlier than 2018-01-12 | 沈士威 | 24h |
| 1225 | 5.5.2.294 | 开发自测 |  | 1d | 2018-01-17 | 2018-01-17 | 52d | start no earlier than 2018-01-17 | 沈士威 | 8h |
| 1226 | 5.5.2.295 | 理赔打印-拒赔（注销）案件 |  | 3d | 2018-01-12 | 2018-01-16 | 53d | start no earlier than 2018-01-12 | 杨成程 | 24h |
| 1227 | 5.5.2.296 | 开发自测 |  | 1d | 2018-01-17 | 2018-01-17 | 52d | start no earlier than 2018-01-17 | 杨成程 | 8h |
| 1228 | 5.5.2.297 | 理赔打印-保单抄件 |  | 4d | 2018-01-12 | 2018-01-17 | 52d | start no earlier than 2018-01-12 | 王心洋 | 32h |
| 1229 | 5.5.2.298 | 开发自测 |  | 1d | 2018-01-18 | 2018-01-18 | 51d | start no earlier than 2018-01-18 | 王心洋 | 8h |
| 1230 | 5.5.2.299 | 理赔打印-出险通知书 |  | 3d | 2018-01-17 | 2018-01-19 | 50d | start no earlier than 2018-01-17 | 汪钊 | 24h |
| 1231 | 5.5.2.300 | 开发自测 |  | 1d | 2018-01-22 | 2018-01-22 | 49d | start no earlier than 2018-01-22 | 汪钊 | 8h |
| 1232 | 5.5.2.301 | 理赔打印-给付申请书 |  | 3d | 2018-01-05 | 2018-01-09 | 58d | start no earlier than 2018-01-04 | 祁小龙 | 24h |
| 1233 | 5.5.2.302 | 开发自测 |  | 1d | 2018-01-10 | 2018-01-10 | 57d | start no earlier than 2018-01-09 | 祁小龙 | 8h |
| 1234 | 5.5.2.303 | 理赔打印-预付申请书 |  | 3d | 2018-01-16 | 2018-01-18 | 51d | start no earlier than 2018-01-16 | 尹凯锋 | 24h |
| 1235 | 5.5.2.304 | 开发自测 |  | 1d | 2018-01-19 | 2018-01-19 | 50d | start no earlier than 2018-01-19 | 尹凯锋 | 8h |
| 1236 | 5.5.2.305 | 理赔打印-赔款协议书 |  | 3d | 2018-01-16 | 2018-01-18 | 51d | start no earlier than 2018-01-16 | 马俊玲 | 24h |
| 1237 | 5.5.2.306 | 开发自测 |  | 1d | 2018-01-19 | 2018-01-19 | 50d | start no earlier than 2018-01-19 | 马俊玲 | 8h |
| 1238 | 5.5.2.307 | 理赔打印-索赔资料清单 |  | 3d | 2018-01-16 | 2018-01-18 | 51d | start no earlier than 2018-01-16 | 梁耀泽 | 24h |
| 1239 | 5.5.2.308 | 开发自测 |  | 1d | 2018-01-19 | 2018-01-19 | 50d | start no earlier than 2018-01-19 | 梁耀泽 | 8h |
| 1240 | 5.5.2.309 | 理赔打印-损失清单 |  | 3d | 2018-01-16 | 2018-01-18 | 51d | start no earlier than 2018-01-16 | 李斌 | 24h |
| 1241 | 5.5.2.310 | 开发自测 |  | 1d | 2018-01-19 | 2018-01-19 | 50d | start no earlier than 2018-01-19 | 李斌 | 8h |
| 1242 | 5.5.2.311 | 理赔打印-授权委托书 |  | 3d | 2018-01-18 | 2018-01-22 | 49d | start no earlier than 2018-01-18 | 杨航 | 24h |
| 1243 | 5.5.2.312 | 开发自测 |  | 1d | 2018-01-23 | 2018-01-23 | 48d | start no earlier than 2018-01-23 | 杨航 | 8h |
| 1244 | 5.5.2.313 | 理赔打印-权益转让书 |  | 3d | 2018-01-18 | 2018-01-22 | 49d | start no earlier than 2018-01-18 | 沈士威 | 24h |
| 1245 | 5.5.2.314 | 开发自测 |  | 1d | 2018-01-23 | 2018-01-23 | 48d | start no earlier than 2018-01-23 | 沈士威 | 8h |
| 1246 | 5.5.2.315 | 重开赔案查询 |  | 2d | 2018-01-18 | 2018-01-19 | 50d | start no earlier than 2018-01-18 | 杨成程 | 16h |
| 1247 | 5.5.2.316 | 开发自测 |  | 1d | 2018-01-22 | 2018-01-22 | 49d | start no earlier than 2018-01-22 | 杨成程 | 8h |
| 1248 | 5.5.2.317 | 重开赔案保存 |  | 5d | 2018-01-23 | 2018-01-29 | 44d | start no earlier than 2018-01-23 | 杨成程 | 40h |
| 1249 | 5.5.2.318 | 开发自测 |  | 1d | 2018-01-30 | 2018-01-30 | 43d | start no earlier than 2018-01-30 | 杨成程 | 8h |
| 1250 | 5.5.2.319 | 流程查询 |  | 2d | 2018-01-19 | 2018-01-22 | 49d | start no earlier than 2018-01-19 | 王心洋 | 16h |
| 1251 | 5.5.2.320 | 开发自测 |  | 1d | 2018-01-23 | 2018-01-23 | 48d | start no earlier than 2018-01-23 | 王心洋 | 8h |
| 1252 | 5.5.2.321 | 案件号互查 |  | 2d | 2018-01-24 | 2018-01-25 | 46d | start no earlier than 2018-01-24 | 王心洋 | 16h |
| 1253 | 5.5.2.322 | 开发自测 |  | 1d | 2018-01-26 | 2018-01-26 | 45d | start no earlier than 2018-01-26 | 王心洋 | 8h |
| 1254 | 5.5.2.323 | 新增班表基础信息查询 |  | 4d | 2017-10-12 | 2017-10-17 | 119d | start no earlier than 2017-10-12 | 陈晓慧 | 32h |
| 1255 | 5.5.2.324 | 开发自测 |  | 1d | 2017-10-18 | 2017-10-18 | 118d | start no earlier than 2017-10-18 | 陈晓慧 | 8h |
| 1256 | 5.5.2.325 | 班表上月信息查询 |  | 4d | 2017-10-19 | 2017-10-24 | 114d | start no earlier than 2017-10-19 | 陈晓慧 | 32h |
| 1257 | 5.5.2.326 | 开发自测 |  | 1d | 2017-10-25 | 2017-10-25 | 113d | start no earlier than 2017-10-25 | 陈晓慧 | 8h |
| 1258 | 5.5.2.327 | 班表区域查询 |  | 4d | 2017-10-26 | 2017-10-31 | 109d | start no earlier than 2017-10-26 | 陈晓慧 | 32h |
| 1259 | 5.5.2.328 | 开发自测 |  | 1d | 2017-11-01 | 2017-11-01 | 108d | start no earlier than 2017-11-01 | 陈晓慧 | 8h |
| 1260 | 5.5.2.329 | 班表修改 |  | 4d | 2017-11-02 | 2017-11-07 | 104d | start no earlier than 2017-11-02 | 陈晓慧 | 32h |
| 1261 | 5.5.2.330 | 开发自测 |  | 1d | 2017-11-08 | 2017-11-08 | 103d | start no earlier than 2017-11-08 | 陈晓慧 | 8h |
| 1262 | 5.5.2.331 | 班表区域保存 |  | 5d | 2017-11-09 | 2017-11-15 | 98d | finish no earlier than 2017-11-15 | 陈晓慧 | 40h |
| 1263 | 5.5.2.332 | 开发自测 |  | 1d | 2017-11-16 | 2017-11-16 | 97d | start no earlier than 2017-11-16 | 陈晓慧 | 8h |
| 1264 | 5.5.2.333 | 查询班表信息 |  | 4d | 2017-11-17 | 2017-11-22 | 93d | finish no earlier than 2017-11-22 | 陈晓慧 | 32h |
| 1265 | 5.5.2.334 | 开发自测 |  | 1d | 2017-11-23 | 2017-11-23 | 92d | start no earlier than 2017-11-23 | 陈晓慧 | 8h |
| 1266 | 5.5.2.335 | 单笔支付信息查询 |  | 3d | 2017-11-23 | 2017-11-27 | 90d | start no earlier than 2017-11-23 | 陈晓慧 | 24h |
| 1267 | 5.5.2.336 | 开发自测 |  | 1d | 2017-11-28 | 2017-11-28 | 89d | start no earlier than 2017-11-28 | 陈晓慧 | 8h |
| 1268 | 5.5.2.337 | 单笔支付信息维护 |  | 5d | 2017-11-29 | 2017-12-05 | 84d | start no earlier than 2017-11-29 | 陈晓慧 | 40h |
| 1269 | 5.5.2.338 | 开发自测 |  | 1d | 2017-12-06 | 2017-12-06 | 83d | start no earlier than 2017-12-06 | 陈晓慧 | 8h |
| 1270 | 5.5.2.339 | 支付清单查询 |  | 3d | 2017-12-07 | 2017-12-11 | 80d | start no earlier than 2017-12-07 | 陈晓慧 | 24h |

| ID | WBS | Task | Duration | Start | Finish | Total slack | Constraint | Resources | Work |
| --- | --- | --- | --- | --- | --- | --- | --- | --- | --- |
| 1271 | 5.5.2.340 | 开发自测 | 1d | 2017-12-12 | 2017-12-12 | 79d | start no earlier than 2017-12-12 | 陈晓慧 | 8h |
| 1272 | 5.5.2.341 | 支付清单维护 | 5d | 2017-12-13 | 2017-12-19 | 74d | start no earlier than 2017-12-13 | 陈晓慧 | 40h |
| 1273 | 5.5.2.342 | 开发自测 | 1d | 2017-12-20 | 2017-12-20 | 73d | start no earlier than 2017-12-20 | 陈晓慧 | 8h |
| 1274 | 5.5.2.343 | 暂存支付信息查询 | 3d | 2017-12-21 | 2017-12-25 | 70d | start no earlier than 2017-12-21 | 陈晓慧 | 24h |
| 1275 | 5.5.2.344 | 开发自测 | 1d | 2017-12-26 | 2017-12-26 | 69d | start no earlier than 2017-12-26 | 陈晓慧 | 8h |
| 1276 | 5.5.2.345 | 暂存支付信息维护 | 5d | 2017-12-27 | 2018-01-01 | 64d | start no earlier than 2017-12-27 | 陈晓慧 | 40h |
| 1277 | 5.5.2.346 | 开发自测 | 1d | 2018-01-03 | 2018-01-03 | 62d | finish no earlier than 2018-01-03 | 陈晓慧 | 8h |
| 1278 | 5.5.2.347 | 退回支付信息查询 | 3d | 2018-01-04 | 2018-01-08 | 59d | start no earlier than 2018-01-04 | 陈晓慧 | 24h |
| 1279 | 5.5.2.348 | 开发自测 | 1d | 2018-01-09 | 2018-01-09 | 58d | finish no earlier than 2018-01-09 | 陈晓慧 | 8h |
| 1280 | 5.5.2.349 | 退回支付信息维护 | 5d | 2018-01-10 | 2018-01-16 | 53d | start no earlier than 2018-01-10 | 陈晓慧 | 40h |
| 1281 | 5.5.2.350 | 开发自测 | 1d | 2018-01-17 | 2018-01-17 | 52d | start no earlier than 2018-01-17 | 陈晓慧 | 8h |
| 1282 | 5.5.2.351 | 支付查询 | 3d | 2018-01-18 | 2018-01-22 | 49d | start no earlier than 2018-01-18 | 陈晓慧 | 24h |
| 1283 | 5.5.2.352 | 开发自测 | 1d | 2018-01-23 | 2018-01-23 | 48d | start no earlier than 2018-01-23 | 陈晓慧 | 8h |
| 1284 | 5.5.2.353 | 清单类未支付记录管理功能 | 5d | 2018-01-24 | 2018-01-30 | 43d | start no earlier than 2018-01-24 | 陈晓慧 | 40h |
| 1285 | 5.5.2.354 | 开发自测 | 1d | 2018-01-31 | 2018-01-31 | 42d | start no earlier than 2018-01-31 | 陈晓慧 | 8h |
| 1286 | 5.5.2.355 | 工作流列表页面 | 3d | 2018-01-23 | 2018-01-25 | 46d | start no earlier than 2018-01-23 | 汪钊 | 24h |
| 1287 | 5.5.2.356 | 开发自测 | 1d | 2018-01-26 | 2018-01-26 | 45d | start no earlier than 2018-01-26 | 汪钊 | 8h |
| 1288 | 5.5.2.357 | 模板维护页面(修改) | 5d | 2018-01-11 | 2018-01-17 | 52d | finish no earlier than 2018-01-17 | 祁小龙 | 40h |
| 1289 | 5.5.2.358 | 开发自测 | 1d | 2018-01-18 | 2018-01-18 | 51d | start no earlier than 2018-01-18 | 祁小龙 | 8h |
| 1290 | 5.5.2.359 | 模板批量分配 | 4d | 2018-01-22 | 2018-01-25 | 46d | start no earlier than 2018-01-22 | 尹凯锋 | 32h |
| 1291 | 5.5.2.360 | 开发自测 | 1d | 2018-01-26 | 2018-01-26 | 45d | finish no earlier than 2018-01-26 | 尹凯锋 | 8h |
| 1292 | 5.5.2.361 | 工作流模板路径列表 | 3d | 2018-01-22 | 2018-01-24 | 47d | start no earlier than 2018-01-19 | 梁耀泽 | 24h |
| 1293 | 5.5.2.362 | 开发自测 | 1d | 2018-01-25 | 2018-01-25 | 46d | start no earlier than 2018-01-24 | 梁耀泽 | 8h |
| 1294 | 5.5.2.363 | 工作流模板路径条件 | 5d | 2018-01-24 | 2018-01-30 | 43d | start no earlier than 2018-01-24 | 马俊玲 | 40h |
| 1295 | 5.5.2.364 | 开发自测 | 1d | 2018-01-31 | 2018-01-31 | 42d | start no earlier than 2018-01-30 | 马俊玲 | 8h |
| 1296 | 5.5.2.365 | 并案处理-案件合并(修改) | 4d | 2018-01-19 | 2018-01-24 | 47d | start no earlier than 2018-01-18 | 祁小龙 | 32h |
| 1297 | 5.5.2.366 | 开发自测 | 2d | 2018-01-25 | 2018-01-26 | 45d | start no earlier than 2018-01-24 | 祁小龙 | 16h |
| 1298 | 5.5.2.367 | 并案处理-案件合并修改 | 4d | 2018-01-22 | 2018-01-25 | 46d | start no earlier than 2018-01-22 | 李斌 | 32h |
| 1299 | 5.5.2.368 | 开发自测 | 1d | 2018-01-26 | 2018-01-26 | 45d | finish no earlier than 2018-01-26 | 李斌 | 8h |
| 1300 | 5.5.2.369 | 并案处理-正在处理查勘定损任务(修改、插入) | 4d | 2018-01-24 | 2018-01-29 | 44d | start no earlier than 2018-01-24 | 杨航 | 32h |
| 1301 | 5.5.2.370 | 开发自测 | 1d | 2018-01-30 | 2018-01-30 | 43d | finish no earlier than 2018-01-30 | 杨航 | 8h |
| 1302 | 5.5.2.371 | 并案处理-正在处理立案任务(修改、插入) | 4d | 2018-01-24 | 2018-01-29 | 44d | start no earlier than 2018-01-24 | 沈士威 | 32h |
| 1303 | 5.5.2.372 | 开发自测 | 2d | 2018-01-30 | 2018-01-31 | 42d | finish no earlier than 2018-01-31 | 沈士威 | 16h |

| ID | WBS | Task | Duration | Start | Finish | Predecessors | Total slack | Free slack | Constraint | Resources | Work |
| --- | --- | --- | --- | --- | --- | --- | --- | --- | --- | --- | --- |
| 1304 | 5.5.2.373 | **调用短信平台服务** | 7d? | 2017-10-16 | 2017-10-24 |  | 114d |  |  |  | 56h |
| 1305 | 5.5.2.373.1 | 核赔通过后向操作员短信发送短信调用 | 4d | 2017-10-16 | 2017-10-19 |  | 117d |  | start no earlier than 2017-10-16 | 王柏 | 32h |
| 1306 | 5.5.2.373.2 | 接口文档整理 | 1d? | 2017-10-20 | 2017-10-20 |  | 116d |  | start no earlier than 2017-10-20 | 王柏 | 8h |
| 1307 | 5.5.2.373.3 | 开发自测 | 2d | 2017-10-23 | 2017-10-24 |  | 114d |  | start no earlier than 2017-10-23 | 王柏 | 16h |
| 1308 | 5.5.2.374 | **调用影像系统提供的服务** | 6d | 2017-12-18 | 2017-12-25 |  | 70d |  |  |  | 32h |
| 1309 | 5.5.2.374.1 | 理赔打印时调用影像系统 | 3d | 2017-12-21 | 2017-12-25 |  | 70d |  | start no earlier than 2017-12-21 | 杨昆 | 24h |
| 1310 | 5.5.2.374.2 | 开发自测 | 1d | 2017-12-18 | 2017-12-18 |  | 75d |  | start no earlier than 2017-12-18 | 杨昆 | 8h |
| 1311 | 5.5.3 | **前后端联调** | 125d | 2017-09-26 | 2018-03-15 |  | 11d |  |  |  |  |
| 1312 | 5.5.3.1 | **理赔系统设计** | 125d | 2017-09-26 | 2018-03-15 |  | 11d |  |  |  |  |
| 1313 | 5.5.3.1.1 | **2.2.3.1 登录系统** | 1d | 2017-09-26 | 2017-09-26 |  | 129d | 0d |  |  |  |
| 1314 | 5.5.3.1.1.1 | 1 登录 | 1d | 2017-09-26 | 2017-09-26 |  | 129d |  |  |  |  |
| 1315 | 5.5.3.1.1.2 | 2 重新登录 | 1d | 2017-09-26 | 2017-09-26 |  | 129d |  |  |  |  |
| 1316 | 5.5.3.1.1.3 | 3 修改密码 | 1d | 2017-09-26 | 2017-09-26 |  | 129d |  |  |  |  |
| 1317 | 5.5.3.1.2 | **2.2.3.4 我的任务** | 1d | 2017-09-27 | 2017-09-27 | 1313 | 129d | 0d |  |  |  |
| 1318 | 5.5.3.1.2.1 | 1 我的任务 | 1d | 2017-09-27 | 2017-09-27 |  | 129d |  |  |  |  |
| 1319 | 5.5.3.1.3 | **2.2.3.5 理赔管理** | 119d | 2017-09-28 | 2018-03-09 | 1317 | 14d | 0d |  |  |  |
| 1320 | 5.5.3.1.3.1 | 1 报案登记查询页面 | 1d | 2017-09-28 | 2017-09-28 |  | 129d | 0d |  |  |  |
| 1321 | 5.5.3.1.3.2 | 2 报案登记页面 | 1d | 2017-09-29 | 2017-09-29 | 1320 | 129d | 0d |  |  |  |
| 1322 | 5.5.3.1.3.3 | 3 正在处理报案任务查询页面 | 1d | 2017-09-30 | 2017-09-30 | 1321 | 129d | 0d |  |  |  |
| 1323 | 5.5.3.1.3.4 | 4 正在处理报案任务操作页面 | 1d | 2017-10-02 | 2017-10-02 | 1322 | 129d |  |  |  |  |
| 1324 | 5.5.3.1.3.5 | 5 报案任务查询页面 | 1d | 2018-01-18 | 2018-01-18 |  | 50d |  | start no earlier than 2018-01-18 |  |  |
| 1325 | 5.5.3.1.3.6 | 6 报案任务详情查看页面 | 1d | 2018-01-19 | 2018-01-19 |  | 49d |  | start no earlier than 2018-01-19 |  |  |
| 1326 | 5.5.3.1.3.7 | 7 待处理调度任务查询页面 | 1d | 2018-01-19 | 2018-01-19 |  | 49d |  | start no earlier than 2018-01-19 |  |  |
| 1327 | 5.5.3.1.3.8 | 8 待处理调度任务操作页面 | 1d | 2018-01-22 | 2018-01-22 |  | 48d |  | start no earlier than 2018-01-22 |  |  |
| 1328 | 5.5.3.1.3.9 | 9 正在处理调度任务查询页面 | 1d | 2018-01-22 | 2018-01-22 |  | 48d |  | start no earlier than 2018-01-22 |  |  |
| 1329 | 5.5.3.1.3.10 | 10 正在处理调度任务页面 | 1d | 2018-01-23 | 2018-01-23 |  | 47d |  | start no earlier than 2018-01-23 |  |  |
| 1330 | 5.5.3.1.3.11 | 11 调度改派查询页面 | 1d | 2018-01-23 | 2018-01-23 |  | 47d |  | start no earlier than 2018-01-23 |  |  |
| 1331 | 5.5.3.1.3.12 | 12 调度改派页面 | 1d | 2018-01-24 | 2018-01-24 |  | 46d |  | start no earlier than 2018-01-24 |  |  |
| 1332 | 5.5.3.1.3.13 | 13 调度任务查询页面 | 1d | 2018-01-24 | 2018-01-24 |  | 46d |  | start no earlier than 2018-01-24 |  |  |
| 1333 | 5.5.3.1.3.14 | 14 调度任务详情查看页面 | 1d | 2018-01-25 | 2018-01-25 |  | 45d |  | start no earlier than 2018-01-25 |  |  |
| 1334 | 5.5.3.1.3.15 | 15 班表查询页面 | 1d | 2018-01-25 | 2018-01-25 |  | 45d |  | start no earlier than 2018-01-25 |  |  |
| 1335 | 5.5.3.1.3.16 | 16 未处理查勘定损查询页面 | 1d | 2018-01-26 | 2018-01-26 |  | 44d |  | start no earlier than 2018-01-26 |  |  |
| 1336 | 5.5.3.1.3.17 | 17 未处理查勘定损任务操作页面 | 2d | 2018-01-29 | 2018-01-30 |  | 42d |  | start no earlier than 2018-01-29 |  |  |
| 1337 | 5.5.3.1.3.18 | 18 正在处理查勘定损任务查询页面 | 1d | 2018-01-31 | 2018-01-31 |  | 41d |  | start no earlier than 2018-01-31 |  |  |
| 1338 | 5.5.3.1.3.19 | 19 正在处理查勘定损任务操作页面 | 1d | 2018-02-01 | 2018-02-01 |  | 40d |  | start no earlier than 2018-02-01 |  |  |
| 1339 | 5.5.3.1.3.20 | 20 查勘定损任务查询页面 | 1d | 2018-02-01 | 2018-02-01 |  | 40d |  | start no earlier than 2018-02-01 |  |  |
| 1340 | 5.5.3.1.3.21 | 21 查勘定损任务详情查看页面 | 1d | 2018-02-02 | 2018-02-02 |  | 39d |  | start no earlier than 2018-02-02 |  |  |
| 1341 | 5.5.3.1.3.22 | 22 未处理立案任务查询页面 | 1d | 2018-02-05 | 2018-02-05 |  | 38d |  | start no earlier than 2018-02-05 |  |  |
| 1342 | 5.5.3.1.3.23 | 23 未处理立案任务操作页面 | 1d | 2018-02-05 | 2018-02-05 |  | 38d |  | start no earlier than 2018-02-05 |  |  |
| 1343 | 5.5.3.1.3.24 | 24 正在处理立案任务查询页面 | 1d | 2018-02-06 | 2018-02-06 |  | 37d |  | start no earlier than 2018-02-06 |  |  |
| 1344 | 5.5.3.1.3.25 | 25 正在处理立案任务操作页面 | 1d | 2018-02-07 | 2018-02-07 |  | 36d |  | start no earlier than 2018-02-07 |  |  |
| 1345 | 5.5.3.1.3.26 | 26 申请注销/拒赔查询页面 | 1d | 2018-02-07 | 2018-02-07 |  | 36d |  | start no earlier than 2018-02-07 |  |  |
| 1346 | 5.5.3.1.3.27 | 27 申请注销/拒赔操作页面 | 1d | 2018-02-08 | 2018-02-08 |  | 35d |  | start no earlier than 2018-02-08 |  |  |
| 1347 | 5.5.3.1.3.28 | 28 立案任务查询页面 | 1d | 2018-02-09 | 2018-02-09 |  | 34d |  | start no earlier than 2018-02-09 |  |  |
| 1348 | 5.5.3.1.3.29 | 29 立案任务详情查询页面 | 1d | 2018-02-09 | 2018-02-09 |  | 34d |  | start no earlier than 2018-02-09 |  |  |
| 1349 | 5.5.3.1.3.30 | 30 未处理特殊赔案查询页面 | 1d | 2018-02-12 | 2018-02-12 |  | 33d |  | start no earlier than 2018-02-12 |  |  |
| 1350 | 5.5.3.1.3.31 | 31 未处理特殊赔案操作页面 | 1d | 2018-02-12 | 2018-02-12 |  | 33d |  | start no earlier than 2018-02-12 |  |  |
| 1351 | 5.5.3.1.3.32 | 32 正在处理特殊赔案查询页面 | 1d | 2018-02-13 | 2018-02-13 |  | 32d |  | start no earlier than 2018-02-13 |  |  |
| 1352 | 5.5.3.1.3.33 | 33 正在处理特殊赔案操作页面 | 1d | 2018-02-14 | 2018-02-14 |  | 31d |  | start no earlier than 2018-02-14 |  |  |
| 1353 | 5.5.3.1.3.34 | 34 特殊赔案查询页面 | 1d | 2018-02-14 | 2018-02-14 |  | 31d |  | start no earlier than 2018-02-14 |  |  |
| 1354 | 5.5.3.1.3.35 | 35 特殊赔案查询详情 | 1d | 2018-02-15 | 2018-02-15 |  | 30d |  | start no earlier than 2018-02-15 |  |  |
| 1355 | 5.5.3.1.3.36 | 36 核赔退回特殊赔案查询页面 | 1d | 2018-02-16 | 2018-02-16 |  | 29d |  | start no earlier than 2018-02-16 |  |  |
| 1356 | 5.5.3.1.3.37 | 37 核赔退回特殊赔案详情操作页面 | 1d | 2018-02-16 | 2018-02-16 |  | 29d |  | start no earlier than 2018-02-16 |  |  |
| 1357 | 5.5.3.1.3.38 | 38 未处理理算任务查询页面 | 1d | 2018-02-19 | 2018-02-19 |  | 28d |  | start no earlier than 2018-02-19 |  |  |
| 1358 | 5.5.3.1.3.39 | 39 未处理理算任务操作页面 | 1d | 2018-02-20 | 2018-02-20 |  | 27d |  | start no earlier than 2018-02-20 |  |  |
| 1359 | 5.5.3.1.3.40 | 40 未处理理算保存成功页面 | 1d | 2018-02-20 | 2018-02-20 |  | 27d |  | start no earlier than 2018-02-20 |  |  |
| 1360 | 5.5.3.1.3.41 | 41 正在处理理算任务查询页面 | 1d | 2018-02-21 | 2018-02-21 |  | 26d |  | start no earlier than 2018-02-21 |  |  |
| 1361 | 5.5.3.1.3.42 | 42 正在处理理算任务操作页面 | 1d | 2018-02-22 | 2018-02-22 |  | 25d |  | start no earlier than 2018-02-22 |  |  |
| 1362 | 5.5.3.1.3.43 | 43 申请注销/拒赔查询页面 | 1d | 2018-02-22 | 2018-02-22 |  | 25d |  | start no earlier than 2018-02-22 |  |  |
| 1363 | 5.5.3.1.3.44 | 44 申请注销/拒赔操作页面 | 1d | 2018-02-23 | 2018-02-23 |  | 24d |  | start no earlier than 2018-02-23 |  |  |
| 1364 | 5.5.3.1.3.45 | 45 理算查询页面 | 1d | 2018-02-26 | 2018-02-26 |  | 23d |  | start no earlier than 2018-02-26 |  |  |
| 1365 | 5.5.3.1.3.46 | 46 理算信息详情查询页面 | 1d | 2018-02-26 | 2018-02-26 |  | 23d |  | start no earlier than 2018-02-26 |  |  |
| 1366 | 5.5.3.1.3.47 | 47 未处理结案任务查询页面 | 1d | 2018-02-16 | 2018-02-16 |  | 29d |  | start no earlier than 2018-02-16 |  |  |
| 1367 | 5.5.3.1.3.48 | 48 未处理结案任务详情页面 | 1d | 2018-02-16 | 2018-02-16 |  | 29d |  | start no earlier than 2018-02-16 |  |  |
| 1368 | 5.5.3.1.3.49 | 49 查询结果页面 | 1d | 2018-02-16 | 2018-02-16 |  | 29d |  | start no earlier than 2018-02-16 |  |  |
| 1369 | 5.5.3.1.3.50 | 50 结案任务详情页面 | 1d | 2018-02-16 | 2018-02-16 |  | 29d |  | start no earlier than 2018-02-16 |  |  |
| 1370 | 5.5.3.1.3.51 | 51 打印类型选择页面 | 1d | 2018-02-16 | 2018-02-16 |  | 29d |  | start no earlier than 2018-02-16 |  |  |
| 1371 | 5.5.3.1.3.52 | 52 打印筛选页面 | 1d | 2018-02-16 | 2018-02-16 |  | 29d |  | start no earlier than 2018-02-16 |  |  |
| 1372 | 5.5.3.1.3.53 | 53 工作流查询页面 | 1d | 2018-02-16 | 2018-02-16 |  | 29d |  | start no earlier than 2018-02-16 |  |  |
| 1373 | 5.5.3.1.3.54 | 54 工作流详情查看页面 | 1d | 2018-02-19 | 2018-02-19 |  | 28d |  | start no earlier than 2018-02-19 |  |  |

| ID | WBS | Task | Duration | Start | Finish | Predecessors | Total slack | Constraint |
| --- | --- | --- | --- | --- | --- | --- | --- | --- |
| 1374 | 5.5.3.1.3.55 | 55 案件号互查查询页面 | 1d | 2018-02-20 | 2018-02-20 |  | 27d | start no earlier than 2018-02-20 |
| 1375 | 5.5.3.1.3.56 | 56 新增班表查询页面 | 1d | 2018-02-20 | 2018-02-20 |  | 27d | start no earlier than 2018-02-20 |
| 1376 | 5.5.3.1.3.57 | 57 新增班表页面 | 1d | 2018-02-21 | 2018-02-21 |  | 26d | start no earlier than 2018-02-21 |
| 1377 | 5.5.3.1.3.58 | 58 区域设置查询页面 | 1d | 2018-02-22 | 2018-02-22 |  | 25d | start no earlier than 2018-02-22 |
| 1378 | 5.5.3.1.3.59 | 59 区域设置页面 | 1d | 2018-02-22 | 2018-02-22 |  | 25d | start no earlier than 2018-02-22 |
| 1379 | 5.5.3.1.3.60 | 60 修改班表查询页面 | 1d | 2018-02-23 | 2018-02-23 |  | 24d | start no earlier than 2018-02-23 |
| 1380 | 5.5.3.1.3.61 | 61 修改班表页面 | 1d | 2018-02-26 | 2018-02-26 |  | 23d | start no earlier than 2018-02-26 |
| 1381 | 5.5.3.1.3.62 | 62 班表查询页面 | 1d | 2018-02-27 | 2018-02-27 |  | 22d | start no earlier than 2018-02-27 |
| 1382 | 5.5.3.1.3.63 | 63 班表查询结果详情页面 | 1d | 2018-02-28 | 2018-02-28 |  | 21d | start no earlier than 2018-02-28 |
| 1383 | 5.5.3.1.3.64 | 64 单笔支付查询页面 | 1d | 2018-02-28 | 2018-02-28 |  | 21d | start no earlier than 2018-02-28 |
| 1384 | 5.5.3.1.3.65 | 65 支付信息录入页面 | 1d | 2018-03-01 | 2018-03-01 |  | 20d | start no earlier than 2018-03-01 |
| 1385 | 5.5.3.1.3.66 | 66 支付清单管理查询页面 | 1d | 2018-03-02 | 2018-03-02 |  | 19d | start no earlier than 2018-03-02 |
| 1386 | 5.5.3.1.3.67 | 67 整单支付页面 | 1d | 2018-03-02 | 2018-03-02 |  | 19d | start no earlier than 2018-03-02 |
| 1387 | 5.5.3.1.3.68 | 68 清单支付页面 | 1d | 2018-03-05 | 2018-03-05 |  | 18d | start no earlier than 2018-03-05 |
| 1388 | 5.5.3.1.3.69 | 69 支付信息查询页面 | 1d | 2018-03-06 | 2018-03-06 |  | 17d | start no earlier than 2018-03-06 |
| 1389 | 5.5.3.1.3.70 | 70 支付信息详情查看页面 | 1d | 2018-03-06 | 2018-03-06 |  | 17d | start no earlier than 2018-03-06 |
| 1390 | 5.5.3.1.3.71 | 71 电子回执单下载页面 | 1d | 2018-03-07 | 2018-03-07 |  | 16d | start no earlier than 2018-03-07 |
| 1391 | 5.5.3.1.3.72 | 72 支付情况统计查询页面 | 1d | 2018-03-08 | 2018-03-08 |  | 15d | start no earlier than 2018-03-08 |
| 1392 | 5.5.3.1.3.73 | 73 支付情况统计详情页面 | 1d | 2018-03-09 | 2018-03-09 |  | 14d | start no earlier than 2018-03-09 |
| 1393 | 5.5.3.1.3.74 | 74 补传 | 1d | 2018-03-09 | 2018-03-09 |  | 14d | start no earlier than 2018-03-09 |
| 1394 | 5.5.3.1.4 | **2.2.3.6 工作流管理** | 4d | 2018-03-12 | 2018-03-15 | 1319 | 11d |  |
| 1395 | 5.5.3.1.4.1 | 1 工作流列表页面 | 1d | 2018-03-12 | 2018-03-12 |  | 14d |  |
| 1396 | 5.5.3.1.4.2 | 2 模板维护页面 | 1d | 2018-03-12 | 2018-03-12 |  | 14d |  |
| 1397 | 5.5.3.1.4.3 | 3 创建模板页面 | 1d | 2018-03-13 | 2018-03-13 |  | 13d | start no earlier than 2018-03-13 |
| 1398 | 5.5.3.1.4.4 | 4 模板批量分配页面 | 1d | 2018-03-14 | 2018-03-14 |  | 12d | start no earlier than 2018-03-14 |
| 1399 | 5.5.3.1.4.5 | 5 工作流列表 | 1d | 2018-03-14 | 2018-03-14 |  | 12d | start no earlier than 2018-03-14 |
| 1400 | 5.5.3.1.4.6 | 6 工作流模板路径列表 | 1d | 2018-03-14 | 2018-03-14 |  | 12d | start no earlier than 2018-03-14 |
| 1401 | 5.5.3.1.4.7 | 7 工作流模板路径条件 | 1d | 2018-03-15 | 2018-03-15 |  | 11d | start no earlier than 2018-03-15 |
| 1402 | 5.5.3.1.4.8 | 8 案件合并页面 | 1d | 2018-03-15 | 2018-03-15 |  | 11d | start no earlier than 2018-03-15 |
| 1403 | 5.5.3.1.4.9 | 9 合并修改页面 | 1d | 2018-03-15 | 2018-03-15 |  | 11d | start no earlier than 2018-03-15 |

| ID | WBS | Task | Duration | Start | Finish | Total slack | Constraint | Resources | Work |
| --- | --- | --- | --- | --- | --- | --- | --- | --- | --- |
| 1404 | 5.5.4 | **交易清单系统（理赔）** | 116d? | 2017-09-26 | 2018-03-02 | 20d |  |  | 168h |
| 1405 | 5.5.4.1 | **服务接口（理赔）** | 116d? | 2017-09-26 | 2018-03-02 | 20d |  |  | 168h |
| 1406 | 5.5.4.1.1 | 提供损失清单同步接口 | 4d | 2017-11-01 | 2017-11-06 | 105d | start no earlier than 2017-11-01 | 王志伟 | 32h |
| 1407 | 5.5.4.1.2 | 接口文档整理 | 1d? | 2017-11-08 | 2017-11-08 | 103d | start no earlier than 2017-11-08 | 王志伟 | 8h |
| 1408 | 5.5.4.1.3 | 开发自测 | 2d | 2017-09-26 | 2017-09-27 | 134d |  | 王志伟 | 16h |
| 1409 | 5.5.4.1.4 | 提供理算损失清单回写信息接口 | 4d | 2017-11-10 | 2017-11-15 | 98d | start no earlier than 2017-11-10 | 王志伟 | 32h |
| 1410 | 5.5.4.1.5 | 接口文档整理 | 1d? | 2017-11-15 | 2017-11-15 | 98d | start no earlier than 2017-11-15 | 王志伟 | 8h |
| 1411 | 5.5.4.1.6 | 开发自测 | 2d | 2017-11-16 | 2017-11-17 | 96d | start no earlier than 2017-11-16 | 王志伟 | 16h |
| 1412 | 5.5.4.1.7 | 提供险别损失清单同步接口 | 4d | 2018-02-21 | 2018-02-26 | 24d | start no earlier than 2018-02-21 | 王志伟 | 32h |
| 1413 | 5.5.4.1.8 | 接口文档整理 | 1d | 2018-02-27 | 2018-02-27 | 23d | start no earlier than 2018-02-27 | 王志伟 | 8h |
| 1414 | 5.5.4.1.9 | 开发自测 | 2d | 2018-03-01 | 2018-03-02 | 20d | start no earlier than 2018-03-01 | 王志伟 | 16h |
| 1415 | 5.5.5 | **周边系统（与理赔对接）** | 56d? | 2017-10-16 | 2017-12-31 | 65d |  |  | 568h |
| 1416 | 5.5.5.1 | **原核心系统** | 12d? | 2017-10-16 | 2017-10-31 | 109d |  |  | 120h |
| 1417 | 5.5.5.1.1 | **双核系统** | 8d? | 2017-10-16 | 2017-10-25 | 113d |  |  | 64h |
| 1418 | 5.5.5.1.1.1 | 提供理算提交双核接口服务 | 5d | 2017-10-16 | 2017-10-20 | 116d | start no earlier than 2017-10-16 | 周欢 | 40h |
| 1419 | 5.5.5.1.1.2 | 接口文档整理 | 1d? | 2017-10-23 | 2017-10-23 | 115d | start no earlier than 2017-10-23 | 周欢 | 8h |
| 1420 | 5.5.5.1.1.3 | 开发自测 | 2d | 2017-10-24 | 2017-10-25 | 113d | start no earlier than 2017-10-24 | 周欢 | 16h |
| 1421 | 5.5.5.1.2 | **再保系统** | 4d? | 2017-10-26 | 2017-10-31 | 109d |  |  | 56h |
| 1422 | 5.5.5.1.2.1 | 提供理赔危险单位信息生成服务接口 | 4d | 2017-10-26 | 2017-10-31 | 109d | start no earlier than 2017-10-26 | 周欢 | 32h |
| 1423 | 5.5.5.1.2.2 | 接口文档整理 | 1d? | 2017-10-27 | 2017-10-27 | 111d | start no earlier than 2017-10-27 | 周欢 | 8h |
| 1424 | 5.5.5.1.2.3 | 开发自测 | 2d | 2017-10-30 | 2017-10-31 | 109d | start no earlier than 2017-10-30 | 周欢 | 16h |
| 1425 | 5.5.5.2 | **与客户管理系统，GIS-金禾的对接** | 56d? | 2017-10-16 | 2017-12-31 | 65d |  |  | 448h |
| 1426 | 5.5.5.2.1 | 理赔提供种植险预报案-案件信息接口 | 4d | 2017-10-16 | 2017-10-19 | 117d | start no earlier than 2017-10-16 | 王欢 | 32h |
| 1427 | 5.5.5.2.2 | 接口文档整理 | 1d? | 2017-10-20 | 2017-10-20 | 116d | finish no earlier than 2017-10-20 | 王欢 | 8h |
| 1428 | 5.5.5.2.3 | 开发自测 | 2d | 2017-10-23 | 2017-10-24 | 114d | start no earlier than 2017-10-20 | 王欢 | 16h |
| 1429 | 5.5.5.2.4 | 种植险查勘定损-定损清单 | 4d | 2017-10-25 | 2017-10-30 | 110d | start no earlier than 2017-10-24 | 王欢 | 32h |
| 1430 | 5.5.5.2.5 | 接口文档整理 | 1d? | 2017-10-31 | 2017-10-31 | 109d | start no earlier than 2017-10-30 | 王欢 | 8h |
| 1431 | 5.5.5.2.6 | 开发自测 | 2d | 2017-11-01 | 2017-11-02 | 107d | start no earlier than 2017-10-31 | 王欢 | 16h |
| 1432 | 5.5.5.2.7 | 种植险理算-获取银行支付信息 | 4d | 2017-11-03 | 2017-11-08 | 103d | start no earlier than 2017-11-02 | 王欢 | 32h |
| 1433 | 5.5.5.2.8 | 接口文档整理 | 1d? | 2017-11-09 | 2017-11-09 | 102d | start no earlier than 2017-11-08 | 王欢 | 8h |
| 1434 | 5.5.5.2.9 | 开发自测 | 2d | 2017-11-10 | 2017-11-13 | 100d | start no earlier than 2017-11-09 | 王欢 | 16h |
| 1435 | 5.5.5.2.10 | 调用种植险提交核赔-更新客户银行基础数据 接口 | 4d | 2017-11-14 | 2017-11-17 | 96d | start no earlier than 2017-11-13 | 王欢 | 32h |
| 1436 | 5.5.5.2.11 | 接口文档整理 | 1d? | 2017-11-20 | 2017-11-20 | 95d | start no earlier than 2017-11-17 | 王欢 | 8h |
| 1437 | 5.5.5.2.12 | 开发自测 | 2d | 2017-11-21 | 2017-11-22 | 93d | start no earlier than 2017-11-20 | 王欢 | 16h |
| 1438 | 5.5.5.2.13 | 养殖险查勘-案件信息 | 4d | 2017-11-23 | 2017-11-28 | 89d | start no earlier than 2017-11-22 | 王欢 | 32h |
| 1439 | 5.5.5.2.14 | 接口文档整理 | 1d? | 2017-11-29 | 2017-11-29 | 88d | start no earlier than 2017-11-28 | 王欢 | 8h |
| 1440 | 5.5.5.2.15 | 开发自测 | 2d | 2017-11-30 | 2017-12-01 | 86d | start no earlier than 2017-11-29 | 王欢 | 16h |
| 1441 | 5.5.5.2.16 | 养殖险查勘定损-定损清单 | 4d | 2017-12-04 | 2017-12-07 | 82d | start no earlier than 2017-12-01 | 王欢 | 32h |
| 1442 | 5.5.5.2.17 | 接口文档整理 | 1d? | 2017-12-08 | 2017-12-08 | 81d | start no earlier than 2017-12-07 | 王欢 | 8h |
| 1443 | 5.5.5.2.18 | 开发自测 | 2d | 2017-12-11 | 2017-12-12 | 79d | start no earlier than 2017-12-08 | 王欢 | 16h |
| 1444 | 5.5.5.2.19 | 养殖险状态查询-当前案件理赔节点查询 | 4d | 2017-12-13 | 2017-12-18 | 75d | start no earlier than 2017-12-12 | 王欢 | 32h |
| 1445 | 5.5.5.2.20 | 接口文档整理 | 1d? | 2017-12-19 | 2017-12-19 | 74d | start no earlier than 2017-12-18 | 王欢 | 8h |
| 1446 | 5.5.5.2.21 | 开发自测 | 2d | 2017-12-20 | 2017-12-21 | 72d | start no earlier than 2017-12-19 | 王欢 | 16h |
| 1447 | 5.5.5.2.22 | 养殖险补充查勘-案件修改内容 | 4d | 2017-12-22 | 2017-12-27 | 68d | start no earlier than 2017-12-21 | 王欢 | 32h |
| 1448 | 5.5.5.2.23 | 接口文档整理 | 1d? | 2017-12-28 | 2017-12-28 | 67d | start no earlier than 2017-12-27 | 王欢 | 8h |
| 1449 | 5.5.5.2.24 | 开发自测 | 2d | 2017-12-29 | 2017-12-31 | 65d | start no earlier than 2017-12-28 | 王欢 | 16h |

| ID | WBS | Task | Duration | Start | Finish | Total slack | Constraint |
| --- | --- | --- | --- | --- | --- | --- | --- |
| 1450 | 5.6 | **第三方测试** | 135d? | 2017-09-27 | 2018-03-30 | 0d |  |
| 1451 | 5.6.1 | **需求理解分析** | 19d? | 2017-09-27 | 2017-10-20 | 116d |  |
| 1452 | 5.6.1.1 | 承保系统需求理解分析 | 19d? | 2017-09-27 | 2017-10-20 | 116d | finish no earlier than 2017-10-20 |
| 1453 | 5.6.1.2 | 理赔系统需求理解分析 | 19d | 2017-09-27 | 2017-10-20 | 116d | finish no earlier than 2017-10-20 |
| 1454 | 5.6.1.3 | 交易清单系统需求理解分析 | 19d | 2017-09-27 | 2017-10-20 | 116d | finish no earlier than 2017-10-20 |
| 1455 | 5.6.2 | **测试方案制定** | 19d? | 2017-09-27 | 2017-10-20 | 116d |  |
| 1456 | 5.6.2.1 | 承保系统测试功能范围及优先级制定 | 19d? | 2017-09-27 | 2017-10-20 | 116d | finish no earlier than 2017-10-20 |
| 1457 | 5.6.2.2 | 理赔系统测试功能范围及优先级制定 | 19d? | 2017-09-27 | 2017-10-20 | 116d | finish no earlier than 2017-10-20 |
| 1458 | 5.6.2.3 | 交易清单系统测试功能范围及优先级制定 | 19d? | 2017-09-27 | 2017-10-20 | 116d | finish no earlier than 2017-10-20 |
| 1459 | 5.6.2.4 | 里程碑测试计划制定 | 19d? | 2017-09-27 | 2017-10-20 | 116d | finish no earlier than 2017-10-20 |
| 1460 | 5.6.2.5 | 详细测试计划制定 | 19d? | 2017-09-27 | 2017-10-20 | 116d | finish no earlier than 2017-10-20 |
| 1461 | 5.6.3 | **测试用例设计** | 15d? | 2017-10-23 | 2017-11-10 | 101d |  |
| 1462 | 5.6.3.1 | 承保系统最小功能用例集 | 15d? | 2017-10-23 | 2017-11-10 | 101d | start no earlier than 2017-10-23 |
| 1463 | 5.6.3.2 | 理赔系统最小功能用例集 | 15d? | 2017-10-23 | 2017-11-10 | 101d | start no earlier than 2017-10-23 |
| 1464 | 5.6.3.3 | 交易清单系统最小功能用例集 | 15d? | 2017-10-23 | 2017-11-10 | 101d | start no earlier than 2017-10-23 |
| 1465 | 5.6.3.4 | 承保系统关键功能用例集 | 15d? | 2017-10-23 | 2017-11-10 | 101d | start no earlier than 2017-10-23 |
| 1466 | 5.6.3.5 | 理赔系统关键功能用例集 | 15d? | 2017-10-23 | 2017-11-10 | 101d | start no earlier than 2017-10-23 |
| 1467 | 5.6.3.6 | 交易清单系统关键功能用例集 | 15d? | 2017-10-23 | 2017-11-10 | 101d | start no earlier than 2017-10-23 |
| 1468 | 5.6.3.7 | 承保系统复杂功能用例集 | 15d? | 2017-10-23 | 2017-11-10 | 101d | start no earlier than 2017-10-23 |
| 1469 | 5.6.3.8 | 理赔系统复杂功能用例集 | 15d? | 2017-10-23 | 2017-11-10 | 101d | start no earlier than 2017-10-23 |
| 1470 | 5.6.3.9 | 交易清单系统复杂功能用例集 | 15d? | 2017-10-23 | 2017-11-10 | 101d | start no earlier than 2017-10-23 |
| 1471 | 5.6.4 | **测试执行** | 100d? | 2017-11-14 | 2018-03-30 | 0d |  |
| 1472 | 5.6.4.1 | 承保系统测试用例执行 | 58d? | 2017-11-14 | 2018-01-31 | 42d | finish no earlier than 2018-01-31 |
| 1473 | 5.6.4.2 | 理赔系统测试用例执行 | 58d? | 2017-11-14 | 2018-01-31 | 42d | finish no earlier than 2018-01-31 |
| 1474 | 5.6.4.3 | 交易清单系统测试用例执行 | 58d? | 2017-11-14 | 2018-01-31 | 42d | finish no earlier than 2018-01-31 |
| 1475 | 5.6.4.4 | 承保系统性能测试 | 20d? | 2018-02-01 | 2018-02-28 | 22d | finish no earlier than 2018-02-28 |
| 1476 | 5.6.4.5 | 理赔系统性能测试 | 20d? | 2018-02-01 | 2018-02-28 | 22d | finish no earlier than 2018-02-28 |
| 1477 | 5.6.4.6 | 交易清单系统性能测试 | 20d? | 2018-02-01 | 2018-02-28 | 22d | finish no earlier than 2018-02-28 |
| 1478 | 5.6.4.7 | 周边系统联调测试 | 20d? | 2018-02-01 | 2018-02-28 | 22d | finish no earlier than 2018-02-28 |
| 1479 | 5.6.4.8 | 承保系统验收问题回归测试 | 20d? | 2018-02-01 | 2018-02-28 | 22d | finish no earlier than 2018-02-28 |
| 1480 | 5.6.4.9 | 理赔系统验收问题回归测试 | 22d? | 2018-03-01 | 2018-03-30 | 0d | finish no earlier than 2018-03-30 |

| ID | WBS | Task | Duration | Start | Finish | Total slack | Constraint |
| --- | --- | --- | --- | --- | --- | --- | --- |
| 1481 | 5.6.5 | **测试评估** | 22d? | 2018-03-01 | 2018-03-30 | 0d |  |
| 1482 | 5.6.5.1 | 项目测试报告输出 | 22d? | 2018-03-01 | 2018-03-30 | 0d | finish no earlier than 2018-03-30 |
| 1483 | 5.6.5.2 | 性能测试报告输出 | 22d? | 2018-03-01 | 2018-03-30 | 0d | finish no earlier than 2018-03-30 |
| 1484 | 5.6.5.3 | 缺陷统计分析清单 | 22d? | 2018-03-01 | 2018-03-30 | 0d | finish no earlier than 2018-03-30 |
| 1485 | 5.7 | UAT | 44d? | 2018-01-15 | 2018-03-15 | 11d | start no earlier than 2018-01-15 |
| 1486 | 5.8 | 上线前准备 | 44d? | 2018-01-15 | 2018-03-15 | 11d | start no earlier than 2018-01-15 |
| 1487 | 5.9 | 系统上线 | 25d? | 2018-02-26 | 2018-03-30 | 0d | start no earlier than 2018-02-26 |
