Schedule from MS Project, 2017-10-23 to 2017-12-12, status date 2017-10-17, A marks actual dates.

## Calendars

- 标准: Mon-Fri 08:00-12:00, 13:00-17:00; Sat-Sun off. Exceptions (off unless hours are given): 2017-10-28 08:00-12:00, 13:00-17:00, 2017-11-04 to 2017-11-05 08:00-12:00, 13:00-17:00.

## Resources

| Resource |
| --- |
| 宋振振 |
| 陈道洋 |
| 潘峰 |
| 何伟东 |
| 沈士威 |
| A |

## Schedule

| ID | WBS | Task | Duration | Start | Finish | Complete | Remaining | Total slack | Constraint | Resources | Work | Actual work |
| --- | --- | --- | --- | --- | --- | --- | --- | --- | --- | --- | --- | --- |
| 1 | 1 | **承保系统** | 28d | 2017-10-23 A | 2017-11-24 | 21% | 22.19d | 12d |  | 陈道洋; 潘峰; 何伟东; A | 2392h | 546.67h |
| 2 | 1.1 | **单证打印** | 16d | 2017-10-23 A | 2017-11-08 | 48% | 8.33d | 24d |  | 陈道洋; 潘峰; A | 808h | 407.25h |
| 3 | 1.1.1 | **投保单打印** | 4d | 2017-10-23 A | 2017-10-26 A | 100% |  |  |  | 陈道洋 | 64h | 64h |
| 4 | 1.1.1.1 | 投保单打印查询逻辑 | 1d | 2017-10-23 A | 2017-10-23 A | 100% |  |  |  | 陈道洋 | 8h | 8h |
| 5 | 1.1.1.2 | 投保单打印回写是否打印字段（单个打印与批量打印） | 1d | 2017-10-24 A | 2017-10-24 A | 100% |  |  | start no earlier than 2017-10-24 | 陈道洋 | 8h | 8h |
| 6 | 1.1.1.3 | 开发自测 | 2d | 2017-10-25 A | 2017-10-26 A | 100% |  |  | start no earlier than 2017-10-25 | 陈道洋 | 16h | 16h |
| 7 | 1.1.2 | 联调测试 | 3d | 2017-10-27 | 2017-10-30 |  |  | 33d | start no earlier than 2017-10-27 | 陈道洋 | 24h |  |
| 8 | 1.1.3 | **保单打印** | 10d | 2017-10-23 A | 2017-11-02 | 50% | 5d | 30d |  | 潘峰; A | 304h | 152h |
| 9 | 1.1.3.1 | 单证类型查询逻辑（从单证系统查询） | 2d | 2017-10-23 | 2017-10-24 |  |  | 38d | start no earlier than 2017-10-23 | 潘峰 | 16h |  |
| 10 | 1.1.3.2 | 印刷流水号获取逻辑（从单证系统查询） | 2d | 2017-10-25 | 2017-10-26 |  |  | 36d | start no earlier than 2017-10-25 | 潘峰 | 16h |  |
| 11 | 1.1.3.3 | 开发自测 | 1d | 2017-10-27 | 2017-10-27 |  |  | 35d | start no earlier than 2017-10-27 | 潘峰 | 8h |  |
| 12 | 1.1.3.4 | 保单正本全打 | 1d | 2017-10-30 A | 2017-10-30 A | 100% |  |  | start no earlier than 2017-10-30 | 潘峰 | 8h | 8h |
| 13 | 1.1.3.5 | 保单副本打印 | 1d | 2017-10-31 A | 2017-10-31 A | 100% |  |  | start no earlier than 2017-10-31 | 潘峰 | 8h | 8h |
| 14 | 1.1.3.6 | 保单抄件打印 | 1d | 2017-11-01 | 2017-11-01 |  |  | 31d | start no earlier than 2017-11-01 | 潘峰 | 8h |  |
| 15 | 1.1.3.7 | 主险清单打印 | 1d | 2017-11-02 A | 2017-11-02 A | 100% |  |  | start no earlier than 2017-11-02 | 潘峰 | 8h | 8h |
| 16 | 1.1.3.8 | 特别约定打印 | 1d | 2017-10-23 A | 2017-10-23 A | 100% |  |  | start no earlier than 2017-10-23 | A | 8h | 8h |
| 17 | 1.1.3.9 | 标的地址打印 | 1d | 2017-10-24 A | 2017-10-24 A | 100% |  |  | start no earlier than 2017-10-24 | A | 8h | 8h |
| 18 | 1.1.3.10 | 附加险清单打印 | 1d | 2017-10-25 A | 2017-10-25 A | 100% |  |  | start no earlier than 2017-10-25 | A | 8h | 8h |
| 19 | 1.1.3.11 | 缴费计划打印 | 1d | 2017-10-26 A | 2017-10-26 A | 100% |  |  | start no earlier than 2017-10-26 | A | 8h | 8h |
| 20 | 1.1.3.12 | 缴费通知书打印 | 1d | 2017-10-27 A | 2017-10-27 A | 100% |  |  | start no earlier than 2017-10-27 | A | 8h | 8h |
| 21 | 1.1.3.13 | 承保卷宗封面打印 | 1d | 2017-10-30 A | 2017-10-30 A | 100% |  |  | start no earlier than 2017-10-30 | A | 8h | 8h |
| 22 | 1.1.3.14 | B5条款打印 | 1d | 2017-10-31 | 2017-10-31 |  |  | 32d | start no earlier than 2017-10-31 | A | 8h |  |
| 23 | 1.1.3.15 | 开发自测 | 2d | 2017-11-01 | 2017-11-02 |  |  | 30d | start no earlier than 2017-11-01 | A | 16h |  |
| 24 | 1.1.4 | 保险凭证打印 | 1d | 2017-11-03 | 2017-11-03 |  |  | 29d | start no earlier than 2017-11-03 | A | 8h |  |
| 25 | 1.1.5 | 批单打印 | 1d | 2017-11-06 A | 2017-11-06 | 90% | 0.1d | 26d | start no earlier than 2017-11-06 | A | 8h | 7.2h |
| 26 | 1.1.6 | 开发自测 | 2d | 2017-11-07 | 2017-11-08 |  |  | 24d | start no earlier than 2017-11-07 | A | 16h |  |
| 27 | 1.2 | 联调测试 | 2d | 2017-11-09 | 2017-11-10 |  |  | 22d | start no earlier than 2017-11-09 | A; 潘峰 | 32h |  |

| ID | WBS | Task | Duration | Start | Finish | Predecessors | Total slack | Free slack | Constraint | Resources | Work |
| --- | --- | --- | --- | --- | --- | --- | --- | --- | --- | --- | --- |
| 28 | 1.3 | **凭证短信发送** | 4d | 2017-10-30 | 2017-11-02 |  | 30d |  |  | 陈道洋 | 80h |
| 29 | 1.3.1 | 短信模板创建 | 1d | 2017-10-30 | 2017-10-30 |  | 33d |  | start no earlier than 2017-10-30 | 陈道洋 | 8h |
| 30 | 1.3.2 | 短信发送查询 | 1d | 2017-10-31 | 2017-10-31 |  | 32d |  | start no earlier than 2017-10-31 | 陈道洋 | 8h |
| 31 | 1.3.3 | **发送短信** | 2d | 2017-11-01 | 2017-11-02 |  | 30d |  |  | 陈道洋 | 32h |
| 32 | 1.3.3.1 | 短信模板查询（页面双击域） | 1d | 2017-11-01 | 2017-11-01 |  | 31d |  | start no earlier than 2017-11-01 | 陈道洋 | 8h |
| 33 | 1.3.3.2 | 发送短信后端逻辑 | 1d | 2017-11-02 | 2017-11-02 |  | 30d |  | start no earlier than 2017-11-02 | 陈道洋 | 8h |
| 34 | 1.4 | 联调测试 | 4d | 2017-11-03 | 2017-11-06 |  | 26d |  | start no earlier than 2017-11-03 | 陈道洋 | 32h |
| 35 | 1.5 | **支付信息维护** | 8d | 2017-10-23 | 2017-10-31 |  | 32d |  |  | 何伟东 | 200h |
| 36 | 1.5.1 | **支付信息查询** | 3d | 2017-10-23 | 2017-10-25 |  | 36d | 0d |  | 何伟东 | 48h |
| 37 | 1.5.1.1 | 支付信息查询（列表信息） | 1d | 2017-10-23 | 2017-10-23 |  | 38d |  | start no earlier than 2017-10-23 | 何伟东 | 8h |
| 38 | 1.5.1.2 | 支付信息查询（详细信息） | 1d | 2017-10-24 | 2017-10-24 |  | 36d | 0d | start no earlier than 2017-10-24 | 何伟东 | 8h |
| 39 | 1.5.1.3 | 导出账户信息 | 1d | 2017-10-25 | 2017-10-25 | 38 | 36d |  |  | 何伟东 | 8h |
| 40 | 1.5.2 | **支付信息录入** | 4d | 2017-10-26 | 2017-10-30 | 36 | 33d |  |  | 何伟东 | 80h |
| 41 | 1.5.2.1 | 整单支付信息录入 | 1d | 2017-10-26 | 2017-10-26 |  | 36d |  |  | 何伟东 | 8h |
| 42 | 1.5.2.2 | **清单支付信息录入** | 3d | 2017-10-27 | 2017-10-30 |  | 33d |  |  | 何伟东 | 40h |
| 43 | 1.5.2.2.1 | 导入账户信息 | 1d | 2017-10-27 | 2017-10-27 |  | 35d |  | start no earlier than 2017-10-27 | 何伟东 | 8h |
| 44 | 1.5.2.2.2 | 导出账户信息 | 1d | 2017-10-30 | 2017-10-30 |  | 33d |  | start no earlier than 2017-10-30 | 何伟东 | 8h |
| 45 | 1.5.3 | 支付信息维护 | 1d | 2017-10-31 | 2017-10-31 |  | 32d |  | start no earlier than 2017-10-31 | 何伟东 | 8h |
| 46 | 1.6 | 联调测试 | 2d | 2017-11-01 | 2017-11-02 |  | 30d |  | start no earlier than 2017-11-01 | 何伟东 | 16h |
| 47 | 1.7 | **业务清单查询** | 2d | 2017-11-07 | 2017-11-08 |  | 24d |  |  | 陈道洋 | 32h |
| 48 | 1.7.1 | 业务清单查询（列表信息） | 1d | 2017-11-07 | 2017-11-07 |  | 25d |  | start no earlier than 2017-11-07 | 陈道洋 | 8h |
| 49 | 1.7.2 | 业务清单查询（详细信息） | 1d | 2017-11-08 | 2017-11-08 |  | 24d |  | start no earlier than 2017-11-08 | 陈道洋 | 8h |
| 50 | 1.8 | **影像资料** | 2d | 2017-11-09 | 2017-11-10 |  | 22d |  |  | 陈道洋 | 32h |
| 51 | 1.8.1 | 影像资料查询（列表信息） | 1d | 2017-11-09 | 2017-11-09 |  | 23d |  | start no earlier than 2017-11-09 | 陈道洋 | 8h |
| 52 | 1.8.2 | 影像资料查看 | 1d | 2017-11-10 | 2017-11-10 |  | 22d |  | start no earlier than 2017-11-10 | 陈道洋 | 8h |
| 53 | 1.9 | 联调测试 | 4d | 2017-11-13 | 2017-11-16 |  | 18d |  | start no earlier than 2017-11-13 | 陈道洋 | 32h |

| ID | WBS | Task | Duration | Start | Finish | Total slack | Constraint | Resources | Work |
| --- | --- | --- | --- | --- | --- | --- | --- | --- | --- |
| 54 | 1.10 | **精准扶贫** | 9d | 2017-11-10 | 2017-11-22 | 14d |  | A | 216h |
| 55 | 1.10.1 | **扶贫清单导入** | 3d | 2017-11-10 | 2017-11-14 | 20d |  | A | 48h |
| 56 | 1.10.1.1 | 清单归属区域查询（页面双击域） | 1d | 2017-11-10 | 2017-11-10 | 22d | start no earlier than 2017-11-10 | A | 8h |
| 57 | 1.10.1.2 | 贫困农户信息Excel模板下载 | 1d | 2017-11-13 | 2017-11-13 | 21d | start no earlier than 2017-11-13 | A | 8h |
| 58 | 1.10.1.3 | 贫困农户信息Excel导入 | 1d | 2017-11-14 | 2017-11-14 | 20d | start no earlier than 2017-11-14 | A | 8h |
| 59 | 1.10.2 | **贫困户信息查询** | 6d | 2017-11-15 | 2017-11-22 | 14d |  | A | 96h |
| 60 | 1.10.2.1 | 贫困户信息查询（列表信息） | 1d | 2017-11-15 | 2017-11-15 | 19d | start no earlier than 2017-11-15 | A | 8h |
| 61 | 1.10.2.2 | 贫困户信息查询（详细信息） | 1d | 2017-11-16 | 2017-11-16 | 18d | start no earlier than 2017-11-16 | A | 8h |
| 62 | 1.10.2.3 | 贫困户信息修改 | 1d | 2017-11-17 | 2017-11-17 | 17d | start no earlier than 2017-11-17 | A | 8h |
| 63 | 1.10.2.4 | 导出户主清单 | 1d | 2017-11-20 | 2017-11-20 | 16d | start no earlier than 2017-11-20 | A | 8h |
| 64 | 1.10.2.5 | 导出人员信息 | 1d | 2017-11-21 | 2017-11-21 | 15d | start no earlier than 2017-11-21 | A | 8h |
| 65 | 1.10.2.6 | 贫困户信息删除 | 1d | 2017-11-22 | 2017-11-22 | 14d | start no earlier than 2017-11-22 | A | 8h |
| 66 | 1.11 | 联调测试 | 2d | 2017-11-23 | 2017-11-24 | 12d | start no earlier than 2017-11-23 | A | 16h |
| 67 | 2 | **交易清单系统** | 11d | 2017-11-03 | 2017-11-15 | 19d |  | 何伟东 | 160h |
| 68 | 2.1 | 接收投保预确认清单接口 | 1d | 2017-11-03 | 2017-11-03 | 29d | start no earlier than 2017-11-03 | 何伟东 | 8h |
| 69 | 2.2 | 投保预确认清单编号查询接口 | 1d | 2017-11-06 | 2017-11-06 | 26d | start no earlier than 2017-11-06 | 何伟东 | 8h |
| 70 | 2.3 | 投保预确认清单查询接口 | 1d | 2017-11-07 | 2017-11-07 | 25d | start no earlier than 2017-11-07 | 何伟东 | 8h |
| 71 | 2.4 | 投保清单持久化接口 | 1d | 2017-11-08 | 2017-11-08 | 24d | start no earlier than 2017-11-08 | 何伟东 | 8h |
| 72 | 2.5 | 承保清单持久化接口 | 1d | 2017-11-09 | 2017-11-09 | 23d | start no earlier than 2017-11-09 | 何伟东 | 8h |
| 73 | 2.6 | 批改清单持久化接口 | 1d | 2017-11-10 | 2017-11-10 | 22d | start no earlier than 2017-11-10 | 何伟东 | 8h |
| 74 | 2.7 | 最新保单清单更新接口 | 1d | 2017-11-13 | 2017-11-13 | 21d | start no earlier than 2017-11-13 | 何伟东 | 8h |
| 75 | 2.8 | 接收损失率清单接口（种植险） | 1d | 2017-11-14 | 2017-11-14 | 20d | start no earlier than 2017-11-14 | 何伟东 | 8h |
| 76 | 2.9 | 接收损失清单接口（养殖险） | 1d | 2017-11-15 | 2017-11-15 | 19d | start no earlier than 2017-11-15 | 何伟东 | 8h |
| 77 | 3 | 联调测试 | 1d | 2017-11-15 | 2017-11-15 | 19d | start no earlier than 2017-11-15 | 何伟东 | 8h |

| ID | WBS | Task | Duration | Start | Finish | Complete | Remaining | Total slack | Constraint | Resources | Work | Actual work |
| --- | --- | --- | --- | --- | --- | --- | --- | --- | --- | --- | --- | --- |
| 78 | 4 | **核心系统对接以及周边** | 34d | 2017-10-24 A | 2017-12-05 | 29% | 24.13d | 5d |  | 潘峰; 何伟东 | 1104h | 338.17h |
| 79 | 4.1 | **再保** | 21d | 2017-10-25 A | 2017-11-17 A | 100% |  |  |  | 何伟东 | 200h | 200h |
| 80 | 4.1.1 | 再保系统（更新询价单确认状态） | 2d | 2017-10-25 A | 2017-10-26 A | 100% |  |  |  | 何伟东 | 16h | 16h |
| 81 | 4.1.2 | 再保系统（分保接受人查询） | 2d | 2017-11-16 A | 2017-11-17 A | 100% |  |  | start no earlier than 2017-11-16 | 何伟东 | 16h | 16h |
| 82 | 4.2 | **双核** | 5d | 2017-11-13 A | 2017-11-17 | 60% | 2d | 17d |  | 潘峰 | 80h | 43.2h |
| 83 | 4.2.1 | 提交核保 | 3d | 2017-11-13 A | 2017-11-15 A | 100% |  |  | start no earlier than 2017-11-13 | 潘峰 | 24h | 24h |
| 84 | 4.2.2 | 核保通过投保单转保单 | 2d | 2017-11-16 | 2017-11-17 |  |  | 17d | start no earlier than 2017-11-16 | 潘峰 | 16h |  |
| 85 | 4.3 | **配置平台系统** | 1d | 2017-10-24 A | 2017-10-24 | 99% | 0d | 0d |  | 何伟东 | 24h | 16h |
| 86 | 4.3.1 | 平台配置系统（getProperty） | 1d | 2017-10-24 A | 2017-10-24 A | 100% |  |  | start no earlier than 2017-10-24 | 何伟东 | 8h | 8h |
| 87 | 4.3.2 | 平台配置系统（getRuleInUtiPlatConfigRule） | 1d | 2017-10-24 A | 2017-10-24 A | 100% |  |  | start no earlier than 2017-10-24 | 何伟东 | 8h | 8h |
| 88 | 4.4 | **与金禾系统对接** | 13d | 2017-11-17 | 2017-12-05 |  |  | 5d |  | 何伟东; 潘峰 | 528h |  |
| 89 | 4.4.1 | **承保系统** | 4d | 2017-11-20 | 2017-11-23 |  |  | 13d |  | 何伟东 | 64h |  |
| 90 | 4.4.1.1 | 关联清单数据 | 2d | 2017-11-20 | 2017-11-21 |  |  | 15d | start no earlier than 2017-11-20 | 何伟东 | 16h |  |
| 91 | 4.4.1.2 | 投保人/被保险人信息 | 2d | 2017-11-22 | 2017-11-23 |  |  | 13d | start no earlier than 2017-11-22 | 何伟东 | 16h |  |
| 92 | 4.4.2 | **种植险理赔** | 8d | 2017-11-24 | 2017-12-05 |  |  | 5d |  | 何伟东 | 128h |  |
| 93 | 4.4.2.1 | 案件信息 | 2d | 2017-11-24 | 2017-11-27 |  |  | 11d | start no earlier than 2017-11-24 | 何伟东 | 16h |  |
| 94 | 4.4.2.2 | 定损清单 | 2d | 2017-11-28 | 2017-11-29 |  |  | 9d | start no earlier than 2017-11-28 | 何伟东 | 16h |  |
| 95 | 4.4.2.3 | 获取银行支付信息 | 2d | 2017-11-30 | 2017-12-01 |  |  | 7d | start no earlier than 2017-11-30 | 何伟东 | 16h |  |
| 96 | 4.4.2.4 | 更新客户银行基础数据 | 2d | 2017-12-04 | 2017-12-05 |  |  | 5d | start no earlier than 2017-12-04 | 何伟东 | 16h |  |
| 97 | 4.4.3 | **养殖险理赔** | 8d | 2017-11-17 | 2017-11-28 |  |  | 10d |  | 潘峰 | 128h |  |
| 98 | 4.4.3.1 | 案件信息 | 2d | 2017-11-17 | 2017-11-20 |  |  | 16d | start no earlier than 2017-11-17 | 潘峰 | 16h |  |
| 99 | 4.4.3.2 | 定损清单 | 2d | 2017-11-21 | 2017-11-22 |  |  | 14d | start no earlier than 2017-11-21 | 潘峰 | 16h |  |
| 100 | 4.4.3.3 | 当前案件理赔节点查询 | 2d | 2017-11-23 | 2017-11-24 |  |  | 12d | start no earlier than 2017-11-23 | 潘峰 | 16h |  |
| 101 | 4.4.3.4 | 案件修改内容 | 2d | 2017-11-27 | 2017-11-28 |  |  | 10d | start no earlier than 2017-11-27 | 潘峰 | 16h |  |
| 102 | 5 | 联调测试 | 5d | 2017-12-06 | 2017-12-12 |  |  | 0d | start no earlier than 2017-12-06 | 潘峰; 何伟东 | 80h |  |
| 103 | 6 | 工作总量：114天 | 1d? | 2017-10-23 | 2017-10-23 |  |  | 39d | start no earlier than 2017-10-23 |  |  |  |
