# 新一代农险种工作计划v0.9

Schedule from MS Project, 2017-10-16 to 2018-03-30, A marks actual dates.

## Calendars

- 标准: Mon-Fri 08:00-12:00, 13:00-17:00; Sat-Sun off.

## Resources

| Resource |
| --- |
| 戴徐 |
| 陈光圣 |
| 赵光辉 |
| 朱莎莎 |
| 赵 |

## Schedule

| ID | WBS | Task | Type | Duration | Start | Finish | Complete | Remaining | Total slack | Constraint | Resources | Work | Actual work |
| --- | --- | --- | --- | --- | --- | --- | --- | --- | --- | --- | --- | --- | --- |
| 1 | 1 | **第三方测试** |  | 120d? | 2017-10-16 A | 2018-03-30 | 3% | 116.18d? | 0d |  |  | 8912h | 280h |
| 2 | 1.1 | **版本管理** |  | 120d? | 2017-10-16 A | 2018-03-30 | 3% | 116.18d? | 0d |  |  | 8912h | 280h |
| 3 | 1.1.1 | jira搭建及工作流制定 | milestone | 0d? | 2017-10-23 A | 2017-10-23 A | 100% |  |  | finish no earlier than 2017-10-24 | 戴徐 |  |  |
| 4 | 1.1.2 | jenkins持续集成部署 |  | 5d? | 2017-11-06 | 2017-11-10 |  |  | 100d | finish no earlier than 2017-11-10 | 陈光圣 | 40h |  |
| 5 | 1.1.3 | **需求理解分析** |  | 5d? | 2017-10-23 A | 2017-10-27 | 83% | 0.83d? | 110d |  |  | 240h | 200h |
| 6 | 1.1.3.1 | 承保系统需求理解分析 |  | 5d? | 2017-10-23 A | 2017-10-27 A | 100% |  |  | finish no earlier than 2017-10-27 | 戴徐; 赵光辉 | 80h | 80h |
| 7 | 1.1.3.2 | 理赔系统需求理解分析 |  | 5d | 2017-10-23 A | 2017-10-27 | 50% | 2.5d | 110d | finish no earlier than 2017-10-27 | 戴徐; 赵光辉 | 80h | 40h |
| 8 | 1.1.3.3 | 交易清单系统需求理解分析 |  | 5d | 2017-10-23 A | 2017-10-27 A | 100% |  |  | finish no earlier than 2017-10-27 | 戴徐; 赵光辉 | 80h | 80h |
| 9 | 1.1.4 | **测试方案制定** |  | 5d? | 2017-10-23 A | 2017-10-27 | 20% | 4d? | 110d |  |  | 320h | 40h |
| 10 | 1.1.4.1 | 承保系统测试功能范围及优先级制定 |  | 5d? | 2017-10-23 | 2017-10-27 |  |  | 110d | finish no earlier than 2017-10-27 | 戴徐; 赵光辉 | 80h |  |
| 11 | 1.1.4.2 | 理赔系统测试功能范围及优先级制定 |  | 5d? | 2017-10-23 | 2017-10-27 |  |  | 110d | finish no earlier than 2017-10-27 | 戴徐; 赵光辉 | 80h |  |
| 12 | 1.1.4.3 | 交易清单系统测试功能范围及优先级制定 |  | 5d? | 2017-10-23 | 2017-10-27 |  |  | 110d | finish no earlier than 2017-10-27 | 戴徐; 赵光辉 | 80h |  |
| 13 | 1.1.4.4 | 里程碑测试计划制定 |  | 5d? | 2017-10-23 A | 2017-10-27 | 50% | 2.5d? | 110d | finish no earlier than 2017-10-27 | 戴徐 | 40h | 20h |
| 14 | 1.1.4.5 | 详细测试计划制定 |  | 5d? | 2017-10-23 A | 2017-10-27 | 50% | 2.5d? | 110d | finish no earlier than 2017-10-27 | 戴徐 | 40h | 20h |
| 15 | 1.1.5 | **测试用例设计** |  | 15d? | 2017-10-16 A | 2017-11-03 | 13% | 13.12d? | 105d |  |  | 320h | 40h |
| 16 | 1.1.5.1 | 承保系统用例集 |  | 10d? | 2017-10-23 A | 2017-11-03 | 50% | 5d? | 105d | finish no earlier than 2017-11-03 | 赵光辉 | 80h | 40h |
| 17 | 1.1.5.2 | 理赔系统功能用例集 |  | 15d? | 2017-10-16 | 2017-11-03 |  |  | 105d | finish no earlier than 2017-11-03 | 赵光辉 | 120h |  |
| 18 | 1.1.5.3 | 交易清单系统功能用例集 |  | 15d? | 2017-10-16 | 2017-11-03 |  |  | 105d | finish no earlier than 2017-11-03 | 赵光辉 | 120h |  |
| 19 | 1.1.6 | **测试执行** |  | 105d? | 2017-11-06 | 2018-03-30 |  |  | 0d |  |  | 7464h |  |
| 20 | 1.1.6.1 | 承保系统测试用例执行 |  | 94.5d? | 2017-11-06 | 2018-03-16 |  |  | 10.5d | start no earlier than 2017-11-06 | 赵光辉; 朱莎莎 | 1512h |  |
| 21 | 1.1.6.2 | 理赔系统测试用例执行 |  | 94.5d? | 2017-11-06 | 2018-03-16 |  |  | 10.5d | start no earlier than 2017-11-06 | 赵光辉; 朱莎莎 | 1512h |  |
| 22 | 1.1.6.3 | 交易清单系统测试用例执行 |  | 94.5d? | 2017-11-06 | 2018-03-16 |  |  | 10.5d | start no earlier than 2017-11-06 | 赵光辉; 朱莎莎 | 1512h |  |
| 23 | 1.1.6.4 | 承保系统性能测试 |  | 60d? | 2017-12-07 | 2018-02-28 |  |  | 22d | finish no earlier than 2018-02-28 | 戴徐 | 480h |  |
| 24 | 1.1.6.5 | 理赔系统性能测试 |  | 60d? | 2017-12-07 | 2018-02-28 |  |  | 22d | finish no earlier than 2018-02-28 | 戴徐 | 480h |  |
| 25 | 1.1.6.6 | 交易清单系统性能测试 |  | 60d? | 2017-12-07 | 2018-02-28 |  |  | 22d | finish no earlier than 2018-02-28 | 戴徐 | 480h |  |
| 26 | 1.1.6.7 | 周边系统联调测试 |  | 30d? | 2018-01-18 | 2018-02-28 |  |  | 22d | finish no earlier than 2018-02-28 | 赵光辉; 朱莎莎 | 480h |  |
| 27 | 1.1.6.8 | 承保系统验收问题回归测试 |  | 30d? | 2018-01-18 | 2018-02-28 |  |  | 22d | finish no earlier than 2018-02-28 | 赵光辉; 朱莎莎 | 480h |  |
| 28 | 1.1.6.9 | 理赔系统验收问题回归测试 |  | 33d? | 2018-02-14 | 2018-03-30 |  |  | 0d | finish no earlier than 2018-03-30 | 赵光辉; 朱莎莎 | 528h |  |

| ID | WBS | Task | Duration | Start | Finish | Total slack | Constraint | Resources | Work |
| --- | --- | --- | --- | --- | --- | --- | --- | --- | --- |
| 29 | 1.1.7 | **测试评估** | 22d? | 2018-03-01 | 2018-03-30 | 0d |  |  | 528h |
| 30 | 1.1.7.1 | 项目测试报告输出 | 22d? | 2018-03-01 | 2018-03-30 | 0d | finish no earlier than 2018-03-30 | 戴徐 | 176h |
| 31 | 1.1.7.2 | 性能测试报告输出 | 22d? | 2018-03-01 | 2018-03-30 | 0d | finish no earlier than 2018-03-30 | 戴徐 | 176h |
| 32 | 1.1.7.3 | 缺陷统计分析清单 | 22d? | 2018-03-01 | 2018-03-30 | 0d | finish no earlier than 2018-03-30 | 戴徐 | 176h |
| 33 | 2 | UAT | 44d? | 2018-01-15 | 2018-03-15 | 11d | start no earlier than 2018-01-15 |  |  |
| 34 | 3 | 上线前准备 | 44d? | 2018-01-15 | 2018-03-15 | 11d | start no earlier than 2018-01-15 |  |  |
| 35 | 4 | 系统上线 | 25d? | 2018-02-26 | 2018-03-30 | 0d | start no earlier than 2018-02-26 |  |  |
